# 0580-Security Technology Salutation after eliminating Passenger Checking Roles

Schedule from Primavera P6, 2026-11-01 to 2029-10-31, data date 2026-11-01, costs in SAR.
Must finish by 2029-10-31

## Calendars

- KSA Sun-Thu 8h (official holidays): Mon-Thu 08:00-12:00, 13:00-17:00; Fri-Sat off; Sun 08:00-12:00, 13:00-17:00. Exceptions (off unless hours are given): 2027-02-22, 2027-03-07 to 2027-03-11, 2027-05-16 to 2027-05-20, 2027-09-23, 2028-02-20 to 2028-02-24, 2028-04-30 to 2028-05-04, 2029-02-11 to 2029-02-15, 2029-02-22, 2029-04-22 to 2029-04-26, 2029-09-23.

## Resources

| Resource | Group | Unit | Rate |
| --- | --- | --- | --- |
| Contract cost (BOQ x payment milestones) | material | SAR |  |
| Progress weight (fair EPC distribution, SAR value) | material | SAR | 1 |

## Schedule

| ID | WBS | Activity | Type | Duration | Start | Finish | Predecessors | Total float | Free float | Resources | Cost | EPC phase | Area | Station | Railway | Discipline | Responsibility | Payment milestone | Design stage | Submittal or approval | Priority | Programme phase |
| --- | --- | --- | --- | --- | --- | --- | --- | --- | --- | --- | --- | --- | --- | --- | --- | --- | --- | --- | --- | --- | --- | --- |
|  | PM | **Project Management and Mobilization** |  |  | 2026-11-01 | 2029-10-31 |  |  |  |  |  |  |  |  |  |  |  |  |  |  |  |  |
|  | MOB | **Mobilization and baseline programme** |  |  | 2026-11-01 | 2027-03-28 |  |  |  |  |  |  |  |  |  |  |  |  |  |  |  |  |
| PRJ-A1010 |  | Performance security, insurance and key personnel approval |  | 10d | 2026-11-01 | 2026-11-12 | PRJ-M0000 | 56d | 20d | Contract cost (BOQ x payment milestones) [1859999 SAR]; Progress weight (fair EPC distribution, SAR value) [248000 SAR] | 248,000 | MOB | PRJ | PRJ | ALL | PM | ETECHS | MS1 | - | - | Standard | MOB |
| PRJ-A1020 |  | Initial baseline programme (Primavera) covering mobilization and survey |  | 7d | 2026-11-01 | 2026-11-09 | PRJ-M0000 | 44d | 0d | Contract cost (BOQ x payment milestones) [1239999 SAR]; Progress weight (fair EPC distribution, SAR value) [124000 SAR] | 124,000 | MOB | PRJ | PRJ | ALL | PM | ETECHS | MS1 | - | - | Standard | MOB |
| PRJ-A1060 |  | Site access permits for the surveys of all stations: application and approval (two months) |  | 45d | 2026-11-01 | 2026-12-31 | PRJ-M0000 | 21d | 0d | Contract cost (BOQ x payment milestones); Progress weight (fair EPC distribution, SAR value) [62000 SAR] | 62,000 | MOB | PRJ | PRJ | ALL | PM | SAR | - | - | Approval | Standard | MOB |
| PRJ-A1040 |  | Mobilization: site establishment, offices, personnel and tools |  | 25d | 2026-11-08 | 2026-12-10 | PRJ-M0000 FS+5d | 36d | 0d | Contract cost (BOQ x payment milestones) [5579999 SAR]; Progress weight (fair EPC distribution, SAR value) [434000 SAR] | 434,000 | MOB | PRJ | PRJ | ALL | PM | ETECHS | MS1 | - | - | Standard | MOB |
| PRJ-A1050 |  | Mobilization submittals: QC programme and ITP, HSE, security, procurement and shipping plan |  | 20d | 2026-11-08 | 2026-12-03 | PRJ-M0000 FS+5d | 41d | 5d | Contract cost (BOQ x payment milestones) [3719999 SAR]; Progress weight (fair EPC distribution, SAR value) [372000 SAR] | 372,000 | MOB | PRJ | PRJ | ALL | PM | ETECHS | MS1 | - | Submittal | Standard | MOB |
| PRJ-A1030 |  | SAR review and approval of initial baseline |  | 15d | 2026-11-10 | 2026-11-30 | PRJ-A1020 | 44d | 8d | Contract cost (BOQ x payment milestones); Progress weight (fair EPC distribution, SAR value) [124000 SAR] | 124,000 | MOB | PRJ | PRJ | ALL | PM | SAR | MS1 | - | Approval | Standard | MOB |
| PRJ-A2010 |  | Detailed baseline programme (within 21 days after survey) |  | 15d | 2027-02-07 | 2027-02-28 | NRY-E1010, HMK-E1010, ERY-E1010 | 21d | 0d | Contract cost (BOQ x payment milestones); Progress weight (fair EPC distribution, SAR value) [186000 SAR] | 186,000 | PMG | PRJ | PRJ | ALL | PM | ETECHS | - | - | Submittal | Standard | PMG |
| PRJ-A2020 |  | SAR review and approval of detailed baseline |  | 15d | 2027-03-01 | 2027-03-28 | PRJ-A2010 | 21d | 0d | Contract cost (BOQ x payment milestones); Progress weight (fair EPC distribution, SAR value) [124000 SAR] | 124,000 | PMG | PRJ | PRJ | ALL | PM | SAR | - | - | Approval | Standard | PMG |
|  | MST | **Contract milestones** |  |  | 2026-11-01 | 2029-10-31 |  |  |  |  |  |  |  |  |  |  |  |  |  |  |  |  |
| PRJ-M0000 |  | Notice to Proceed - project start (1 Nov 2026, editable) | milestone | 0d | 2026-11-01 | 2026-11-01 |  | 0d |  |  |  | MS | PRJ | PRJ | ALL | PM | SAR | - | - | - | Standard | MS |
| PRJ-M1100 |  | MS1 Mobilization complete (payment milestone 20%) | milestone | 0d | 2026-12-10 | 2026-12-10 | PRJ-A1010, PRJ-A1030, PRJ-A1040, PRJ-A1050 | 36d | 15d |  |  | MS | PRJ | PRJ | ALL | PM | SAR | MS1 | - | - | Standard | MS |
| PRJ-M1150 |  | Mobilization and survey permits complete (end of month 2) | milestone | 0d | 2026-12-31 | 2026-12-31 | PRJ-M1100, PRJ-M0000 FS+45d, PRJ-A1060 | 21d | 0d |  |  | MS | PRJ | PRJ | ALL | PM | ETECHS | - | - | - | Standard | MS |
| PRJ-M2100 |  | Detailed baseline programme approved | milestone | 0d | 2027-03-28 | 2027-03-28 | PRJ-A2020 | 21d | 0d |  |  | MS | PRJ | PRJ | ALL | PM | SAR | - | - | - | Standard | MS |
| PRJ-M1250 |  | Design complete - priority stations (end of month 6) | milestone | 0d | 2027-04-29 | 2027-04-29 | NRY-E1100, NRY-E1120, HMK-E1100, HMK-E1120, ERY-E1100, ERY-E1120 | 626d |  |  |  | MS | PRJ | PRJ | ALL | PM | SAR | - | - | - | Standard | MS |
| PRJ-MX99 |  | Contract completion - end of 36-month term | milestone | 0d | 2029-10-31 | 2029-10-31 | PRJ-C1010, PRJ-M1250, PRJ-M0000 FS+750d | 0d |  |  |  | MS | PRJ | PRJ | ALL | PM | SAR | - | - | - | Standard | MS |
|  | CLO | **Closeout** |  |  | 2029-09-18 | 2029-10-02 |  |  |  |  |  |  |  |  |  |  |  |  |  |  |  |  |
| PRJ-C1010 |  | Contract closeout pack and handover documentation |  | 10d | 2029-09-18 | 2029-10-02 | NRY-T3100, HMK-T3100, ERY-T3100, HJD-T3100, EDM-T3100, NQS-T3100, EHF-T3100, NMJ-T3100, HKA-T3100, HMD-T3100, EAB-T3100, NHL-T3100, NJF-T3100, NQR-T3100 | 21d |  | Contract cost (BOQ x payment milestones); Progress weight (fair EPC distribution, SAR value) [806620 SAR] | 806,620 | PMG | PRJ | PRJ | ALL | PM | ETECHS | - | - | Submittal | Standard | PMG |
|  | ENG | **Engineering** |  |  | 2027-01-03 | 2029-08-27 |  |  |  |  |  |  |  |  |  |  |  |  |  |  |  |  |
|  | NRY | **Riyadh (Thumamah) (NSR)** |  |  | 2027-01-03 | 2028-01-03 |  |  |  |  |  |  |  |  |  |  |  |  |  |  |  |  |
| NRY-E1200 |  | MS2 Engineering submittal complete (10%) - Riyadh (Thumamah) | milestone | 0d | 2027-04-08 | 2027-04-08 | NRY-E1090, NRY-E1110 | 445d | 15d |  |  | MS | NSR | NRY | NSR | DOCS | ETECHS | MS2 | - | - | Priority 1 | MS |
| NRY-E1210 |  | MS3 Engineering approved by SAR (10%) - Riyadh (Thumamah) | milestone | 0d | 2027-04-29 | 2027-04-29 | NRY-E1020, NRY-E1040, NRY-E1060, NRY-E1080, NRY-E1100, NRY-E1120, NRY-E1200 | 430d | 0d |  |  | MS | NSR | NRY | NSR | DOCS | SAR | MS3 | - | - | Priority 1 | MS |
|  | SRV | **Site survey and as-found verification** |  |  | 2027-01-03 | 2027-02-02 |  |  |  |  |  |  |  |  |  |  |  |  |  |  |  |  |
|  | SUB | **Submittal** |  |  | 2027-01-03 | 2027-01-12 |  |  |  |  |  |  |  |  |  |  |  |  |  |  |  |  |
| NRY-E1010 |  | Survey: submittal of site survey and as-found report - Riyadh (Thumamah) |  | 8d | 2027-01-03 | 2027-01-12 | PRJ-A1060, PRJ-M1150 | 38d | 0d | Contract cost (BOQ x payment milestones) [24017 SAR]; Progress weight (fair EPC distribution, SAR value) [19220 SAR] | 19,220 | ENG | NSR | NRY | NSR | DOCS | ETECHS | MS2 | Survey | Submittal | Priority 1 | DES |

| ID | WBS | Activity | Duration | Start | Finish | Predecessors | Total float | Free float | Resources | Cost | Area | Station | Railway | Priority | Responsibility | Design stage | Submittal or approval | EPC phase | Discipline | Programme phase | Payment milestone |
| --- | --- | --- | --- | --- | --- | --- | --- | --- | --- | --- | --- | --- | --- | --- | --- | --- | --- | --- | --- | --- | --- |
|  | APR | **Approval** |  | 2027-01-13 | 2027-02-02 |  |  |  |  |  |  |  |  |  |  |  |  |  |  |  |  |
| NRY-E1020 |  | Survey: SAR approval of survey report - Riyadh (Thumamah) | 15d | 2027-01-13 | 2027-02-02 | NRY-E1010 | 486d | 56d | Contract cost (BOQ x payment milestones) [17404 SAR]; Progress weight (fair EPC distribution, SAR value) [20460 SAR] | 20,460 | NSR | NRY | NSR | Priority 1 | SAR | Survey | Approval | ENG | DOCS | DES | MS3 |
|  | CNC | **Concept design** |  | 2027-01-13 | 2027-02-14 |  |  |  |  |  |  |  |  |  |  |  |  |  |  |  |  |
|  | SUB | **Submittal** |  | 2027-01-13 | 2027-01-24 |  |  |  |  |  |  |  |  |  |  |  |  |  |  |  |  |
| NRY-E1030 |  | Concept design: submittal - Riyadh (Thumamah) | 8d | 2027-01-13 | 2027-01-24 | NRY-E1010 | 430d | 0d | Contract cost (BOQ x payment milestones) [34112 SAR]; Progress weight (fair EPC distribution, SAR value) [13640 SAR] | 13,640 | NSR | NRY | NSR | Priority 1 | ETECHS | Concept | Submittal | ENG | DOCS | DES | MS2 |
|  | APR | **Approval** |  | 2027-01-25 | 2027-02-14 |  |  |  |  |  |  |  |  |  |  |  |  |  |  |  |  |
| NRY-E1040 |  | Concept design: SAR review and approval - Riyadh (Thumamah) | 15d | 2027-01-25 | 2027-02-14 | NRY-E1030 | 478d | 48d | Contract cost (BOQ x payment milestones) [34808 SAR]; Progress weight (fair EPC distribution, SAR value) [25420 SAR] | 25,420 | NSR | NRY | NSR | Priority 1 | SAR | Concept | Approval | ENG | DOCS | DES | MS3 |
|  | PRE | **Preliminary (schematic) design** |  | 2027-01-25 | 2027-03-14 |  |  |  |  |  |  |  |  |  |  |  |  |  |  |  |  |
|  | SUB | **Submittal** |  | 2027-01-25 | 2027-02-11 |  |  |  |  |  |  |  |  |  |  |  |  |  |  |  |  |
| NRY-E1050 |  | Preliminary design: submittal - Riyadh (Thumamah) | 14d | 2027-01-25 | 2027-02-11 | NRY-E1030 | 430d | 0d | Contract cost (BOQ x payment milestones) [68223 SAR]; Progress weight (fair EPC distribution, SAR value) [34100 SAR] | 34,100 | NSR | NRY | NSR | Priority 1 | ETECHS | Preliminary | Submittal | ENG | DOCS | DES | MS2 |
|  | APR | **Approval** |  | 2027-02-14 | 2027-03-14 |  |  |  |  |  |  |  |  |  |  |  |  |  |  |  |  |
| NRY-E1060 |  | Preliminary design: SAR review and approval - Riyadh (Thumamah) | 15d | 2027-02-14 | 2027-03-14 | NRY-E1050 | 464d | 34d | Contract cost (BOQ x payment milestones) [69616 SAR]; Progress weight (fair EPC distribution, SAR value) [36580 SAR] | 36,580 | NSR | NRY | NSR | Priority 1 | SAR | Preliminary | Approval | ENG | DOCS | DES | MS3 |
|  | DET | **Detailed design** |  | 2027-02-14 | 2027-04-13 |  |  |  |  |  |  |  |  |  |  |  |  |  |  |  |  |
|  | SUB | **Submittal** |  | 2027-02-14 | 2027-03-23 |  |  |  |  |  |  |  |  |  |  |  |  |  |  |  |  |
| NRY-E1070 |  | Detailed design: submittal (drawings, BOQ, data sheets) - Riyadh (Thumamah) | 22d | 2027-02-14 | 2027-03-23 | NRY-E1050 | 430d | 0d | Contract cost (BOQ x payment milestones) [136447 SAR]; Progress weight (fair EPC distribution, SAR value) [70060 SAR] | 70,060 | NSR | NRY | NSR | Priority 1 | ETECHS | Detailed | Submittal | ENG | DOCS | DES | MS2 |
|  | APR | **Approval** |  | 2027-03-24 | 2027-04-13 |  |  |  |  |  |  |  |  |  |  |  |  |  |  |  |  |
| NRY-E1080 |  | Detailed design: SAR review and approval - Riyadh (Thumamah) | 15d | 2027-03-24 | 2027-04-13 | NRY-E1070 | 442d | 12d | Contract cost (BOQ x payment milestones) [139231 SAR]; Progress weight (fair EPC distribution, SAR value) [47740 SAR] | 47,740 | NSR | NRY | NSR | Priority 1 | SAR | Detailed | Approval | ENG | DOCS | DES | MS3 |
|  | IFC | **IFC and shop drawings** |  | 2027-03-24 | 2027-04-29 |  |  |  |  |  |  |  |  |  |  |  |  |  |  |  |  |
|  | SUB | **Submittal** |  | 2027-03-24 | 2027-04-08 |  |  |  |  |  |  |  |  |  |  |  |  |  |  |  |  |
| NRY-E1090 |  | IFC and shop drawings: submittal - Riyadh (Thumamah) | 12d | 2027-03-24 | 2027-04-08 | NRY-E1070 | 430d | 0d | Contract cost (BOQ x payment milestones) [68223 SAR]; Progress weight (fair EPC distribution, SAR value) [31620 SAR] | 31,620 | NSR | NRY | NSR | Priority 1 | ETECHS | IFC | Submittal | ENG | DOCS | DES | MS2 |
|  | APR | **Approval** |  | 2027-04-11 | 2027-04-29 |  |  |  |  |  |  |  |  |  |  |  |  |  |  |  |  |
| NRY-E1100 |  | IFC and shop drawings: SAR approval and release - Riyadh (Thumamah) | 15d | 2027-04-11 | 2027-04-29 | NRY-E1090 | 430d | 0d | Contract cost (BOQ x payment milestones) [69616 SAR]; Progress weight (fair EPC distribution, SAR value) [39060 SAR] | 39,060 | NSR | NRY | NSR | Priority 1 | SAR | IFC | Approval | ENG | DOCS | DES | MS3 |
|  | HCS | **HCIS documentation (Stage 3 and 4)** |  | 2027-02-25 | 2027-04-29 |  |  |  |  |  |  |  |  |  |  |  |  |  |  |  |  |
|  | SUB | **Submittal** |  | 2027-02-25 | 2027-04-08 |  |  |  |  |  |  |  |  |  |  |  |  |  |  |  |  |
| NRY-E1110 |  | HCIS Stage 3 and 4 documents: preparation - Riyadh (Thumamah) | 26d | 2027-02-25 | 2027-04-08 | NRY-E1050 FS+8d, NRY-E1090 FF | 430d | 0d | Contract cost (BOQ x payment milestones) [17056 SAR]; Progress weight (fair EPC distribution, SAR value) [14880 SAR] | 14,880 | NSR | NRY | NSR | Priority 1 | ETECHS | HCIS | Submittal | ENG | DOCS | DES | MS2 |

| ID | WBS | Activity | Type | Duration | Start | Finish | Predecessors | Total float | Free float | Resources | Cost | Area | Station | Railway | Priority | Responsibility | Design stage | Submittal or approval | EPC phase | Discipline | Programme phase | Payment milestone |
| --- | --- | --- | --- | --- | --- | --- | --- | --- | --- | --- | --- | --- | --- | --- | --- | --- | --- | --- | --- | --- | --- | --- |
|  | APR | **Approval** |  |  | 2027-04-11 | 2027-04-29 |  |  |  |  |  |  |  |  |  |  |  |  |  |  |  |  |
| NRY-E1120 |  | HCIS Stage 3 and 4 documents: SAR final review and HCIS submission - Riyadh (Thumamah) |  | 15d | 2027-04-11 | 2027-04-29 | NRY-E1110 | 430d | 0d | Contract cost (BOQ x payment milestones) [17404 SAR]; Progress weight (fair EPC distribution, SAR value) [8680 SAR] | 8,680 | NSR | NRY | NSR | Priority 1 | SAR/HCIS | HCIS | Approval | ENG | DOCS | DES | MS3 |
|  | ASB | **As-built and O&M documentation** |  |  | 2027-11-04 | 2028-01-03 |  |  |  |  |  |  |  |  |  |  |  |  |  |  |  |  |
|  | SUB | **Submittal** |  |  | 2027-11-04 | 2027-12-13 |  |  |  |  |  |  |  |  |  |  |  |  |  |  |  |  |
| NRY-E1130 |  | As-built and O&M documentation: submittal - Riyadh (Thumamah) |  | 28d | 2027-11-04 | 2027-12-13 | NRY-C2100 | 430d | 0d | Contract cost (BOQ x payment milestones) [52212 SAR]; Progress weight (fair EPC distribution, SAR value) [25420 SAR] | 25,420 | NSR | NRY | NSR | Priority 1 | ETECHS | As-built | Submittal | ENG | DOCS | COM | MS7 |
|  | APR | **Approval** |  |  | 2027-12-14 | 2028-01-03 |  |  |  |  |  |  |  |  |  |  |  |  |  |  |  |  |
| NRY-E1140 |  | As-built and O&M documentation: SAR review and approval - Riyadh (Thumamah) |  | 15d | 2027-12-14 | 2028-01-03 | NRY-E1130 | 430d | 0d | Contract cost (BOQ x payment milestones) [17404 SAR]; Progress weight (fair EPC distribution, SAR value) [13640 SAR] | 13,640 | NSR | NRY | NSR | Priority 1 | SAR | As-built | Approval | ENG | DOCS | COM | MS7 |
|  | HMK | **Makkah (HHR)** |  |  | 2027-01-03 | 2028-06-06 |  |  |  |  |  |  |  |  |  |  |  |  |  |  |  |  |
| HMK-E1200 |  | MS2 Engineering submittal complete (10%) - Makkah | milestone | 0d | 2027-04-08 | 2027-04-08 | HMK-E1090, HMK-E1110 | 344d | 15d |  |  | HHR | HMK | HHR | Priority 1 | ETECHS | - | - | MS | DOCS | MS | MS2 |
| HMK-E1210 |  | MS3 Engineering approved by SAR (10%) - Makkah | milestone | 0d | 2027-04-29 | 2027-04-29 | HMK-E1020, HMK-E1040, HMK-E1060, HMK-E1080, HMK-E1100, HMK-E1120, HMK-E1200 | 329d | 0d |  |  | HHR | HMK | HHR | Priority 1 | SAR | - | - | MS | DOCS | MS | MS3 |
|  | SRV | **Site survey and as-found verification** |  |  | 2027-01-03 | 2027-02-28 |  |  |  |  |  |  |  |  |  |  |  |  |  |  |  |  |
|  | SUB | **Submittal** |  |  | 2027-01-03 | 2027-02-04 |  |  |  |  |  |  |  |  |  |  |  |  |  |  |  |  |
| HMK-E1010 |  | Survey: submittal of site survey and as-found report - Makkah |  | 25d | 2027-01-03 | 2027-02-04 | PRJ-A1060, PRJ-M1150 | 21d | 0d | Contract cost (BOQ x payment milestones) [67000 SAR]; Progress weight (fair EPC distribution, SAR value) [76880 SAR] | 76,880 | HHR | HMK | HHR | Priority 1 | ETECHS | Survey | Submittal | ENG | DOCS | DES | MS2 |
|  | APR | **Approval** |  |  | 2027-02-07 | 2027-02-28 |  |  |  |  |  |  |  |  |  |  |  |  |  |  |  |  |
| HMK-E1020 |  | Survey: SAR approval of survey report - Makkah |  | 15d | 2027-02-07 | 2027-02-28 | HMK-E1010 | 368d | 39d | Contract cost (BOQ x payment milestones) [48550 SAR]; Progress weight (fair EPC distribution, SAR value) [32860 SAR] | 32,860 | HHR | HMK | HHR | Priority 1 | SAR | Survey | Approval | ENG | DOCS | DES | MS3 |
|  | CNC | **Concept design** |  |  | 2027-02-07 | 2027-03-15 |  |  |  |  |  |  |  |  |  |  |  |  |  |  |  |  |
|  | SUB | **Submittal** |  |  | 2027-02-07 | 2027-02-14 |  |  |  |  |  |  |  |  |  |  |  |  |  |  |  |  |
| HMK-E1030 |  | Concept design: submittal - Makkah |  | 6d | 2027-02-07 | 2027-02-14 | HMK-E1010 | 329d | 0d | Contract cost (BOQ x payment milestones) [95159 SAR]; Progress weight (fair EPC distribution, SAR value) [31620 SAR] | 31,620 | HHR | HMK | HHR | Priority 1 | ETECHS | Concept | Submittal | ENG | DOCS | DES | MS2 |
|  | APR | **Approval** |  |  | 2027-02-15 | 2027-03-15 |  |  |  |  |  |  |  |  |  |  |  |  |  |  |  |  |
| HMK-E1040 |  | Concept design: SAR review and approval - Makkah |  | 15d | 2027-02-15 | 2027-03-15 | HMK-E1030 | 362d | 33d | Contract cost (BOQ x payment milestones) [97101 SAR]; Progress weight (fair EPC distribution, SAR value) [78120 SAR] | 78,120 | HHR | HMK | HHR | Priority 1 | SAR | Concept | Approval | ENG | DOCS | DES | MS3 |
|  | PRE | **Preliminary (schematic) design** |  |  | 2027-02-15 | 2027-03-29 |  |  |  |  |  |  |  |  |  |  |  |  |  |  |  |  |
|  | SUB | **Submittal** |  |  | 2027-02-15 | 2027-03-01 |  |  |  |  |  |  |  |  |  |  |  |  |  |  |  |  |
| HMK-E1050 |  | Preliminary design: submittal - Makkah |  | 10d | 2027-02-15 | 2027-03-01 | HMK-E1030 | 329d | 0d | Contract cost (BOQ x payment milestones) [190318 SAR]; Progress weight (fair EPC distribution, SAR value) [78740 SAR] | 78,740 | HHR | HMK | HHR | Priority 1 | ETECHS | Preliminary | Submittal | ENG | DOCS | DES | MS2 |
|  | APR | **Approval** |  |  | 2027-03-02 | 2027-03-29 |  |  |  |  |  |  |  |  |  |  |  |  |  |  |  |  |
| HMK-E1060 |  | Preliminary design: SAR review and approval - Makkah |  | 15d | 2027-03-02 | 2027-03-29 | HMK-E1050 | 352d | 23d | Contract cost (BOQ x payment milestones) [194202 SAR]; Progress weight (fair EPC distribution, SAR value) [118420 SAR] | 118,420 | HHR | HMK | HHR | Priority 1 | SAR | Preliminary | Approval | ENG | DOCS | DES | MS3 |

| ID | WBS | Activity | Type | Duration | Start | Finish | Predecessors | Total float | Free float | Resources | Cost | Area | Station | Railway | Priority | Responsibility | Design stage | Submittal or approval | EPC phase | Discipline | Programme phase | Payment milestone |
| --- | --- | --- | --- | --- | --- | --- | --- | --- | --- | --- | --- | --- | --- | --- | --- | --- | --- | --- | --- | --- | --- | --- |
|  | DET | **Detailed design** |  |  | 2027-03-02 | 2027-04-20 |  |  |  |  |  |  |  |  |  |  |  |  |  |  |  |  |
|  | SUB | **Submittal** |  |  | 2027-03-02 | 2027-03-30 |  |  |  |  |  |  |  |  |  |  |  |  |  |  |  |  |
| HMK-E1070 |  | Detailed design: submittal (drawings, BOQ, data sheets) - Makkah |  | 16d | 2027-03-02 | 2027-03-30 | HMK-E1050 | 329d | 0d | Contract cost (BOQ x payment milestones) [380636 SAR]; Progress weight (fair EPC distribution, SAR value) [169880 SAR] | 169,880 | HHR | HMK | HHR | Priority 1 | ETECHS | Detailed | Submittal | ENG | DOCS | DES | MS2 |
|  | APR | **Approval** |  |  | 2027-03-31 | 2027-04-20 |  |  |  |  |  |  |  |  |  |  |  |  |  |  |  |  |
| HMK-E1080 |  | Detailed design: SAR review and approval - Makkah |  | 15d | 2027-03-31 | 2027-04-20 | HMK-E1070 | 336d | 7d | Contract cost (BOQ x payment milestones) [388404 SAR]; Progress weight (fair EPC distribution, SAR value) [159340 SAR] | 159,340 | HHR | HMK | HHR | Priority 1 | SAR | Detailed | Approval | ENG | DOCS | DES | MS3 |
|  | IFC | **IFC and shop drawings** |  |  | 2027-03-31 | 2027-04-29 |  |  |  |  |  |  |  |  |  |  |  |  |  |  |  |  |
|  | SUB | **Submittal** |  |  | 2027-03-31 | 2027-04-08 |  |  |  |  |  |  |  |  |  |  |  |  |  |  |  |  |
| HMK-E1090 |  | IFC and shop drawings: submittal - Makkah |  | 7d | 2027-03-31 | 2027-04-08 | HMK-E1070 | 329d | 0d | Contract cost (BOQ x payment milestones) [190318 SAR]; Progress weight (fair EPC distribution, SAR value) [62620 SAR] | 62,620 | HHR | HMK | HHR | Priority 1 | ETECHS | IFC | Submittal | ENG | DOCS | DES | MS2 |
|  | APR | **Approval** |  |  | 2027-04-11 | 2027-04-29 |  |  |  |  |  |  |  |  |  |  |  |  |  |  |  |  |
| HMK-E1100 |  | IFC and shop drawings: SAR approval and release - Makkah |  | 15d | 2027-04-11 | 2027-04-29 | HMK-E1090 | 329d | 0d | Contract cost (BOQ x payment milestones) [194202 SAR]; Progress weight (fair EPC distribution, SAR value) [134540 SAR] | 134,540 | HHR | HMK | HHR | Priority 1 | SAR | IFC | Approval | ENG | DOCS | DES | MS3 |
|  | HCS | **HCIS documentation (Stage 3 and 4)** |  |  | 2027-03-17 | 2027-04-29 |  |  |  |  |  |  |  |  |  |  |  |  |  |  |  |  |
|  | SUB | **Submittal** |  |  | 2027-03-17 | 2027-04-08 |  |  |  |  |  |  |  |  |  |  |  |  |  |  |  |  |
| HMK-E1110 |  | HCIS Stage 3 and 4 documents: preparation - Makkah |  | 17d | 2027-03-17 | 2027-04-08 | HMK-E1050 FS+6d, HMK-E1090 FF | 329d | 0d | Contract cost (BOQ x payment milestones) [47579 SAR]; Progress weight (fair EPC distribution, SAR value) [34720 SAR] | 34,720 | HHR | HMK | HHR | Priority 1 | ETECHS | HCIS | Submittal | ENG | DOCS | DES | MS2 |
|  | APR | **Approval** |  |  | 2027-04-11 | 2027-04-29 |  |  |  |  |  |  |  |  |  |  |  |  |  |  |  |  |
| HMK-E1120 |  | HCIS Stage 3 and 4 documents: SAR final review and HCIS submission - Makkah |  | 15d | 2027-04-11 | 2027-04-29 | HMK-E1110 | 329d | 0d | Contract cost (BOQ x payment milestones) [48550 SAR]; Progress weight (fair EPC distribution, SAR value) [31000 SAR] | 31,000 | HHR | HMK | HHR | Priority 1 | SAR/HCIS | HCIS | Approval | ENG | DOCS | DES | MS3 |
|  | ASB | **As-built and O&M documentation** |  |  | 2028-03-08 | 2028-06-06 |  |  |  |  |  |  |  |  |  |  |  |  |  |  |  |  |
|  | SUB | **Submittal** |  |  | 2028-03-08 | 2028-05-16 |  |  |  |  |  |  |  |  |  |  |  |  |  |  |  |  |
| HMK-E1130 |  | As-built and O&M documentation: submittal - Makkah |  | 45d | 2028-03-08 | 2028-05-16 | HMK-C2100 | 329d | 0d | Contract cost (BOQ x payment milestones) [145651 SAR]; Progress weight (fair EPC distribution, SAR value) [82460 SAR] | 82,460 | HHR | HMK | HHR | Priority 1 | ETECHS | As-built | Submittal | ENG | DOCS | COM | MS7 |
|  | APR | **Approval** |  |  | 2028-05-17 | 2028-06-06 |  |  |  |  |  |  |  |  |  |  |  |  |  |  |  |  |
| HMK-E1140 |  | As-built and O&M documentation: SAR review and approval - Makkah |  | 15d | 2028-05-17 | 2028-06-06 | HMK-E1130 | 329d | 0d | Contract cost (BOQ x payment milestones) [48550 SAR]; Progress weight (fair EPC distribution, SAR value) [27280 SAR] | 27,280 | HHR | HMK | HHR | Priority 1 | SAR | As-built | Approval | ENG | DOCS | COM | MS7 |
|  | ERY | **Riyadh (Malaz) (EWR)** |  |  | 2027-01-03 | 2027-12-15 |  |  |  |  |  |  |  |  |  |  |  |  |  |  |  |  |
| ERY-E1200 |  | MS2 Engineering submittal complete (10%) - Riyadh (Malaz) | milestone | 0d | 2027-04-08 | 2027-04-08 | ERY-E1090, ERY-E1110 | 458d | 15d |  |  | EWR | ERY | EWR | Priority 2 | ETECHS | - | - | MS | DOCS | MS | MS2 |
| ERY-E1210 |  | MS3 Engineering approved by SAR (10%) - Riyadh (Malaz) | milestone | 0d | 2027-04-29 | 2027-04-29 | ERY-E1020, ERY-E1040, ERY-E1060, ERY-E1080, ERY-E1100, ERY-E1120, ERY-E1200 | 443d | 0d |  |  | EWR | ERY | EWR | Priority 2 | SAR | - | - | MS | DOCS | MS | MS3 |
|  | SRV | **Site survey and as-found verification** |  |  | 2027-01-03 | 2027-02-02 |  |  |  |  |  |  |  |  |  |  |  |  |  |  |  |  |
|  | SUB | **Submittal** |  |  | 2027-01-03 | 2027-01-12 |  |  |  |  |  |  |  |  |  |  |  |  |  |  |  |  |
| ERY-E1010 |  | Survey: submittal of site survey and as-found report - Riyadh (Malaz) |  | 8d | 2027-01-03 | 2027-01-12 | PRJ-A1060, PRJ-M1150 | 38d | 0d | Contract cost (BOQ x payment milestones) [21331 SAR]; Progress weight (fair EPC distribution, SAR value) [16740 SAR] | 16,740 | EWR | ERY | EWR | Priority 2 | ETECHS | Survey | Submittal | ENG | DOCS | DES | MS2 |

| ID | WBS | Activity | Duration | Start | Finish | Predecessors | Total float | Free float | Resources | Cost | Area | Station | Railway | Priority | Responsibility | Design stage | Submittal or approval | EPC phase | Discipline | Programme phase | Payment milestone |
| --- | --- | --- | --- | --- | --- | --- | --- | --- | --- | --- | --- | --- | --- | --- | --- | --- | --- | --- | --- | --- | --- |
|  | APR | **Approval** |  | 2027-01-13 | 2027-02-02 |  |  |  |  |  |  |  |  |  |  |  |  |  |  |  |  |
| ERY-E1020 |  | Survey: SAR approval of survey report - Riyadh (Malaz) | 15d | 2027-01-13 | 2027-02-02 | ERY-E1010 | 499d | 56d | Contract cost (BOQ x payment milestones) [15458 SAR]; Progress weight (fair EPC distribution, SAR value) [17980 SAR] | 17,980 | EWR | ERY | EWR | Priority 2 | SAR | Survey | Approval | ENG | DOCS | DES | MS3 |
|  | CNC | **Concept design** |  | 2027-01-13 | 2027-02-14 |  |  |  |  |  |  |  |  |  |  |  |  |  |  |  |  |
|  | SUB | **Submittal** |  | 2027-01-13 | 2027-01-24 |  |  |  |  |  |  |  |  |  |  |  |  |  |  |  |  |
| ERY-E1030 |  | Concept design: submittal - Riyadh (Malaz) | 8d | 2027-01-13 | 2027-01-24 | ERY-E1010 | 443d | 0d | Contract cost (BOQ x payment milestones) [30297 SAR]; Progress weight (fair EPC distribution, SAR value) [12400 SAR] | 12,400 | EWR | ERY | EWR | Priority 2 | ETECHS | Concept | Submittal | ENG | DOCS | DES | MS2 |
|  | APR | **Approval** |  | 2027-01-25 | 2027-02-14 |  |  |  |  |  |  |  |  |  |  |  |  |  |  |  |  |
| ERY-E1040 |  | Concept design: SAR review and approval - Riyadh (Malaz) | 15d | 2027-01-25 | 2027-02-14 | ERY-E1030 | 491d | 48d | Contract cost (BOQ x payment milestones) [30915 SAR]; Progress weight (fair EPC distribution, SAR value) [22940 SAR] | 22,940 | EWR | ERY | EWR | Priority 2 | SAR | Concept | Approval | ENG | DOCS | DES | MS3 |
|  | PRE | **Preliminary (schematic) design** |  | 2027-01-25 | 2027-03-14 |  |  |  |  |  |  |  |  |  |  |  |  |  |  |  |  |
|  | SUB | **Submittal** |  | 2027-01-25 | 2027-02-11 |  |  |  |  |  |  |  |  |  |  |  |  |  |  |  |  |
| ERY-E1050 |  | Preliminary design: submittal - Riyadh (Malaz) | 14d | 2027-01-25 | 2027-02-11 | ERY-E1030 | 443d | 0d | Contract cost (BOQ x payment milestones) [60594 SAR]; Progress weight (fair EPC distribution, SAR value) [30380 SAR] | 30,380 | EWR | ERY | EWR | Priority 2 | ETECHS | Preliminary | Submittal | ENG | DOCS | DES | MS2 |
|  | APR | **Approval** |  | 2027-02-14 | 2027-03-14 |  |  |  |  |  |  |  |  |  |  |  |  |  |  |  |  |
| ERY-E1060 |  | Preliminary design: SAR review and approval - Riyadh (Malaz) | 15d | 2027-02-14 | 2027-03-14 | ERY-E1050 | 477d | 34d | Contract cost (BOQ x payment milestones) [61830 SAR]; Progress weight (fair EPC distribution, SAR value) [32240 SAR] | 32,240 | EWR | ERY | EWR | Priority 2 | SAR | Preliminary | Approval | ENG | DOCS | DES | MS3 |
|  | DET | **Detailed design** |  | 2027-02-14 | 2027-04-13 |  |  |  |  |  |  |  |  |  |  |  |  |  |  |  |  |
|  | SUB | **Submittal** |  | 2027-02-14 | 2027-03-23 |  |  |  |  |  |  |  |  |  |  |  |  |  |  |  |  |
| ERY-E1070 |  | Detailed design: submittal (drawings, BOQ, data sheets) - Riyadh (Malaz) | 22d | 2027-02-14 | 2027-03-23 | ERY-E1050 | 443d | 0d | Contract cost (BOQ x payment milestones) [121188 SAR]; Progress weight (fair EPC distribution, SAR value) [62000 SAR] | 62,000 | EWR | ERY | EWR | Priority 2 | ETECHS | Detailed | Submittal | ENG | DOCS | DES | MS2 |
|  | APR | **Approval** |  | 2027-03-24 | 2027-04-13 |  |  |  |  |  |  |  |  |  |  |  |  |  |  |  |  |
| ERY-E1080 |  | Detailed design: SAR review and approval - Riyadh (Malaz) | 15d | 2027-03-24 | 2027-04-13 | ERY-E1070 | 455d | 12d | Contract cost (BOQ x payment milestones) [123661 SAR]; Progress weight (fair EPC distribution, SAR value) [42160 SAR] | 42,160 | EWR | ERY | EWR | Priority 2 | SAR | Detailed | Approval | ENG | DOCS | DES | MS3 |
|  | IFC | **IFC and shop drawings** |  | 2027-03-24 | 2027-04-29 |  |  |  |  |  |  |  |  |  |  |  |  |  |  |  |  |
|  | SUB | **Submittal** |  | 2027-03-24 | 2027-04-08 |  |  |  |  |  |  |  |  |  |  |  |  |  |  |  |  |
| ERY-E1090 |  | IFC and shop drawings: submittal - Riyadh (Malaz) | 12d | 2027-03-24 | 2027-04-08 | ERY-E1070 | 443d | 0d | Contract cost (BOQ x payment milestones) [60594 SAR]; Progress weight (fair EPC distribution, SAR value) [27900 SAR] | 27,900 | EWR | ERY | EWR | Priority 2 | ETECHS | IFC | Submittal | ENG | DOCS | DES | MS2 |
|  | APR | **Approval** |  | 2027-04-11 | 2027-04-29 |  |  |  |  |  |  |  |  |  |  |  |  |  |  |  |  |
| ERY-E1100 |  | IFC and shop drawings: SAR approval and release - Riyadh (Malaz) | 15d | 2027-04-11 | 2027-04-29 | ERY-E1090 | 443d | 0d | Contract cost (BOQ x payment milestones) [61830 SAR]; Progress weight (fair EPC distribution, SAR value) [34720 SAR] | 34,720 | EWR | ERY | EWR | Priority 2 | SAR | IFC | Approval | ENG | DOCS | DES | MS3 |
|  | HCS | **HCIS documentation (Stage 3 and 4)** |  | 2027-02-25 | 2027-04-29 |  |  |  |  |  |  |  |  |  |  |  |  |  |  |  |  |
|  | SUB | **Submittal** |  | 2027-02-25 | 2027-04-08 |  |  |  |  |  |  |  |  |  |  |  |  |  |  |  |  |
| ERY-E1110 |  | HCIS Stage 3 and 4 documents: preparation - Riyadh (Malaz) | 26d | 2027-02-25 | 2027-04-08 | ERY-E1050 FS+8d, ERY-E1090 FF | 443d | 0d | Contract cost (BOQ x payment milestones) [15148 SAR]; Progress weight (fair EPC distribution, SAR value) [13020 SAR] | 13,020 | EWR | ERY | EWR | Priority 2 | ETECHS | HCIS | Submittal | ENG | DOCS | DES | MS2 |

| ID | WBS | Activity | Type | Duration | Start | Finish | Predecessors | Total float | Free float | Resources | Cost | Area | Station | Railway | Priority | Responsibility | Design stage | Submittal or approval | EPC phase | Discipline | Programme phase | Payment milestone |
| --- | --- | --- | --- | --- | --- | --- | --- | --- | --- | --- | --- | --- | --- | --- | --- | --- | --- | --- | --- | --- | --- | --- |
|  | APR | **Approval** |  |  | 2027-04-11 | 2027-04-29 |  |  |  |  |  |  |  |  |  |  |  |  |  |  |  |  |
| ERY-E1120 |  | HCIS Stage 3 and 4 documents: SAR final review and HCIS submission - Riyadh (Malaz) |  | 15d | 2027-04-11 | 2027-04-29 | ERY-E1110 | 443d | 0d | Contract cost (BOQ x payment milestones) [15458 SAR]; Progress weight (fair EPC distribution, SAR value) [7440 SAR] | 7,440 | EWR | ERY | EWR | Priority 2 | SAR/HCIS | HCIS | Approval | ENG | DOCS | DES | MS3 |
|  | ASB | **As-built and O&M documentation** |  |  | 2027-10-19 | 2027-12-15 |  |  |  |  |  |  |  |  |  |  |  |  |  |  |  |  |
|  | SUB | **Submittal** |  |  | 2027-10-19 | 2027-11-24 |  |  |  |  |  |  |  |  |  |  |  |  |  |  |  |  |
| ERY-E1130 |  | As-built and O&M documentation: submittal - Riyadh (Malaz) |  | 27d | 2027-10-19 | 2027-11-24 | ERY-C2100 | 443d | 0d | Contract cost (BOQ x payment milestones) [46373 SAR]; Progress weight (fair EPC distribution, SAR value) [22320 SAR] | 22,320 | EWR | ERY | EWR | Priority 2 | ETECHS | As-built | Submittal | ENG | DOCS | COM | MS7 |
|  | APR | **Approval** |  |  | 2027-11-25 | 2027-12-15 |  |  |  |  |  |  |  |  |  |  |  |  |  |  |  |  |
| ERY-E1140 |  | As-built and O&M documentation: SAR review and approval - Riyadh (Malaz) |  | 15d | 2027-11-25 | 2027-12-15 | ERY-E1130 | 443d | 0d | Contract cost (BOQ x payment milestones) [15458 SAR]; Progress weight (fair EPC distribution, SAR value) [12400 SAR] | 12,400 | EWR | ERY | EWR | Priority 2 | SAR | As-built | Approval | ENG | DOCS | COM | MS7 |
|  | HJD | **Jeddah (HHR)** |  |  | 2027-03-29 | 2028-08-02 |  |  |  |  |  |  |  |  |  |  |  |  |  |  |  |  |
| HJD-E1200 |  | MS2 Engineering submittal complete (10%) - Jeddah | milestone | 0d | 2027-07-07 | 2027-07-07 | HJD-E1090, HJD-E1110 | 303d | 15d |  |  | HHR | HJD | HHR | Standard | ETECHS | - | - | MS | DOCS | MS | MS2 |
| HJD-E1210 |  | MS3 Engineering approved by SAR (10%) - Jeddah | milestone | 0d | 2027-07-28 | 2027-07-28 | HJD-E1020, HJD-E1040, HJD-E1060, HJD-E1080, HJD-E1100, HJD-E1120, HJD-E1200 | 288d | 0d |  |  | HHR | HJD | HHR | Standard | SAR | - | - | MS | DOCS | MS | MS3 |
|  | SRV | **Site survey and as-found verification** |  |  | 2027-03-29 | 2027-05-24 |  |  |  |  |  |  |  |  |  |  |  |  |  |  |  |  |
|  | SUB | **Submittal** |  |  | 2027-03-29 | 2027-04-26 |  |  |  |  |  |  |  |  |  |  |  |  |  |  |  |  |
| HJD-E1010 |  | Survey: submittal of site survey and as-found report - Jeddah |  | 21d | 2027-03-29 | 2027-04-26 | PRJ-A1060, PRJ-M2100 | 288d | 0d | Contract cost (BOQ x payment milestones) [65901 SAR]; Progress weight (fair EPC distribution, SAR value) [72540 SAR] | 72,540 | HHR | HJD | HHR | Standard | ETECHS | Survey | Submittal | ENG | DOCS | DES | MS2 |
|  | APR | **Approval** |  |  | 2027-04-27 | 2027-05-24 |  |  |  |  |  |  |  |  |  |  |  |  |  |  |  |  |
| HJD-E1020 |  | Survey: SAR approval of survey report - Jeddah |  | 15d | 2027-04-27 | 2027-05-24 | HJD-E1010 | 335d | 47d | Contract cost (BOQ x payment milestones) [47754 SAR]; Progress weight (fair EPC distribution, SAR value) [35960 SAR] | 35,960 | HHR | HJD | HHR | Standard | SAR | Survey | Approval | ENG | DOCS | DES | MS3 |
|  | CNC | **Concept design** |  |  | 2027-04-27 | 2027-06-02 |  |  |  |  |  |  |  |  |  |  |  |  |  |  |  |  |
|  | SUB | **Submittal** |  |  | 2027-04-27 | 2027-05-05 |  |  |  |  |  |  |  |  |  |  |  |  |  |  |  |  |
| HJD-E1030 |  | Concept design: submittal - Jeddah |  | 7d | 2027-04-27 | 2027-05-05 | HJD-E1010 | 288d | 0d | Contract cost (BOQ x payment milestones) [93599 SAR]; Progress weight (fair EPC distribution, SAR value) [34100 SAR] | 34,100 | HHR | HJD | HHR | Standard | ETECHS | Concept | Submittal | ENG | DOCS | DES | MS2 |
|  | APR | **Approval** |  |  | 2027-05-06 | 2027-06-02 |  |  |  |  |  |  |  |  |  |  |  |  |  |  |  |  |
| HJD-E1040 |  | Concept design: SAR review and approval - Jeddah |  | 15d | 2027-05-06 | 2027-06-02 | HJD-E1030 | 328d | 40d | Contract cost (BOQ x payment milestones) [95509 SAR]; Progress weight (fair EPC distribution, SAR value) [73780 SAR] | 73,780 | HHR | HJD | HHR | Standard | SAR | Concept | Approval | ENG | DOCS | DES | MS3 |
|  | PRE | **Preliminary (schematic) design** |  |  | 2027-05-06 | 2027-06-20 |  |  |  |  |  |  |  |  |  |  |  |  |  |  |  |  |
|  | SUB | **Submittal** |  |  | 2027-05-06 | 2027-05-30 |  |  |  |  |  |  |  |  |  |  |  |  |  |  |  |  |
| HJD-E1050 |  | Preliminary design: submittal - Jeddah |  | 12d | 2027-05-06 | 2027-05-30 | HJD-E1030 | 288d | 0d | Contract cost (BOQ x payment milestones) [187197 SAR]; Progress weight (fair EPC distribution, SAR value) [86180 SAR] | 86,180 | HHR | HJD | HHR | Standard | ETECHS | Preliminary | Submittal | ENG | DOCS | DES | MS2 |
|  | APR | **Approval** |  |  | 2027-05-31 | 2027-06-20 |  |  |  |  |  |  |  |  |  |  |  |  |  |  |  |  |
| HJD-E1060 |  | Preliminary design: SAR review and approval - Jeddah |  | 15d | 2027-05-31 | 2027-06-20 | HJD-E1050 | 316d | 28d | Contract cost (BOQ x payment milestones) [191018 SAR]; Progress weight (fair EPC distribution, SAR value) [107880 SAR] | 107,880 | HHR | HJD | HHR | Standard | SAR | Preliminary | Approval | ENG | DOCS | DES | MS3 |

| ID | WBS | Activity | Type | Duration | Start | Finish | Predecessors | Total float | Free float | Resources | Cost | Area | Station | Railway | Priority | Responsibility | Design stage | Submittal or approval | EPC phase | Discipline | Programme phase | Payment milestone |
| --- | --- | --- | --- | --- | --- | --- | --- | --- | --- | --- | --- | --- | --- | --- | --- | --- | --- | --- | --- | --- | --- | --- |
|  | DET | **Detailed design** |  |  | 2027-05-31 | 2027-07-15 |  |  |  |  |  |  |  |  |  |  |  |  |  |  |  |  |
|  | SUB | **Submittal** |  |  | 2027-05-31 | 2027-06-24 |  |  |  |  |  |  |  |  |  |  |  |  |  |  |  |  |
| HJD-E1070 |  | Detailed design: submittal (drawings, BOQ, data sheets) - Jeddah |  | 19d | 2027-05-31 | 2027-06-24 | HJD-E1050 | 288d | 0d | Contract cost (BOQ x payment milestones) [374395 SAR]; Progress weight (fair EPC distribution, SAR value) [181040 SAR] | 181,040 | HHR | HJD | HHR | Standard | ETECHS | Detailed | Submittal | ENG | DOCS | DES | MS2 |
|  | APR | **Approval** |  |  | 2027-06-27 | 2027-07-15 |  |  |  |  |  |  |  |  |  |  |  |  |  |  |  |  |
| HJD-E1080 |  | Detailed design: SAR review and approval - Jeddah |  | 15d | 2027-06-27 | 2027-07-15 | HJD-E1070 | 297d | 9d | Contract cost (BOQ x payment milestones) [382035 SAR]; Progress weight (fair EPC distribution, SAR value) [142600 SAR] | 142,600 | HHR | HJD | HHR | Standard | SAR | Detailed | Approval | ENG | DOCS | DES | MS3 |
|  | IFC | **IFC and shop drawings** |  |  | 2027-06-27 | 2027-07-28 |  |  |  |  |  |  |  |  |  |  |  |  |  |  |  |  |
|  | SUB | **Submittal** |  |  | 2027-06-27 | 2027-07-07 |  |  |  |  |  |  |  |  |  |  |  |  |  |  |  |  |
| HJD-E1090 |  | IFC and shop drawings: submittal - Jeddah |  | 9d | 2027-06-27 | 2027-07-07 | HJD-E1070 | 288d | 0d | Contract cost (BOQ x payment milestones) [187197 SAR]; Progress weight (fair EPC distribution, SAR value) [72540 SAR] | 72,540 | HHR | HJD | HHR | Standard | ETECHS | IFC | Submittal | ENG | DOCS | DES | MS2 |
|  | APR | **Approval** |  |  | 2027-07-08 | 2027-07-28 |  |  |  |  |  |  |  |  |  |  |  |  |  |  |  |  |
| HJD-E1100 |  | IFC and shop drawings: SAR approval and release - Jeddah |  | 15d | 2027-07-08 | 2027-07-28 | HJD-E1090 | 288d | 0d | Contract cost (BOQ x payment milestones) [191018 SAR]; Progress weight (fair EPC distribution, SAR value) [121520 SAR] | 121,520 | HHR | HJD | HHR | Standard | SAR | IFC | Approval | ENG | DOCS | DES | MS3 |
|  | HCS | **HCIS documentation (Stage 3 and 4)** |  |  | 2027-06-09 | 2027-07-28 |  |  |  |  |  |  |  |  |  |  |  |  |  |  |  |  |
|  | SUB | **Submittal** |  |  | 2027-06-09 | 2027-07-07 |  |  |  |  |  |  |  |  |  |  |  |  |  |  |  |  |
| HJD-E1110 |  | HCIS Stage 3 and 4 documents: preparation - Jeddah |  | 21d | 2027-06-09 | 2027-07-07 | HJD-E1050 FS+7d, HJD-E1090 FF | 288d | 0d | Contract cost (BOQ x payment milestones) [46799 SAR]; Progress weight (fair EPC distribution, SAR value) [37820 SAR] | 37,820 | HHR | HJD | HHR | Standard | ETECHS | HCIS | Submittal | ENG | DOCS | DES | MS2 |
|  | APR | **Approval** |  |  | 2027-07-08 | 2027-07-28 |  |  |  |  |  |  |  |  |  |  |  |  |  |  |  |  |
| HJD-E1120 |  | HCIS Stage 3 and 4 documents: SAR final review and HCIS submission - Jeddah |  | 15d | 2027-07-08 | 2027-07-28 | HJD-E1110 | 288d | 0d | Contract cost (BOQ x payment milestones) [47754 SAR]; Progress weight (fair EPC distribution, SAR value) [26660 SAR] | 26,660 | HHR | HJD | HHR | Standard | SAR/HCIS | HCIS | Approval | ENG | DOCS | DES | MS3 |
|  | ASB | **As-built and O&M documentation** |  |  | 2028-05-17 | 2028-08-02 |  |  |  |  |  |  |  |  |  |  |  |  |  |  |  |  |
|  | SUB | **Submittal** |  |  | 2028-05-17 | 2028-07-12 |  |  |  |  |  |  |  |  |  |  |  |  |  |  |  |  |
| HJD-E1130 |  | As-built and O&M documentation: submittal - Jeddah |  | 41d | 2028-05-17 | 2028-07-12 | HJD-C2100 | 288d | 0d | Contract cost (BOQ x payment milestones) [143263 SAR]; Progress weight (fair EPC distribution, SAR value) [78740 SAR] | 78,740 | HHR | HJD | HHR | Standard | ETECHS | As-built | Submittal | ENG | DOCS | COM | MS7 |
|  | APR | **Approval** |  |  | 2028-07-13 | 2028-08-02 |  |  |  |  |  |  |  |  |  |  |  |  |  |  |  |  |
| HJD-E1140 |  | As-built and O&M documentation: SAR review and approval - Jeddah |  | 15d | 2028-07-13 | 2028-08-02 | HJD-E1130 | 288d | 0d | Contract cost (BOQ x payment milestones) [47754 SAR]; Progress weight (fair EPC distribution, SAR value) [29140 SAR] | 29,140 | HHR | HJD | HHR | Standard | SAR | As-built | Approval | ENG | DOCS | COM | MS7 |
|  | EDM | **Dammam (EWR)** |  |  | 2027-06-17 | 2028-06-06 |  |  |  |  |  |  |  |  |  |  |  |  |  |  |  |  |
| EDM-E1200 |  | MS2 Engineering submittal complete (10%) - Dammam | milestone | 0d | 2027-09-22 | 2027-09-22 | EDM-E1090, EDM-E1110 | 344d | 15d |  |  | EWR | EDM | EWR | Standard | ETECHS | - | - | MS | DOCS | MS | MS2 |
| EDM-E1210 |  | MS3 Engineering approved by SAR (10%) - Dammam | milestone | 0d | 2027-10-14 | 2027-10-14 | EDM-E1020, EDM-E1040, EDM-E1060, EDM-E1080, EDM-E1100, EDM-E1120, EDM-E1200 | 329d | 0d |  |  | EWR | EDM | EWR | Standard | SAR | - | - | MS | DOCS | MS | MS3 |
|  | SRV | **Site survey and as-found verification** |  |  | 2027-06-17 | 2027-07-19 |  |  |  |  |  |  |  |  |  |  |  |  |  |  |  |  |
|  | SUB | **Submittal** |  |  | 2027-06-17 | 2027-06-28 |  |  |  |  |  |  |  |  |  |  |  |  |  |  |  |  |
| EDM-E1010 |  | Survey: submittal of site survey and as-found report - Dammam |  | 8d | 2027-06-17 | 2027-06-28 | PRJ-A1060, PRJ-M2100 FS+53d | 329d | 0d | Contract cost (BOQ x payment milestones) [21994 SAR]; Progress weight (fair EPC distribution, SAR value) [17360 SAR] | 17,360 | EWR | EDM | EWR | Standard | ETECHS | Survey | Submittal | ENG | DOCS | DES | MS2 |

| ID | WBS | Activity | Duration | Start | Finish | Predecessors | Total float | Free float | Resources | Cost | Area | Station | Railway | Priority | Responsibility | Design stage | Submittal or approval | EPC phase | Discipline | Programme phase | Payment milestone |
| --- | --- | --- | --- | --- | --- | --- | --- | --- | --- | --- | --- | --- | --- | --- | --- | --- | --- | --- | --- | --- | --- |
|  | APR | **Approval** |  | 2027-06-29 | 2027-07-19 |  |  |  |  |  |  |  |  |  |  |  |  |  |  |  |  |
| EDM-E1020 |  | Survey: SAR approval of survey report - Dammam | 15d | 2027-06-29 | 2027-07-19 | EDM-E1010 | 391d | 62d | Contract cost (BOQ x payment milestones) [15938 SAR]; Progress weight (fair EPC distribution, SAR value) [18600 SAR] | 18,600 | EWR | EDM | EWR | Standard | SAR | Survey | Approval | ENG | DOCS | DES | MS3 |
|  | CNC | **Concept design** |  | 2027-06-29 | 2027-08-01 |  |  |  |  |  |  |  |  |  |  |  |  |  |  |  |  |
|  | SUB | **Submittal** |  | 2027-06-29 | 2027-07-11 |  |  |  |  |  |  |  |  |  |  |  |  |  |  |  |  |
| EDM-E1030 |  | Concept design: submittal - Dammam | 9d | 2027-06-29 | 2027-07-11 | EDM-E1010 | 329d | 0d | Contract cost (BOQ x payment milestones) [31238 SAR]; Progress weight (fair EPC distribution, SAR value) [13640 SAR] | 13,640 | EWR | EDM | EWR | Standard | ETECHS | Concept | Submittal | ENG | DOCS | DES | MS2 |
|  | APR | **Approval** |  | 2027-07-12 | 2027-08-01 |  |  |  |  |  |  |  |  |  |  |  |  |  |  |  |  |
| EDM-E1040 |  | Concept design: SAR review and approval - Dammam | 15d | 2027-07-12 | 2027-08-01 | EDM-E1030 | 382d | 53d | Contract cost (BOQ x payment milestones) [31875 SAR]; Progress weight (fair EPC distribution, SAR value) [22320 SAR] | 22,320 | EWR | EDM | EWR | Standard | SAR | Concept | Approval | ENG | DOCS | DES | MS3 |
|  | PRE | **Preliminary (schematic) design** |  | 2027-07-12 | 2027-08-23 |  |  |  |  |  |  |  |  |  |  |  |  |  |  |  |  |
|  | SUB | **Submittal** |  | 2027-07-12 | 2027-08-02 |  |  |  |  |  |  |  |  |  |  |  |  |  |  |  |  |
| EDM-E1050 |  | Preliminary design: submittal - Dammam | 16d | 2027-07-12 | 2027-08-02 | EDM-E1030 | 329d | 0d | Contract cost (BOQ x payment milestones) [62475 SAR]; Progress weight (fair EPC distribution, SAR value) [33480 SAR] | 33,480 | EWR | EDM | EWR | Standard | ETECHS | Preliminary | Submittal | ENG | DOCS | DES | MS2 |
|  | APR | **Approval** |  | 2027-08-03 | 2027-08-23 |  |  |  |  |  |  |  |  |  |  |  |  |  |  |  |  |
| EDM-E1060 |  | Preliminary design: SAR review and approval - Dammam | 15d | 2027-08-03 | 2027-08-23 | EDM-E1050 | 366d | 37d | Contract cost (BOQ x payment milestones) [63750 SAR]; Progress weight (fair EPC distribution, SAR value) [31620 SAR] | 31,620 | EWR | EDM | EWR | Standard | SAR | Preliminary | Approval | ENG | DOCS | DES | MS3 |
|  | DET | **Detailed design** |  | 2027-08-03 | 2027-09-28 |  |  |  |  |  |  |  |  |  |  |  |  |  |  |  |  |
|  | SUB | **Submittal** |  | 2027-08-03 | 2027-09-06 |  |  |  |  |  |  |  |  |  |  |  |  |  |  |  |  |
| EDM-E1070 |  | Detailed design: submittal (drawings, BOQ, data sheets) - Dammam | 25d | 2027-08-03 | 2027-09-06 | EDM-E1050 | 329d | 0d | Contract cost (BOQ x payment milestones) [124950 SAR]; Progress weight (fair EPC distribution, SAR value) [67580 SAR] | 67,580 | EWR | EDM | EWR | Standard | ETECHS | Detailed | Submittal | ENG | DOCS | DES | MS2 |
|  | APR | **Approval** |  | 2027-09-07 | 2027-09-28 |  |  |  |  |  |  |  |  |  |  |  |  |  |  |  |  |
| EDM-E1080 |  | Detailed design: SAR review and approval - Dammam | 15d | 2027-09-07 | 2027-09-28 | EDM-E1070 | 341d | 12d | Contract cost (BOQ x payment milestones) [127500 SAR]; Progress weight (fair EPC distribution, SAR value) [40300 SAR] | 40,300 | EWR | EDM | EWR | Standard | SAR | Detailed | Approval | ENG | DOCS | DES | MS3 |
|  | IFC | **IFC and shop drawings** |  | 2027-09-07 | 2027-10-14 |  |  |  |  |  |  |  |  |  |  |  |  |  |  |  |  |
|  | SUB | **Submittal** |  | 2027-09-07 | 2027-09-22 |  |  |  |  |  |  |  |  |  |  |  |  |  |  |  |  |
| EDM-E1090 |  | IFC and shop drawings: submittal - Dammam | 12d | 2027-09-07 | 2027-09-22 | EDM-E1070 | 329d | 0d | Contract cost (BOQ x payment milestones) [62475 SAR]; Progress weight (fair EPC distribution, SAR value) [28520 SAR] | 28,520 | EWR | EDM | EWR | Standard | ETECHS | IFC | Submittal | ENG | DOCS | DES | MS2 |
|  | APR | **Approval** |  | 2027-09-26 | 2027-10-14 |  |  |  |  |  |  |  |  |  |  |  |  |  |  |  |  |
| EDM-E1100 |  | IFC and shop drawings: SAR approval and release - Dammam | 15d | 2027-09-26 | 2027-10-14 | EDM-E1090 | 329d | 0d | Contract cost (BOQ x payment milestones) [63750 SAR]; Progress weight (fair EPC distribution, SAR value) [35960 SAR] | 35,960 | EWR | EDM | EWR | Standard | SAR | IFC | Approval | ENG | DOCS | DES | MS3 |
|  | HCS | **HCIS documentation (Stage 3 and 4)** |  | 2027-08-16 | 2027-10-14 |  |  |  |  |  |  |  |  |  |  |  |  |  |  |  |  |
|  | SUB | **Submittal** |  | 2027-08-16 | 2027-09-22 |  |  |  |  |  |  |  |  |  |  |  |  |  |  |  |  |
| EDM-E1110 |  | HCIS Stage 3 and 4 documents: preparation - Dammam | 28d | 2027-08-16 | 2027-09-22 | EDM-E1050 FS+9d, EDM-E1090 FF | 329d | 0d | Contract cost (BOQ x payment milestones) [15619 SAR]; Progress weight (fair EPC distribution, SAR value) [14260 SAR] | 14,260 | EWR | EDM | EWR | Standard | ETECHS | HCIS | Submittal | ENG | DOCS | DES | MS2 |

| ID | WBS | Activity | Type | Duration | Start | Finish | Predecessors | Total float | Free float | Resources | Cost | Area | Station | Railway | Priority | Responsibility | Design stage | Submittal or approval | EPC phase | Discipline | Programme phase | Payment milestone |
| --- | --- | --- | --- | --- | --- | --- | --- | --- | --- | --- | --- | --- | --- | --- | --- | --- | --- | --- | --- | --- | --- | --- |
|  | APR | **Approval** |  |  | 2027-09-26 | 2027-10-14 |  |  |  |  |  |  |  |  |  |  |  |  |  |  |  |  |
| EDM-E1120 |  | HCIS Stage 3 and 4 documents: SAR final review and HCIS submission - Dammam |  | 15d | 2027-09-26 | 2027-10-14 | EDM-E1110 | 329d | 0d | Contract cost (BOQ x payment milestones) [15938 SAR]; Progress weight (fair EPC distribution, SAR value) [7440 SAR] | 7,440 | EWR | EDM | EWR | Standard | SAR/HCIS | HCIS | Approval | ENG | DOCS | DES | MS3 |
|  | ASB | **As-built and O&M documentation** |  |  | 2028-04-03 | 2028-06-06 |  |  |  |  |  |  |  |  |  |  |  |  |  |  |  |  |
|  | SUB | **Submittal** |  |  | 2028-04-03 | 2028-05-16 |  |  |  |  |  |  |  |  |  |  |  |  |  |  |  |  |
| EDM-E1130 |  | As-built and O&M documentation: submittal - Dammam |  | 27d | 2028-04-03 | 2028-05-16 | EDM-C2100 | 329d | 0d | Contract cost (BOQ x payment milestones) [47813 SAR]; Progress weight (fair EPC distribution, SAR value) [22940 SAR] | 22,940 | EWR | EDM | EWR | Standard | ETECHS | As-built | Submittal | ENG | DOCS | COM | MS7 |
|  | APR | **Approval** |  |  | 2028-05-17 | 2028-06-06 |  |  |  |  |  |  |  |  |  |  |  |  |  |  |  |  |
| EDM-E1140 |  | As-built and O&M documentation: SAR review and approval - Dammam |  | 15d | 2028-05-17 | 2028-06-06 | EDM-E1130 | 329d | 0d | Contract cost (BOQ x payment milestones) [15938 SAR]; Progress weight (fair EPC distribution, SAR value) [13020 SAR] | 13,020 | EWR | EDM | EWR | Standard | SAR | As-built | Approval | ENG | DOCS | COM | MS7 |
|  | NQS | **Al Qassim (NSR)** |  |  | 2027-08-10 | 2028-08-20 |  |  |  |  |  |  |  |  |  |  |  |  |  |  |  |  |
| NQS-E1200 |  | MS2 Engineering submittal complete (10%) - Al Qassim | milestone | 0d | 2027-11-18 | 2027-11-18 | NQS-E1090, NQS-E1110 | 291d | 15d |  |  | NSR | NQS | NSR | Standard | ETECHS | - | - | MS | DOCS | MS | MS2 |
| NQS-E1210 |  | MS3 Engineering approved by SAR (10%) - Al Qassim | milestone | 0d | 2027-12-09 | 2027-12-09 | NQS-E1020, NQS-E1040, NQS-E1060, NQS-E1080, NQS-E1100, NQS-E1120, NQS-E1200 | 276d | 0d |  |  | NSR | NQS | NSR | Standard | SAR | - | - | MS | DOCS | MS | MS3 |
|  | SRV | **Site survey and as-found verification** |  |  | 2027-08-10 | 2027-09-09 |  |  |  |  |  |  |  |  |  |  |  |  |  |  |  |  |
|  | SUB | **Submittal** |  |  | 2027-08-10 | 2027-08-19 |  |  |  |  |  |  |  |  |  |  |  |  |  |  |  |  |
| NQS-E1010 |  | Survey: submittal of site survey and as-found report - Al Qassim |  | 8d | 2027-08-10 | 2027-08-19 | PRJ-A1060, PRJ-M2100 FS+91d | 276d | 0d | Contract cost (BOQ x payment milestones) [23453 SAR]; Progress weight (fair EPC distribution, SAR value) [18600 SAR] | 18,600 | NSR | NQS | NSR | Standard | ETECHS | Survey | Submittal | ENG | DOCS | DES | MS2 |
|  | APR | **Approval** |  |  | 2027-08-22 | 2027-09-09 |  |  |  |  |  |  |  |  |  |  |  |  |  |  |  |  |
| NQS-E1020 |  | Survey: SAR approval of survey report - Al Qassim |  | 15d | 2027-08-22 | 2027-09-09 | NQS-E1010 | 340d | 64d | Contract cost (BOQ x payment milestones) [16995 SAR]; Progress weight (fair EPC distribution, SAR value) [19840 SAR] | 19,840 | NSR | NQS | NSR | Standard | SAR | Survey | Approval | ENG | DOCS | DES | MS3 |
|  | CNC | **Concept design** |  |  | 2027-08-22 | 2027-09-26 |  |  |  |  |  |  |  |  |  |  |  |  |  |  |  |  |
|  | SUB | **Submittal** |  |  | 2027-08-22 | 2027-09-02 |  |  |  |  |  |  |  |  |  |  |  |  |  |  |  |  |
| NQS-E1030 |  | Concept design: submittal - Al Qassim |  | 10d | 2027-08-22 | 2027-09-02 | NQS-E1010 | 276d | 0d | Contract cost (BOQ x payment milestones) [33309 SAR]; Progress weight (fair EPC distribution, SAR value) [15500 SAR] | 15,500 | NSR | NQS | NSR | Standard | ETECHS | Concept | Submittal | ENG | DOCS | DES | MS2 |
|  | APR | **Approval** |  |  | 2027-09-05 | 2027-09-26 |  |  |  |  |  |  |  |  |  |  |  |  |  |  |  |  |
| NQS-E1040 |  | Concept design: SAR review and approval - Al Qassim |  | 15d | 2027-09-05 | 2027-09-26 | NQS-E1030 | 330d | 54d | Contract cost (BOQ x payment milestones) [33989 SAR]; Progress weight (fair EPC distribution, SAR value) [22940 SAR] | 22,940 | NSR | NQS | NSR | Standard | SAR | Concept | Approval | ENG | DOCS | DES | MS3 |
|  | PRE | **Preliminary (schematic) design** |  |  | 2027-09-05 | 2027-10-18 |  |  |  |  |  |  |  |  |  |  |  |  |  |  |  |  |
|  | SUB | **Submittal** |  |  | 2027-09-05 | 2027-09-27 |  |  |  |  |  |  |  |  |  |  |  |  |  |  |  |  |
| NQS-E1050 |  | Preliminary design: submittal - Al Qassim |  | 16d | 2027-09-05 | 2027-09-27 | NQS-E1030 | 276d | 0d | Contract cost (BOQ x payment milestones) [66619 SAR]; Progress weight (fair EPC distribution, SAR value) [35340 SAR] | 35,340 | NSR | NQS | NSR | Standard | ETECHS | Preliminary | Submittal | ENG | DOCS | DES | MS2 |
|  | APR | **Approval** |  |  | 2027-09-28 | 2027-10-18 |  |  |  |  |  |  |  |  |  |  |  |  |  |  |  |  |
| NQS-E1060 |  | Preliminary design: SAR review and approval - Al Qassim |  | 15d | 2027-09-28 | 2027-10-18 | NQS-E1050 | 314d | 38d | Contract cost (BOQ x payment milestones) [67978 SAR]; Progress weight (fair EPC distribution, SAR value) [33480 SAR] | 33,480 | NSR | NQS | NSR | Standard | SAR | Preliminary | Approval | ENG | DOCS | DES | MS3 |

| ID | WBS | Activity | Type | Duration | Start | Finish | Predecessors | Total float | Free float | Resources | Cost | Area | Station | Railway | Priority | Responsibility | Design stage | Submittal or approval | EPC phase | Discipline | Programme phase | Payment milestone |
| --- | --- | --- | --- | --- | --- | --- | --- | --- | --- | --- | --- | --- | --- | --- | --- | --- | --- | --- | --- | --- | --- | --- |
|  | DET | **Detailed design** |  |  | 2027-09-28 | 2027-11-23 |  |  |  |  |  |  |  |  |  |  |  |  |  |  |  |  |
|  | SUB | **Submittal** |  |  | 2027-09-28 | 2027-11-02 |  |  |  |  |  |  |  |  |  |  |  |  |  |  |  |  |
| NQS-E1070 |  | Detailed design: submittal (drawings, BOQ, data sheets) - Al Qassim |  | 26d | 2027-09-28 | 2027-11-02 | NQS-E1050 | 276d | 0d | Contract cost (BOQ x payment milestones) [133238 SAR]; Progress weight (fair EPC distribution, SAR value) [73160 SAR] | 73,160 | NSR | NQS | NSR | Standard | ETECHS | Detailed | Submittal | ENG | DOCS | DES | MS2 |
|  | APR | **Approval** |  |  | 2027-11-03 | 2027-11-23 |  |  |  |  |  |  |  |  |  |  |  |  |  |  |  |  |
| NQS-E1080 |  | Detailed design: SAR review and approval - Al Qassim |  | 15d | 2027-11-03 | 2027-11-23 | NQS-E1070 | 288d | 12d | Contract cost (BOQ x payment milestones) [135957 SAR]; Progress weight (fair EPC distribution, SAR value) [42160 SAR] | 42,160 | NSR | NQS | NSR | Standard | SAR | Detailed | Approval | ENG | DOCS | DES | MS3 |
|  | IFC | **IFC and shop drawings** |  |  | 2027-11-03 | 2027-12-09 |  |  |  |  |  |  |  |  |  |  |  |  |  |  |  |  |
|  | SUB | **Submittal** |  |  | 2027-11-03 | 2027-11-18 |  |  |  |  |  |  |  |  |  |  |  |  |  |  |  |  |
| NQS-E1090 |  | IFC and shop drawings: submittal - Al Qassim |  | 12d | 2027-11-03 | 2027-11-18 | NQS-E1070 | 276d | 0d | Contract cost (BOQ x payment milestones) [66619 SAR]; Progress weight (fair EPC distribution, SAR value) [31000 SAR] | 31,000 | NSR | NQS | NSR | Standard | ETECHS | IFC | Submittal | ENG | DOCS | DES | MS2 |
|  | APR | **Approval** |  |  | 2027-11-21 | 2027-12-09 |  |  |  |  |  |  |  |  |  |  |  |  |  |  |  |  |
| NQS-E1100 |  | IFC and shop drawings: SAR approval and release - Al Qassim |  | 15d | 2027-11-21 | 2027-12-09 | NQS-E1090 | 276d | 0d | Contract cost (BOQ x payment milestones) [67978 SAR]; Progress weight (fair EPC distribution, SAR value) [38440 SAR] | 38,440 | NSR | NQS | NSR | Standard | SAR | IFC | Approval | ENG | DOCS | DES | MS3 |
|  | HCS | **HCIS documentation (Stage 3 and 4)** |  |  | 2027-10-12 | 2027-12-09 |  |  |  |  |  |  |  |  |  |  |  |  |  |  |  |  |
|  | SUB | **Submittal** |  |  | 2027-10-12 | 2027-11-18 |  |  |  |  |  |  |  |  |  |  |  |  |  |  |  |  |
| NQS-E1110 |  | HCIS Stage 3 and 4 documents: preparation - Al Qassim |  | 28d | 2027-10-12 | 2027-11-18 | NQS-E1050 FS+10d, NQS-E1090 FF | 276d | 0d | Contract cost (BOQ x payment milestones) [16655 SAR]; Progress weight (fair EPC distribution, SAR value) [14880 SAR] | 14,880 | NSR | NQS | NSR | Standard | ETECHS | HCIS | Submittal | ENG | DOCS | DES | MS2 |
|  | APR | **Approval** |  |  | 2027-11-21 | 2027-12-09 |  |  |  |  |  |  |  |  |  |  |  |  |  |  |  |  |
| NQS-E1120 |  | HCIS Stage 3 and 4 documents: SAR final review and HCIS submission - Al Qassim |  | 15d | 2027-11-21 | 2027-12-09 | NQS-E1110 | 276d | 0d | Contract cost (BOQ x payment milestones) [16995 SAR]; Progress weight (fair EPC distribution, SAR value) [8060 SAR] | 8,060 | NSR | NQS | NSR | Standard | SAR/HCIS | HCIS | Approval | ENG | DOCS | DES | MS3 |
|  | ASB | **As-built and O&M documentation** |  |  | 2028-06-21 | 2028-08-20 |  |  |  |  |  |  |  |  |  |  |  |  |  |  |  |  |
|  | SUB | **Submittal** |  |  | 2028-06-21 | 2028-07-30 |  |  |  |  |  |  |  |  |  |  |  |  |  |  |  |  |
| NQS-E1130 |  | As-built and O&M documentation: submittal - Al Qassim |  | 28d | 2028-06-21 | 2028-07-30 | NQS-C2100 | 276d | 0d | Contract cost (BOQ x payment milestones) [50984 SAR]; Progress weight (fair EPC distribution, SAR value) [24800 SAR] | 24,800 | NSR | NQS | NSR | Standard | ETECHS | As-built | Submittal | ENG | DOCS | COM | MS7 |
|  | APR | **Approval** |  |  | 2028-07-31 | 2028-08-20 |  |  |  |  |  |  |  |  |  |  |  |  |  |  |  |  |
| NQS-E1140 |  | As-built and O&M documentation: SAR review and approval - Al Qassim |  | 15d | 2028-07-31 | 2028-08-20 | NQS-E1130 | 276d | 0d | Contract cost (BOQ x payment milestones) [16995 SAR]; Progress weight (fair EPC distribution, SAR value) [13640 SAR] | 13,640 | NSR | NQS | NSR | Standard | SAR | As-built | Approval | ENG | DOCS | COM | MS7 |
|  | EHF | **Hufuf (EWR)** |  |  | 2027-08-10 | 2028-07-26 |  |  |  |  |  |  |  |  |  |  |  |  |  |  |  |  |
| EHF-E1200 |  | MS2 Engineering submittal complete (10%) - Hufuf | milestone | 0d | 2027-11-18 | 2027-11-18 | EHF-E1090, EHF-E1110 | 308d | 15d |  |  | EWR | EHF | EWR | Standard | ETECHS | - | - | MS | DOCS | MS | MS2 |
| EHF-E1210 |  | MS3 Engineering approved by SAR (10%) - Hufuf | milestone | 0d | 2027-12-09 | 2027-12-09 | EHF-E1020, EHF-E1040, EHF-E1060, EHF-E1080, EHF-E1100, EHF-E1120, EHF-E1200 | 293d | 0d |  |  | EWR | EHF | EWR | Standard | SAR | - | - | MS | DOCS | MS | MS3 |
|  | SRV | **Site survey and as-found verification** |  |  | 2027-08-10 | 2027-09-09 |  |  |  |  |  |  |  |  |  |  |  |  |  |  |  |  |
|  | SUB | **Submittal** |  |  | 2027-08-10 | 2027-08-19 |  |  |  |  |  |  |  |  |  |  |  |  |  |  |  |  |
| EHF-E1010 |  | Survey: submittal of site survey and as-found report - Hufuf |  | 8d | 2027-08-10 | 2027-08-19 | PRJ-A1060, PRJ-M2100 FS+91d | 293d | 0d | Contract cost (BOQ x payment milestones) [19517 SAR]; Progress weight (fair EPC distribution, SAR value) [15500 SAR] | 15,500 | EWR | EHF | EWR | Standard | ETECHS | Survey | Submittal | ENG | DOCS | DES | MS2 |

| ID | WBS | Activity | Duration | Start | Finish | Predecessors | Total float | Free float | Resources | Cost | Area | Station | Railway | Priority | Responsibility | Design stage | Submittal or approval | EPC phase | Discipline | Programme phase | Payment milestone |
| --- | --- | --- | --- | --- | --- | --- | --- | --- | --- | --- | --- | --- | --- | --- | --- | --- | --- | --- | --- | --- | --- |
|  | APR | **Approval** |  | 2027-08-22 | 2027-09-09 |  |  |  |  |  |  |  |  |  |  |  |  |  |  |  |  |
| EHF-E1020 |  | Survey: SAR approval of survey report - Hufuf | 15d | 2027-08-22 | 2027-09-09 | EHF-E1010 | 357d | 64d | Contract cost (BOQ x payment milestones) [14143 SAR]; Progress weight (fair EPC distribution, SAR value) [16740 SAR] | 16,740 | EWR | EHF | EWR | Standard | SAR | Survey | Approval | ENG | DOCS | DES | MS3 |
|  | CNC | **Concept design** |  | 2027-08-22 | 2027-09-26 |  |  |  |  |  |  |  |  |  |  |  |  |  |  |  |  |
|  | SUB | **Submittal** |  | 2027-08-22 | 2027-09-02 |  |  |  |  |  |  |  |  |  |  |  |  |  |  |  |  |
| EHF-E1030 |  | Concept design: submittal - Hufuf | 10d | 2027-08-22 | 2027-09-02 | EHF-E1010 | 293d | 0d | Contract cost (BOQ x payment milestones) [27719 SAR]; Progress weight (fair EPC distribution, SAR value) [13020 SAR] | 13,020 | EWR | EHF | EWR | Standard | ETECHS | Concept | Submittal | ENG | DOCS | DES | MS2 |
|  | APR | **Approval** |  | 2027-09-05 | 2027-09-26 |  |  |  |  |  |  |  |  |  |  |  |  |  |  |  |  |
| EHF-E1040 |  | Concept design: SAR review and approval - Hufuf | 15d | 2027-09-05 | 2027-09-26 | EHF-E1030 | 347d | 54d | Contract cost (BOQ x payment milestones) [28285 SAR]; Progress weight (fair EPC distribution, SAR value) [19220 SAR] | 19,220 | EWR | EHF | EWR | Standard | SAR | Concept | Approval | ENG | DOCS | DES | MS3 |
|  | PRE | **Preliminary (schematic) design** |  | 2027-09-05 | 2027-10-18 |  |  |  |  |  |  |  |  |  |  |  |  |  |  |  |  |
|  | SUB | **Submittal** |  | 2027-09-05 | 2027-09-27 |  |  |  |  |  |  |  |  |  |  |  |  |  |  |  |  |
| EHF-E1050 |  | Preliminary design: submittal - Hufuf | 16d | 2027-09-05 | 2027-09-27 | EHF-E1030 | 293d | 0d | Contract cost (BOQ x payment milestones) [55439 SAR]; Progress weight (fair EPC distribution, SAR value) [29760 SAR] | 29,760 | EWR | EHF | EWR | Standard | ETECHS | Preliminary | Submittal | ENG | DOCS | DES | MS2 |
|  | APR | **Approval** |  | 2027-09-28 | 2027-10-18 |  |  |  |  |  |  |  |  |  |  |  |  |  |  |  |  |
| EHF-E1060 |  | Preliminary design: SAR review and approval - Hufuf | 15d | 2027-09-28 | 2027-10-18 | EHF-E1050 | 331d | 38d | Contract cost (BOQ x payment milestones) [56570 SAR]; Progress weight (fair EPC distribution, SAR value) [27900 SAR] | 27,900 | EWR | EHF | EWR | Standard | SAR | Preliminary | Approval | ENG | DOCS | DES | MS3 |
|  | DET | **Detailed design** |  | 2027-09-28 | 2027-11-23 |  |  |  |  |  |  |  |  |  |  |  |  |  |  |  |  |
|  | SUB | **Submittal** |  | 2027-09-28 | 2027-11-02 |  |  |  |  |  |  |  |  |  |  |  |  |  |  |  |  |
| EHF-E1070 |  | Detailed design: submittal (drawings, BOQ, data sheets) - Hufuf | 26d | 2027-09-28 | 2027-11-02 | EHF-E1050 | 293d | 0d | Contract cost (BOQ x payment milestones) [110877 SAR]; Progress weight (fair EPC distribution, SAR value) [60760 SAR] | 60,760 | EWR | EHF | EWR | Standard | ETECHS | Detailed | Submittal | ENG | DOCS | DES | MS2 |
|  | APR | **Approval** |  | 2027-11-03 | 2027-11-23 |  |  |  |  |  |  |  |  |  |  |  |  |  |  |  |  |
| EHF-E1080 |  | Detailed design: SAR review and approval - Hufuf | 15d | 2027-11-03 | 2027-11-23 | EHF-E1070 | 305d | 12d | Contract cost (BOQ x payment milestones) [113140 SAR]; Progress weight (fair EPC distribution, SAR value) [35340 SAR] | 35,340 | EWR | EHF | EWR | Standard | SAR | Detailed | Approval | ENG | DOCS | DES | MS3 |
|  | IFC | **IFC and shop drawings** |  | 2027-11-03 | 2027-12-09 |  |  |  |  |  |  |  |  |  |  |  |  |  |  |  |  |
|  | SUB | **Submittal** |  | 2027-11-03 | 2027-11-18 |  |  |  |  |  |  |  |  |  |  |  |  |  |  |  |  |
| EHF-E1090 |  | IFC and shop drawings: submittal - Hufuf | 12d | 2027-11-03 | 2027-11-18 | EHF-E1070 | 293d | 0d | Contract cost (BOQ x payment milestones) [55439 SAR]; Progress weight (fair EPC distribution, SAR value) [25420 SAR] | 25,420 | EWR | EHF | EWR | Standard | ETECHS | IFC | Submittal | ENG | DOCS | DES | MS2 |
|  | APR | **Approval** |  | 2027-11-21 | 2027-12-09 |  |  |  |  |  |  |  |  |  |  |  |  |  |  |  |  |
| EHF-E1100 |  | IFC and shop drawings: SAR approval and release - Hufuf | 15d | 2027-11-21 | 2027-12-09 | EHF-E1090 | 293d | 0d | Contract cost (BOQ x payment milestones) [56570 SAR]; Progress weight (fair EPC distribution, SAR value) [32240 SAR] | 32,240 | EWR | EHF | EWR | Standard | SAR | IFC | Approval | ENG | DOCS | DES | MS3 |
|  | HCS | **HCIS documentation (Stage 3 and 4)** |  | 2027-10-12 | 2027-12-09 |  |  |  |  |  |  |  |  |  |  |  |  |  |  |  |  |
|  | SUB | **Submittal** |  | 2027-10-12 | 2027-11-18 |  |  |  |  |  |  |  |  |  |  |  |  |  |  |  |  |
| EHF-E1110 |  | HCIS Stage 3 and 4 documents: preparation - Hufuf | 28d | 2027-10-12 | 2027-11-18 | EHF-E1050 FS+10d, EHF-E1090 FF | 293d | 0d | Contract cost (BOQ x payment milestones) [13860 SAR]; Progress weight (fair EPC distribution, SAR value) [12400 SAR] | 12,400 | EWR | EHF | EWR | Standard | ETECHS | HCIS | Submittal | ENG | DOCS | DES | MS2 |

| ID | WBS | Activity | Type | Duration | Start | Finish | Predecessors | Total float | Free float | Resources | Cost | Area | Station | Railway | Priority | Responsibility | Design stage | Submittal or approval | EPC phase | Discipline | Programme phase | Payment milestone |
| --- | --- | --- | --- | --- | --- | --- | --- | --- | --- | --- | --- | --- | --- | --- | --- | --- | --- | --- | --- | --- | --- | --- |
|  | APR | **Approval** |  |  | 2027-11-21 | 2027-12-09 |  |  |  |  |  |  |  |  |  |  |  |  |  |  |  |  |
| EHF-E1120 |  | HCIS Stage 3 and 4 documents: SAR final review and HCIS submission - Hufuf |  | 15d | 2027-11-21 | 2027-12-09 | EHF-E1110 | 293d | 0d | Contract cost (BOQ x payment milestones) [14143 SAR]; Progress weight (fair EPC distribution, SAR value) [6820 SAR] | 6,820 | EWR | EHF | EWR | Standard | SAR/HCIS | HCIS | Approval | ENG | DOCS | DES | MS3 |
|  | ASB | **As-built and O&M documentation** |  |  | 2028-05-30 | 2028-07-26 |  |  |  |  |  |  |  |  |  |  |  |  |  |  |  |  |
|  | SUB | **Submittal** |  |  | 2028-05-30 | 2028-07-05 |  |  |  |  |  |  |  |  |  |  |  |  |  |  |  |  |
| EHF-E1130 |  | As-built and O&M documentation: submittal - Hufuf |  | 27d | 2028-05-30 | 2028-07-05 | EHF-C2100 | 293d | 0d | Contract cost (BOQ x payment milestones) [42428 SAR]; Progress weight (fair EPC distribution, SAR value) [20460 SAR] | 20,460 | EWR | EHF | EWR | Standard | ETECHS | As-built | Submittal | ENG | DOCS | COM | MS7 |
|  | APR | **Approval** |  |  | 2028-07-06 | 2028-07-26 |  |  |  |  |  |  |  |  |  |  |  |  |  |  |  |  |
| EHF-E1140 |  | As-built and O&M documentation: SAR review and approval - Hufuf |  | 15d | 2028-07-06 | 2028-07-26 | EHF-E1130 | 293d | 0d | Contract cost (BOQ x payment milestones) [14143 SAR]; Progress weight (fair EPC distribution, SAR value) [11160 SAR] | 11,160 | EWR | EHF | EWR | Standard | SAR | As-built | Approval | ENG | DOCS | COM | MS7 |
|  | NMJ | **Al Majma'ah (NSR)** |  |  | 2027-09-28 | 2028-10-08 |  |  |  |  |  |  |  |  |  |  |  |  |  |  |  |  |
| NMJ-E1200 |  | MS2 Engineering submittal complete (10%) - Al Majma'ah | milestone | 0d | 2028-01-06 | 2028-01-06 | NMJ-E1090, NMJ-E1110 | 256d | 15d |  |  | NSR | NMJ | NSR | Standard | ETECHS | - | - | MS | DOCS | MS | MS2 |
| NMJ-E1210 |  | MS3 Engineering approved by SAR (10%) - Al Majma'ah | milestone | 0d | 2028-01-27 | 2028-01-27 | NMJ-E1020, NMJ-E1040, NMJ-E1060, NMJ-E1080, NMJ-E1100, NMJ-E1120, NMJ-E1200 | 241d | 0d |  |  | NSR | NMJ | NSR | Standard | SAR | - | - | MS | DOCS | MS | MS3 |
|  | SRV | **Site survey and as-found verification** |  |  | 2027-09-28 | 2027-10-28 |  |  |  |  |  |  |  |  |  |  |  |  |  |  |  |  |
|  | SUB | **Submittal** |  |  | 2027-09-28 | 2027-10-07 |  |  |  |  |  |  |  |  |  |  |  |  |  |  |  |  |
| NMJ-E1010 |  | Survey: submittal of site survey and as-found report - Al Majma'ah |  | 8d | 2027-09-28 | 2027-10-07 | PRJ-A1060, PRJ-M2100 FS+125d | 241d | 0d | Contract cost (BOQ x payment milestones) [23453 SAR]; Progress weight (fair EPC distribution, SAR value) [18600 SAR] | 18,600 | NSR | NMJ | NSR | Standard | ETECHS | Survey | Submittal | ENG | DOCS | DES | MS2 |
|  | APR | **Approval** |  |  | 2027-10-10 | 2027-10-28 |  |  |  |  |  |  |  |  |  |  |  |  |  |  |  |  |
| NMJ-E1020 |  | Survey: SAR approval of survey report - Al Majma'ah |  | 15d | 2027-10-10 | 2027-10-28 | NMJ-E1010 | 306d | 65d | Contract cost (BOQ x payment milestones) [16995 SAR]; Progress weight (fair EPC distribution, SAR value) [19840 SAR] | 19,840 | NSR | NMJ | NSR | Standard | SAR | Survey | Approval | ENG | DOCS | DES | MS3 |
|  | CNC | **Concept design** |  |  | 2027-10-10 | 2027-11-11 |  |  |  |  |  |  |  |  |  |  |  |  |  |  |  |  |
|  | SUB | **Submittal** |  |  | 2027-10-10 | 2027-10-21 |  |  |  |  |  |  |  |  |  |  |  |  |  |  |  |  |
| NMJ-E1030 |  | Concept design: submittal - Al Majma'ah |  | 10d | 2027-10-10 | 2027-10-21 | NMJ-E1010 | 241d | 0d | Contract cost (BOQ x payment milestones) [33309 SAR]; Progress weight (fair EPC distribution, SAR value) [15500 SAR] | 15,500 | NSR | NMJ | NSR | Standard | ETECHS | Concept | Submittal | ENG | DOCS | DES | MS2 |
|  | APR | **Approval** |  |  | 2027-10-24 | 2027-11-11 |  |  |  |  |  |  |  |  |  |  |  |  |  |  |  |  |
| NMJ-E1040 |  | Concept design: SAR review and approval - Al Majma'ah |  | 15d | 2027-10-24 | 2027-11-11 | NMJ-E1030 | 296d | 55d | Contract cost (BOQ x payment milestones) [33989 SAR]; Progress weight (fair EPC distribution, SAR value) [22940 SAR] | 22,940 | NSR | NMJ | NSR | Standard | SAR | Concept | Approval | ENG | DOCS | DES | MS3 |
|  | PRE | **Preliminary (schematic) design** |  |  | 2027-10-24 | 2027-12-05 |  |  |  |  |  |  |  |  |  |  |  |  |  |  |  |  |
|  | SUB | **Submittal** |  |  | 2027-10-24 | 2027-11-14 |  |  |  |  |  |  |  |  |  |  |  |  |  |  |  |  |
| NMJ-E1050 |  | Preliminary design: submittal - Al Majma'ah |  | 16d | 2027-10-24 | 2027-11-14 | NMJ-E1030 | 241d | 0d | Contract cost (BOQ x payment milestones) [66619 SAR]; Progress weight (fair EPC distribution, SAR value) [35340 SAR] | 35,340 | NSR | NMJ | NSR | Standard | ETECHS | Preliminary | Submittal | ENG | DOCS | DES | MS2 |
|  | APR | **Approval** |  |  | 2027-11-15 | 2027-12-05 |  |  |  |  |  |  |  |  |  |  |  |  |  |  |  |  |
| NMJ-E1060 |  | Preliminary design: SAR review and approval - Al Majma'ah |  | 15d | 2027-11-15 | 2027-12-05 | NMJ-E1050 | 280d | 39d | Contract cost (BOQ x payment milestones) [67978 SAR]; Progress weight (fair EPC distribution, SAR value) [33480 SAR] | 33,480 | NSR | NMJ | NSR | Standard | SAR | Preliminary | Approval | ENG | DOCS | DES | MS3 |

| ID | WBS | Activity | Type | Duration | Start | Finish | Predecessors | Total float | Free float | Resources | Cost | Area | Station | Railway | Priority | Responsibility | Design stage | Submittal or approval | EPC phase | Discipline | Programme phase | Payment milestone |
| --- | --- | --- | --- | --- | --- | --- | --- | --- | --- | --- | --- | --- | --- | --- | --- | --- | --- | --- | --- | --- | --- | --- |
|  | DET | **Detailed design** |  |  | 2027-11-15 | 2028-01-10 |  |  |  |  |  |  |  |  |  |  |  |  |  |  |  |  |
|  | SUB | **Submittal** |  |  | 2027-11-15 | 2027-12-20 |  |  |  |  |  |  |  |  |  |  |  |  |  |  |  |  |
| NMJ-E1070 |  | Detailed design: submittal (drawings, BOQ, data sheets) - Al Majma'ah |  | 26d | 2027-11-15 | 2027-12-20 | NMJ-E1050 | 241d | 0d | Contract cost (BOQ x payment milestones) [133238 SAR]; Progress weight (fair EPC distribution, SAR value) [73160 SAR] | 73,160 | NSR | NMJ | NSR | Standard | ETECHS | Detailed | Submittal | ENG | DOCS | DES | MS2 |
|  | APR | **Approval** |  |  | 2027-12-21 | 2028-01-10 |  |  |  |  |  |  |  |  |  |  |  |  |  |  |  |  |
| NMJ-E1080 |  | Detailed design: SAR review and approval - Al Majma'ah |  | 15d | 2027-12-21 | 2028-01-10 | NMJ-E1070 | 254d | 13d | Contract cost (BOQ x payment milestones) [135957 SAR]; Progress weight (fair EPC distribution, SAR value) [42160 SAR] | 42,160 | NSR | NMJ | NSR | Standard | SAR | Detailed | Approval | ENG | DOCS | DES | MS3 |
|  | IFC | **IFC and shop drawings** |  |  | 2027-12-21 | 2028-01-27 |  |  |  |  |  |  |  |  |  |  |  |  |  |  |  |  |
|  | SUB | **Submittal** |  |  | 2027-12-21 | 2028-01-06 |  |  |  |  |  |  |  |  |  |  |  |  |  |  |  |  |
| NMJ-E1090 |  | IFC and shop drawings: submittal - Al Majma'ah |  | 13d | 2027-12-21 | 2028-01-06 | NMJ-E1070 | 241d | 0d | Contract cost (BOQ x payment milestones) [66619 SAR]; Progress weight (fair EPC distribution, SAR value) [32240 SAR] | 32,240 | NSR | NMJ | NSR | Standard | ETECHS | IFC | Submittal | ENG | DOCS | DES | MS2 |
|  | APR | **Approval** |  |  | 2028-01-09 | 2028-01-27 |  |  |  |  |  |  |  |  |  |  |  |  |  |  |  |  |
| NMJ-E1100 |  | IFC and shop drawings: SAR approval and release - Al Majma'ah |  | 15d | 2028-01-09 | 2028-01-27 | NMJ-E1090 | 241d | 0d | Contract cost (BOQ x payment milestones) [67978 SAR]; Progress weight (fair EPC distribution, SAR value) [37200 SAR] | 37,200 | NSR | NMJ | NSR | Standard | SAR | IFC | Approval | ENG | DOCS | DES | MS3 |
|  | HCS | **HCIS documentation (Stage 3 and 4)** |  |  | 2027-11-29 | 2028-01-27 |  |  |  |  |  |  |  |  |  |  |  |  |  |  |  |  |
|  | SUB | **Submittal** |  |  | 2027-11-29 | 2028-01-06 |  |  |  |  |  |  |  |  |  |  |  |  |  |  |  |  |
| NMJ-E1110 |  | HCIS Stage 3 and 4 documents: preparation - Al Majma'ah |  | 29d | 2027-11-29 | 2028-01-06 | NMJ-E1050 FS+10d, NMJ-E1090 FF | 241d | 0d | Contract cost (BOQ x payment milestones) [16655 SAR]; Progress weight (fair EPC distribution, SAR value) [14880 SAR] | 14,880 | NSR | NMJ | NSR | Standard | ETECHS | HCIS | Submittal | ENG | DOCS | DES | MS2 |
|  | APR | **Approval** |  |  | 2028-01-09 | 2028-01-27 |  |  |  |  |  |  |  |  |  |  |  |  |  |  |  |  |
| NMJ-E1120 |  | HCIS Stage 3 and 4 documents: SAR final review and HCIS submission - Al Majma'ah |  | 15d | 2028-01-09 | 2028-01-27 | NMJ-E1110 | 241d | 0d | Contract cost (BOQ x payment milestones) [16995 SAR]; Progress weight (fair EPC distribution, SAR value) [8060 SAR] | 8,060 | NSR | NMJ | NSR | Standard | SAR/HCIS | HCIS | Approval | ENG | DOCS | DES | MS3 |
|  | ASB | **As-built and O&M documentation** |  |  | 2028-08-09 | 2028-10-08 |  |  |  |  |  |  |  |  |  |  |  |  |  |  |  |  |
|  | SUB | **Submittal** |  |  | 2028-08-09 | 2028-09-17 |  |  |  |  |  |  |  |  |  |  |  |  |  |  |  |  |
| NMJ-E1130 |  | As-built and O&M documentation: submittal - Al Majma'ah |  | 28d | 2028-08-09 | 2028-09-17 | NMJ-C2100 | 241d | 0d | Contract cost (BOQ x payment milestones) [50984 SAR]; Progress weight (fair EPC distribution, SAR value) [24800 SAR] | 24,800 | NSR | NMJ | NSR | Standard | ETECHS | As-built | Submittal | ENG | DOCS | COM | MS7 |
|  | APR | **Approval** |  |  | 2028-09-18 | 2028-10-08 |  |  |  |  |  |  |  |  |  |  |  |  |  |  |  |  |
| NMJ-E1140 |  | As-built and O&M documentation: SAR review and approval - Al Majma'ah |  | 15d | 2028-09-18 | 2028-10-08 | NMJ-E1130 | 241d | 0d | Contract cost (BOQ x payment milestones) [16995 SAR]; Progress weight (fair EPC distribution, SAR value) [13640 SAR] | 13,640 | NSR | NMJ | NSR | Standard | SAR | As-built | Approval | ENG | DOCS | COM | MS7 |
|  | HKA | **KAEC (HHR)** |  |  | 2028-01-25 | 2029-04-05 |  |  |  |  |  |  |  |  |  |  |  |  |  |  |  |  |
| HKA-E1200 |  | MS2 Engineering submittal complete (10%) - KAEC | milestone | 0d | 2028-04-26 | 2028-04-26 | HKA-E1090, HKA-E1110 | 133d | 15d |  |  | HHR | HKA | HHR | Standard | ETECHS | - | - | MS | DOCS | MS | MS2 |
| HKA-E1210 |  | MS3 Engineering approved by SAR (10%) - KAEC | milestone | 0d | 2028-05-24 | 2028-05-24 | HKA-E1020, HKA-E1040, HKA-E1060, HKA-E1080, HKA-E1100, HKA-E1120, HKA-E1200 | 118d | 0d |  |  | HHR | HKA | HHR | Standard | SAR | - | - | MS | DOCS | MS | MS3 |
|  | SRV | **Site survey and as-found verification** |  |  | 2028-01-25 | 2028-03-13 |  |  |  |  |  |  |  |  |  |  |  |  |  |  |  |  |
|  | SUB | **Submittal** |  |  | 2028-01-25 | 2028-02-14 |  |  |  |  |  |  |  |  |  |  |  |  |  |  |  |  |
| HKA-E1010 |  | Survey: submittal of site survey and as-found report - KAEC |  | 15d | 2028-01-25 | 2028-02-14 | PRJ-A1060, PRJ-M2100 FS+210d | 118d | 0d | Contract cost (BOQ x payment milestones) [38394 SAR]; Progress weight (fair EPC distribution, SAR value) [37820 SAR] | 37,820 | HHR | HKA | HHR | Standard | ETECHS | Survey | Submittal | ENG | DOCS | DES | MS2 |

| ID | WBS | Activity | Duration | Start | Finish | Predecessors | Total float | Free float | Resources | Cost | Area | Station | Railway | Priority | Responsibility | Design stage | Submittal or approval | EPC phase | Discipline | Programme phase | Payment milestone |
| --- | --- | --- | --- | --- | --- | --- | --- | --- | --- | --- | --- | --- | --- | --- | --- | --- | --- | --- | --- | --- | --- |
|  | APR | **Approval** |  | 2028-02-15 | 2028-03-13 |  |  |  |  |  |  |  |  |  |  |  |  |  |  |  |  |
| HKA-E1020 |  | Survey: SAR approval of survey report - KAEC | 15d | 2028-02-15 | 2028-03-13 | HKA-E1010 | 165d | 47d | Contract cost (BOQ x payment milestones) [27822 SAR]; Progress weight (fair EPC distribution, SAR value) [25420 SAR] | 25,420 | HHR | HKA | HHR | Standard | SAR | Survey | Approval | ENG | DOCS | DES | MS3 |
|  | CNC | **Concept design** |  | 2028-02-15 | 2028-03-22 |  |  |  |  |  |  |  |  |  |  |  |  |  |  |  |  |
|  | SUB | **Submittal** |  | 2028-02-15 | 2028-03-01 |  |  |  |  |  |  |  |  |  |  |  |  |  |  |  |  |
| HKA-E1030 |  | Concept design: submittal - KAEC | 7d | 2028-02-15 | 2028-03-01 | HKA-E1010 | 118d | 0d | Contract cost (BOQ x payment milestones) [54531 SAR]; Progress weight (fair EPC distribution, SAR value) [19840 SAR] | 19,840 | HHR | HKA | HHR | Standard | ETECHS | Concept | Submittal | ENG | DOCS | DES | MS2 |
|  | APR | **Approval** |  | 2028-03-02 | 2028-03-22 |  |  |  |  |  |  |  |  |  |  |  |  |  |  |  |  |
| HKA-E1040 |  | Concept design: SAR review and approval - KAEC | 15d | 2028-03-02 | 2028-03-22 | HKA-E1030 | 158d | 40d | Contract cost (BOQ x payment milestones) [55644 SAR]; Progress weight (fair EPC distribution, SAR value) [42780 SAR] | 42,780 | HHR | HKA | HHR | Standard | SAR | Concept | Approval | ENG | DOCS | DES | MS3 |
|  | PRE | **Preliminary (schematic) design** |  | 2028-03-02 | 2028-04-09 |  |  |  |  |  |  |  |  |  |  |  |  |  |  |  |  |
|  | SUB | **Submittal** |  | 2028-03-02 | 2028-03-19 |  |  |  |  |  |  |  |  |  |  |  |  |  |  |  |  |
| HKA-E1050 |  | Preliminary design: submittal - KAEC | 12d | 2028-03-02 | 2028-03-19 | HKA-E1030 | 118d | 0d | Contract cost (BOQ x payment milestones) [109062 SAR]; Progress weight (fair EPC distribution, SAR value) [50220 SAR] | 50,220 | HHR | HKA | HHR | Standard | ETECHS | Preliminary | Submittal | ENG | DOCS | DES | MS2 |
|  | APR | **Approval** |  | 2028-03-20 | 2028-04-09 |  |  |  |  |  |  |  |  |  |  |  |  |  |  |  |  |
| HKA-E1060 |  | Preliminary design: SAR review and approval - KAEC | 15d | 2028-03-20 | 2028-04-09 | HKA-E1050 | 146d | 28d | Contract cost (BOQ x payment milestones) [111288 SAR]; Progress weight (fair EPC distribution, SAR value) [62620 SAR] | 62,620 | HHR | HKA | HHR | Standard | SAR | Preliminary | Approval | ENG | DOCS | DES | MS3 |
|  | DET | **Detailed design** |  | 2028-03-20 | 2028-05-11 |  |  |  |  |  |  |  |  |  |  |  |  |  |  |  |  |
|  | SUB | **Submittal** |  | 2028-03-20 | 2028-04-13 |  |  |  |  |  |  |  |  |  |  |  |  |  |  |  |  |
| HKA-E1070 |  | Detailed design: submittal (drawings, BOQ, data sheets) - KAEC | 19d | 2028-03-20 | 2028-04-13 | HKA-E1050 | 118d | 0d | Contract cost (BOQ x payment milestones) [218124 SAR]; Progress weight (fair EPC distribution, SAR value) [105400 SAR] | 105,400 | HHR | HKA | HHR | Standard | ETECHS | Detailed | Submittal | ENG | DOCS | DES | MS2 |
|  | APR | **Approval** |  | 2028-04-16 | 2028-05-11 |  |  |  |  |  |  |  |  |  |  |  |  |  |  |  |  |
| HKA-E1080 |  | Detailed design: SAR review and approval - KAEC | 15d | 2028-04-16 | 2028-05-11 | HKA-E1070 | 127d | 9d | Contract cost (BOQ x payment milestones) [222575 SAR]; Progress weight (fair EPC distribution, SAR value) [83080 SAR] | 83,080 | HHR | HKA | HHR | Standard | SAR | Detailed | Approval | ENG | DOCS | DES | MS3 |
|  | IFC | **IFC and shop drawings** |  | 2028-04-16 | 2028-05-24 |  |  |  |  |  |  |  |  |  |  |  |  |  |  |  |  |
|  | SUB | **Submittal** |  | 2028-04-16 | 2028-04-26 |  |  |  |  |  |  |  |  |  |  |  |  |  |  |  |  |
| HKA-E1090 |  | IFC and shop drawings: submittal - KAEC | 9d | 2028-04-16 | 2028-04-26 | HKA-E1070 | 118d | 0d | Contract cost (BOQ x payment milestones) [109062 SAR]; Progress weight (fair EPC distribution, SAR value) [42160 SAR] | 42,160 | HHR | HKA | HHR | Standard | ETECHS | IFC | Submittal | ENG | DOCS | DES | MS2 |
|  | APR | **Approval** |  | 2028-04-27 | 2028-05-24 |  |  |  |  |  |  |  |  |  |  |  |  |  |  |  |  |
| HKA-E1100 |  | IFC and shop drawings: SAR approval and release - KAEC | 15d | 2028-04-27 | 2028-05-24 | HKA-E1090 | 118d | 0d | Contract cost (BOQ x payment milestones) [111288 SAR]; Progress weight (fair EPC distribution, SAR value) [70680 SAR] | 70,680 | HHR | HKA | HHR | Standard | SAR | IFC | Approval | ENG | DOCS | DES | MS3 |
|  | HCS | **HCIS documentation (Stage 3 and 4)** |  | 2028-03-29 | 2028-05-24 |  |  |  |  |  |  |  |  |  |  |  |  |  |  |  |  |
|  | SUB | **Submittal** |  | 2028-03-29 | 2028-04-26 |  |  |  |  |  |  |  |  |  |  |  |  |  |  |  |  |
| HKA-E1110 |  | HCIS Stage 3 and 4 documents: preparation - KAEC | 21d | 2028-03-29 | 2028-04-26 | HKA-E1050 FS+7d, HKA-E1090 FF | 118d | 0d | Contract cost (BOQ x payment milestones) [27265 SAR]; Progress weight (fair EPC distribution, SAR value) [21700 SAR] | 21,700 | HHR | HKA | HHR | Standard | ETECHS | HCIS | Submittal | ENG | DOCS | DES | MS2 |

| ID | WBS | Activity | Type | Duration | Start | Finish | Predecessors | Total float | Free float | Resources | Cost | Area | Station | Railway | Priority | Responsibility | Design stage | Submittal or approval | EPC phase | Discipline | Programme phase | Payment milestone |
| --- | --- | --- | --- | --- | --- | --- | --- | --- | --- | --- | --- | --- | --- | --- | --- | --- | --- | --- | --- | --- | --- | --- |
|  | APR | **Approval** |  |  | 2028-04-27 | 2028-05-24 |  |  |  |  |  |  |  |  |  |  |  |  |  |  |  |  |
| HKA-E1120 |  | HCIS Stage 3 and 4 documents: SAR final review and HCIS submission - KAEC |  | 15d | 2028-04-27 | 2028-05-24 | HKA-E1110 | 118d | 0d | Contract cost (BOQ x payment milestones) [27822 SAR]; Progress weight (fair EPC distribution, SAR value) [15500 SAR] | 15,500 | HHR | HKA | HHR | Standard | SAR/HCIS | HCIS | Approval | ENG | DOCS | DES | MS3 |
|  | ASB | **As-built and O&M documentation** |  |  | 2029-01-18 | 2029-04-05 |  |  |  |  |  |  |  |  |  |  |  |  |  |  |  |  |
|  | SUB | **Submittal** |  |  | 2029-01-18 | 2029-03-15 |  |  |  |  |  |  |  |  |  |  |  |  |  |  |  |  |
| HKA-E1130 |  | As-built and O&M documentation: submittal - KAEC |  | 35d | 2029-01-18 | 2029-03-15 | HKA-C2100 | 118d | 0d | Contract cost (BOQ x payment milestones) [83466 SAR]; Progress weight (fair EPC distribution, SAR value) [44020 SAR] | 44,020 | HHR | HKA | HHR | Standard | ETECHS | As-built | Submittal | ENG | DOCS | COM | MS7 |
|  | APR | **Approval** |  |  | 2029-03-18 | 2029-04-05 |  |  |  |  |  |  |  |  |  |  |  |  |  |  |  |  |
| HKA-E1140 |  | As-built and O&M documentation: SAR review and approval - KAEC |  | 15d | 2029-03-18 | 2029-04-05 | HKA-E1130 | 118d | 0d | Contract cost (BOQ x payment milestones) [27822 SAR]; Progress weight (fair EPC distribution, SAR value) [18600 SAR] | 18,600 | HHR | HKA | HHR | Standard | SAR | As-built | Approval | ENG | DOCS | COM | MS7 |
|  | HMD | **Madinah (HHR)** |  |  | 2028-01-25 | 2029-04-11 |  |  |  |  |  |  |  |  |  |  |  |  |  |  |  |  |
| HMD-E1200 |  | MS2 Engineering submittal complete (10%) - Madinah | milestone | 0d | 2028-04-26 | 2028-04-26 | HMD-E1090, HMD-E1110 | 129d | 15d |  |  | HHR | HMD | HHR | Standard | ETECHS | - | - | MS | DOCS | MS | MS2 |
| HMD-E1210 |  | MS3 Engineering approved by SAR (10%) - Madinah | milestone | 0d | 2028-05-24 | 2028-05-24 | HMD-E1020, HMD-E1040, HMD-E1060, HMD-E1080, HMD-E1100, HMD-E1120, HMD-E1200 | 114d | 0d |  |  | HHR | HMD | HHR | Standard | SAR | - | - | MS | DOCS | MS | MS3 |
|  | SRV | **Site survey and as-found verification** |  |  | 2028-01-25 | 2028-03-14 |  |  |  |  |  |  |  |  |  |  |  |  |  |  |  |  |
|  | SUB | **Submittal** |  |  | 2028-01-25 | 2028-02-15 |  |  |  |  |  |  |  |  |  |  |  |  |  |  |  |  |
| HMD-E1010 |  | Survey: submittal of site survey and as-found report - Madinah |  | 16d | 2028-01-25 | 2028-02-15 | PRJ-A1060, PRJ-M2100 FS+210d | 114d | 0d | Contract cost (BOQ x payment milestones) [38379 SAR]; Progress weight (fair EPC distribution, SAR value) [38440 SAR] | 38,440 | HHR | HMD | HHR | Standard | ETECHS | Survey | Submittal | ENG | DOCS | DES | MS2 |
|  | APR | **Approval** |  |  | 2028-02-16 | 2028-03-14 |  |  |  |  |  |  |  |  |  |  |  |  |  |  |  |  |
| HMD-E1020 |  | Survey: SAR approval of survey report - Madinah |  | 15d | 2028-02-16 | 2028-03-14 | HMD-E1010 | 160d | 46d | Contract cost (BOQ x payment milestones) [27811 SAR]; Progress weight (fair EPC distribution, SAR value) [24180 SAR] | 24,180 | HHR | HMD | HHR | Standard | SAR | Survey | Approval | ENG | DOCS | DES | MS3 |
|  | CNC | **Concept design** |  |  | 2028-02-16 | 2028-03-23 |  |  |  |  |  |  |  |  |  |  |  |  |  |  |  |  |
|  | SUB | **Submittal** |  |  | 2028-02-16 | 2028-03-02 |  |  |  |  |  |  |  |  |  |  |  |  |  |  |  |  |
| HMD-E1030 |  | Concept design: submittal - Madinah |  | 7d | 2028-02-16 | 2028-03-02 | HMD-E1010 | 114d | 0d | Contract cost (BOQ x payment milestones) [54509 SAR]; Progress weight (fair EPC distribution, SAR value) [19840 SAR] | 19,840 | HHR | HMD | HHR | Standard | ETECHS | Concept | Submittal | ENG | DOCS | DES | MS2 |
|  | APR | **Approval** |  |  | 2028-03-05 | 2028-03-23 |  |  |  |  |  |  |  |  |  |  |  |  |  |  |  |  |
| HMD-E1040 |  | Concept design: SAR review and approval - Madinah |  | 15d | 2028-03-05 | 2028-03-23 | HMD-E1030 | 153d | 39d | Contract cost (BOQ x payment milestones) [55621 SAR]; Progress weight (fair EPC distribution, SAR value) [42780 SAR] | 42,780 | HHR | HMD | HHR | Standard | SAR | Concept | Approval | ENG | DOCS | DES | MS3 |
|  | PRE | **Preliminary (schematic) design** |  |  | 2028-03-05 | 2028-04-10 |  |  |  |  |  |  |  |  |  |  |  |  |  |  |  |  |
|  | SUB | **Submittal** |  |  | 2028-03-05 | 2028-03-20 |  |  |  |  |  |  |  |  |  |  |  |  |  |  |  |  |
| HMD-E1050 |  | Preliminary design: submittal - Madinah |  | 12d | 2028-03-05 | 2028-03-20 | HMD-E1030 | 114d | 0d | Contract cost (BOQ x payment milestones) [109018 SAR]; Progress weight (fair EPC distribution, SAR value) [50220 SAR] | 50,220 | HHR | HMD | HHR | Standard | ETECHS | Preliminary | Submittal | ENG | DOCS | DES | MS2 |
|  | APR | **Approval** |  |  | 2028-03-21 | 2028-04-10 |  |  |  |  |  |  |  |  |  |  |  |  |  |  |  |  |
| HMD-E1060 |  | Preliminary design: SAR review and approval - Madinah |  | 15d | 2028-03-21 | 2028-04-10 | HMD-E1050 | 141d | 27d | Contract cost (BOQ x payment milestones) [111243 SAR]; Progress weight (fair EPC distribution, SAR value) [62620 SAR] | 62,620 | HHR | HMD | HHR | Standard | SAR | Preliminary | Approval | ENG | DOCS | DES | MS3 |

| ID | WBS | Activity | Type | Duration | Start | Finish | Predecessors | Total float | Free float | Resources | Cost | Area | Station | Railway | Priority | Responsibility | Design stage | Submittal or approval | EPC phase | Discipline | Programme phase | Payment milestone |
| --- | --- | --- | --- | --- | --- | --- | --- | --- | --- | --- | --- | --- | --- | --- | --- | --- | --- | --- | --- | --- | --- | --- |
|  | DET | **Detailed design** |  |  | 2028-03-21 | 2028-05-11 |  |  |  |  |  |  |  |  |  |  |  |  |  |  |  |  |
|  | SUB | **Submittal** |  |  | 2028-03-21 | 2028-04-13 |  |  |  |  |  |  |  |  |  |  |  |  |  |  |  |  |
| HMD-E1070 |  | Detailed design: submittal (drawings, BOQ, data sheets) - Madinah |  | 18d | 2028-03-21 | 2028-04-13 | HMD-E1050 | 114d | 0d | Contract cost (BOQ x payment milestones) [218036 SAR]; Progress weight (fair EPC distribution, SAR value) [102920 SAR] | 102,920 | HHR | HMD | HHR | Standard | ETECHS | Detailed | Submittal | ENG | DOCS | DES | MS2 |
|  | APR | **Approval** |  |  | 2028-04-16 | 2028-05-11 |  |  |  |  |  |  |  |  |  |  |  |  |  |  |  |  |
| HMD-E1080 |  | Detailed design: SAR review and approval - Madinah |  | 15d | 2028-04-16 | 2028-05-11 | HMD-E1070 | 123d | 9d | Contract cost (BOQ x payment milestones) [222485 SAR]; Progress weight (fair EPC distribution, SAR value) [85560 SAR] | 85,560 | HHR | HMD | HHR | Standard | SAR | Detailed | Approval | ENG | DOCS | DES | MS3 |
|  | IFC | **IFC and shop drawings** |  |  | 2028-04-16 | 2028-05-24 |  |  |  |  |  |  |  |  |  |  |  |  |  |  |  |  |
|  | SUB | **Submittal** |  |  | 2028-04-16 | 2028-04-26 |  |  |  |  |  |  |  |  |  |  |  |  |  |  |  |  |
| HMD-E1090 |  | IFC and shop drawings: submittal - Madinah |  | 9d | 2028-04-16 | 2028-04-26 | HMD-E1070 | 114d | 0d | Contract cost (BOQ x payment milestones) [109018 SAR]; Progress weight (fair EPC distribution, SAR value) [42160 SAR] | 42,160 | HHR | HMD | HHR | Standard | ETECHS | IFC | Submittal | ENG | DOCS | DES | MS2 |
|  | APR | **Approval** |  |  | 2028-04-27 | 2028-05-24 |  |  |  |  |  |  |  |  |  |  |  |  |  |  |  |  |
| HMD-E1100 |  | IFC and shop drawings: SAR approval and release - Madinah |  | 15d | 2028-04-27 | 2028-05-24 | HMD-E1090 | 114d | 0d | Contract cost (BOQ x payment milestones) [111243 SAR]; Progress weight (fair EPC distribution, SAR value) [70680 SAR] | 70,680 | HHR | HMD | HHR | Standard | SAR | IFC | Approval | ENG | DOCS | DES | MS3 |
|  | HCS | **HCIS documentation (Stage 3 and 4)** |  |  | 2028-03-30 | 2028-05-24 |  |  |  |  |  |  |  |  |  |  |  |  |  |  |  |  |
|  | SUB | **Submittal** |  |  | 2028-03-30 | 2028-04-26 |  |  |  |  |  |  |  |  |  |  |  |  |  |  |  |  |
| HMD-E1110 |  | HCIS Stage 3 and 4 documents: preparation - Madinah |  | 20d | 2028-03-30 | 2028-04-26 | HMD-E1050 FS+7d, HMD-E1090 FF | 114d | 0d | Contract cost (BOQ x payment milestones) [27254 SAR]; Progress weight (fair EPC distribution, SAR value) [21700 SAR] | 21,700 | HHR | HMD | HHR | Standard | ETECHS | HCIS | Submittal | ENG | DOCS | DES | MS2 |
|  | APR | **Approval** |  |  | 2028-04-27 | 2028-05-24 |  |  |  |  |  |  |  |  |  |  |  |  |  |  |  |  |
| HMD-E1120 |  | HCIS Stage 3 and 4 documents: SAR final review and HCIS submission - Madinah |  | 15d | 2028-04-27 | 2028-05-24 | HMD-E1110 | 114d | 0d | Contract cost (BOQ x payment milestones) [27811 SAR]; Progress weight (fair EPC distribution, SAR value) [16120 SAR] | 16,120 | HHR | HMD | HHR | Standard | SAR/HCIS | HCIS | Approval | ENG | DOCS | DES | MS3 |
|  | ASB | **As-built and O&M documentation** |  |  | 2029-01-23 | 2029-04-11 |  |  |  |  |  |  |  |  |  |  |  |  |  |  |  |  |
|  | SUB | **Submittal** |  |  | 2029-01-23 | 2029-03-21 |  |  |  |  |  |  |  |  |  |  |  |  |  |  |  |  |
| HMD-E1130 |  | As-built and O&M documentation: submittal - Madinah |  | 36d | 2029-01-23 | 2029-03-21 | HMD-C2100 | 114d | 0d | Contract cost (BOQ x payment milestones) [83432 SAR]; Progress weight (fair EPC distribution, SAR value) [44020 SAR] | 44,020 | HHR | HMD | HHR | Standard | ETECHS | As-built | Submittal | ENG | DOCS | COM | MS7 |
|  | APR | **Approval** |  |  | 2029-03-22 | 2029-04-11 |  |  |  |  |  |  |  |  |  |  |  |  |  |  |  |  |
| HMD-E1140 |  | As-built and O&M documentation: SAR review and approval - Madinah |  | 15d | 2029-03-22 | 2029-04-11 | HMD-E1130 | 114d | 0d | Contract cost (BOQ x payment milestones) [27811 SAR]; Progress weight (fair EPC distribution, SAR value) [18600 SAR] | 18,600 | HHR | HMD | HHR | Standard | SAR | As-built | Approval | ENG | DOCS | COM | MS7 |
|  | EAB | **Abqaiq (EWR)** |  |  | 2028-03-20 | 2029-01-31 |  |  |  |  |  |  |  |  |  |  |  |  |  |  |  |  |
| EAB-E1200 |  | MS2 Engineering submittal complete (10%) - Abqaiq | milestone | 0d | 2028-06-28 | 2028-06-28 | EAB-E1090, EAB-E1110 | 173d | 15d |  |  | EWR | EAB | EWR | Standard | ETECHS | - | - | MS | DOCS | MS | MS2 |
| EAB-E1210 |  | MS3 Engineering approved by SAR (10%) - Abqaiq | milestone | 0d | 2028-07-19 | 2028-07-19 | EAB-E1020, EAB-E1040, EAB-E1060, EAB-E1080, EAB-E1100, EAB-E1120, EAB-E1200 | 158d | 0d |  |  | EWR | EAB | EWR | Standard | SAR | - | - | MS | DOCS | MS | MS3 |
|  | SRV | **Site survey and as-found verification** |  |  | 2028-03-20 | 2028-04-19 |  |  |  |  |  |  |  |  |  |  |  |  |  |  |  |  |
|  | SUB | **Submittal** |  |  | 2028-03-20 | 2028-03-29 |  |  |  |  |  |  |  |  |  |  |  |  |  |  |  |  |
| EAB-E1010 |  | Survey: submittal of site survey and as-found report - Abqaiq |  | 8d | 2028-03-20 | 2028-03-29 | PRJ-A1060, PRJ-M2100 FS+244d | 158d | 0d | Contract cost (BOQ x payment milestones) [13839 SAR]; Progress weight (fair EPC distribution, SAR value) [11160 SAR] | 11,160 | EWR | EAB | EWR | Standard | ETECHS | Survey | Submittal | ENG | DOCS | DES | MS2 |

| ID | WBS | Activity | Duration | Start | Finish | Predecessors | Total float | Free float | Resources | Cost | Area | Station | Railway | Priority | Responsibility | Design stage | Submittal or approval | EPC phase | Discipline | Programme phase | Payment milestone |
| --- | --- | --- | --- | --- | --- | --- | --- | --- | --- | --- | --- | --- | --- | --- | --- | --- | --- | --- | --- | --- | --- |
|  | APR | **Approval** |  | 2028-03-30 | 2028-04-19 |  |  |  |  |  |  |  |  |  |  |  |  |  |  |  |  |
| EAB-E1020 |  | Survey: SAR approval of survey report - Abqaiq | 15d | 2028-03-30 | 2028-04-19 | EAB-E1010 | 218d | 60d | Contract cost (BOQ x payment milestones) [10028 SAR]; Progress weight (fair EPC distribution, SAR value) [11780 SAR] | 11,780 | EWR | EAB | EWR | Standard | SAR | Survey | Approval | ENG | DOCS | DES | MS3 |
|  | CNC | **Concept design** |  | 2028-03-30 | 2028-05-09 |  |  |  |  |  |  |  |  |  |  |  |  |  |  |  |  |
|  | SUB | **Submittal** |  | 2028-03-30 | 2028-04-11 |  |  |  |  |  |  |  |  |  |  |  |  |  |  |  |  |
| EAB-E1030 |  | Concept design: submittal - Abqaiq | 9d | 2028-03-30 | 2028-04-11 | EAB-E1010 | 158d | 0d | Contract cost (BOQ x payment milestones) [19656 SAR]; Progress weight (fair EPC distribution, SAR value) [8680 SAR] | 8,680 | EWR | EAB | EWR | Standard | ETECHS | Concept | Submittal | ENG | DOCS | DES | MS2 |
|  | APR | **Approval** |  | 2028-04-12 | 2028-05-09 |  |  |  |  |  |  |  |  |  |  |  |  |  |  |  |  |
| EAB-E1040 |  | Concept design: SAR review and approval - Abqaiq | 15d | 2028-04-12 | 2028-05-09 | EAB-E1030 | 209d | 51d | Contract cost (BOQ x payment milestones) [20057 SAR]; Progress weight (fair EPC distribution, SAR value) [14260 SAR] | 14,260 | EWR | EAB | EWR | Standard | SAR | Concept | Approval | ENG | DOCS | DES | MS3 |
|  | PRE | **Preliminary (schematic) design** |  | 2028-04-12 | 2028-05-30 |  |  |  |  |  |  |  |  |  |  |  |  |  |  |  |  |
|  | SUB | **Submittal** |  | 2028-04-12 | 2028-05-09 |  |  |  |  |  |  |  |  |  |  |  |  |  |  |  |  |
| EAB-E1050 |  | Preliminary design: submittal - Abqaiq | 15d | 2028-04-12 | 2028-05-09 | EAB-E1030 | 158d | 0d | Contract cost (BOQ x payment milestones) [39311 SAR]; Progress weight (fair EPC distribution, SAR value) [20460 SAR] | 20,460 | EWR | EAB | EWR | Standard | ETECHS | Preliminary | Submittal | ENG | DOCS | DES | MS2 |
|  | APR | **Approval** |  | 2028-05-10 | 2028-05-30 |  |  |  |  |  |  |  |  |  |  |  |  |  |  |  |  |
| EAB-E1060 |  | Preliminary design: SAR review and approval - Abqaiq | 15d | 2028-05-10 | 2028-05-30 | EAB-E1050 | 194d | 36d | Contract cost (BOQ x payment milestones) [40114 SAR]; Progress weight (fair EPC distribution, SAR value) [20460 SAR] | 20,460 | EWR | EAB | EWR | Standard | SAR | Preliminary | Approval | ENG | DOCS | DES | MS3 |
|  | DET | **Detailed design** |  | 2028-05-10 | 2028-07-03 |  |  |  |  |  |  |  |  |  |  |  |  |  |  |  |  |
|  | SUB | **Submittal** |  | 2028-05-10 | 2028-06-12 |  |  |  |  |  |  |  |  |  |  |  |  |  |  |  |  |
| EAB-E1070 |  | Detailed design: submittal (drawings, BOQ, data sheets) - Abqaiq | 24d | 2028-05-10 | 2028-06-12 | EAB-E1050 | 158d | 0d | Contract cost (BOQ x payment milestones) [78623 SAR]; Progress weight (fair EPC distribution, SAR value) [41540 SAR] | 41,540 | EWR | EAB | EWR | Standard | ETECHS | Detailed | Submittal | ENG | DOCS | DES | MS2 |
|  | APR | **Approval** |  | 2028-06-13 | 2028-07-03 |  |  |  |  |  |  |  |  |  |  |  |  |  |  |  |  |
| EAB-E1080 |  | Detailed design: SAR review and approval - Abqaiq | 15d | 2028-06-13 | 2028-07-03 | EAB-E1070 | 170d | 12d | Contract cost (BOQ x payment milestones) [80227 SAR]; Progress weight (fair EPC distribution, SAR value) [26040 SAR] | 26,040 | EWR | EAB | EWR | Standard | SAR | Detailed | Approval | ENG | DOCS | DES | MS3 |
|  | IFC | **IFC and shop drawings** |  | 2028-06-13 | 2028-07-19 |  |  |  |  |  |  |  |  |  |  |  |  |  |  |  |  |
|  | SUB | **Submittal** |  | 2028-06-13 | 2028-06-28 |  |  |  |  |  |  |  |  |  |  |  |  |  |  |  |  |
| EAB-E1090 |  | IFC and shop drawings: submittal - Abqaiq | 12d | 2028-06-13 | 2028-06-28 | EAB-E1070 | 158d | 0d | Contract cost (BOQ x payment milestones) [39311 SAR]; Progress weight (fair EPC distribution, SAR value) [17980 SAR] | 17,980 | EWR | EAB | EWR | Standard | ETECHS | IFC | Submittal | ENG | DOCS | DES | MS2 |
|  | APR | **Approval** |  | 2028-06-29 | 2028-07-19 |  |  |  |  |  |  |  |  |  |  |  |  |  |  |  |  |
| EAB-E1100 |  | IFC and shop drawings: SAR approval and release - Abqaiq | 15d | 2028-06-29 | 2028-07-19 | EAB-E1090 | 158d | 0d | Contract cost (BOQ x payment milestones) [40114 SAR]; Progress weight (fair EPC distribution, SAR value) [22940 SAR] | 22,940 | EWR | EAB | EWR | Standard | SAR | IFC | Approval | ENG | DOCS | DES | MS3 |
|  | HCS | **HCIS documentation (Stage 3 and 4)** |  | 2028-05-23 | 2028-07-19 |  |  |  |  |  |  |  |  |  |  |  |  |  |  |  |  |
|  | SUB | **Submittal** |  | 2028-05-23 | 2028-06-28 |  |  |  |  |  |  |  |  |  |  |  |  |  |  |  |  |
| EAB-E1110 |  | HCIS Stage 3 and 4 documents: preparation - Abqaiq | 27d | 2028-05-23 | 2028-06-28 | EAB-E1050 FS+9d, EAB-E1090 FF | 158d | 0d | Contract cost (BOQ x payment milestones) [9828 SAR]; Progress weight (fair EPC distribution, SAR value) [8680 SAR] | 8,680 | EWR | EAB | EWR | Standard | ETECHS | HCIS | Submittal | ENG | DOCS | DES | MS2 |

| ID | WBS | Activity | Type | Duration | Start | Finish | Predecessors | Total float | Free float | Resources | Cost | Area | Station | Railway | Priority | Responsibility | Design stage | Submittal or approval | EPC phase | Discipline | Programme phase | Payment milestone |
| --- | --- | --- | --- | --- | --- | --- | --- | --- | --- | --- | --- | --- | --- | --- | --- | --- | --- | --- | --- | --- | --- | --- |
|  | APR | **Approval** |  |  | 2028-06-29 | 2028-07-19 |  |  |  |  |  |  |  |  |  |  |  |  |  |  |  |  |
| EAB-E1120 |  | HCIS Stage 3 and 4 documents: SAR final review and HCIS submission - Abqaiq |  | 15d | 2028-06-29 | 2028-07-19 | EAB-E1110 | 158d | 0d | Contract cost (BOQ x payment milestones) [10028 SAR]; Progress weight (fair EPC distribution, SAR value) [4960 SAR] | 4,960 | EWR | EAB | EWR | Standard | SAR/HCIS | HCIS | Approval | ENG | DOCS | DES | MS3 |
|  | ASB | **As-built and O&M documentation** |  |  | 2028-12-06 | 2029-01-31 |  |  |  |  |  |  |  |  |  |  |  |  |  |  |  |  |
|  | SUB | **Submittal** |  |  | 2028-12-06 | 2029-01-10 |  |  |  |  |  |  |  |  |  |  |  |  |  |  |  |  |
| EAB-E1130 |  | As-built and O&M documentation: submittal - Abqaiq |  | 26d | 2028-12-06 | 2029-01-10 | EAB-C2100 | 158d | 0d | Contract cost (BOQ x payment milestones) [30085 SAR]; Progress weight (fair EPC distribution, SAR value) [14260 SAR] | 14,260 | EWR | EAB | EWR | Standard | ETECHS | As-built | Submittal | ENG | DOCS | COM | MS7 |
|  | APR | **Approval** |  |  | 2029-01-11 | 2029-01-31 |  |  |  |  |  |  |  |  |  |  |  |  |  |  |  |  |
| EAB-E1140 |  | As-built and O&M documentation: SAR review and approval - Abqaiq |  | 15d | 2029-01-11 | 2029-01-31 | EAB-E1130 | 158d | 0d | Contract cost (BOQ x payment milestones) [10028 SAR]; Progress weight (fair EPC distribution, SAR value) [8060 SAR] | 8,060 | EWR | EAB | EWR | Standard | SAR | As-built | Approval | ENG | DOCS | COM | MS7 |
|  | NHL | **Hail (NSR)** |  |  | 2028-04-12 | 2029-04-16 |  |  |  |  |  |  |  |  |  |  |  |  |  |  |  |  |
| NHL-E1200 |  | MS2 Engineering submittal complete (10%) - Hail | milestone | 0d | 2028-07-20 | 2028-07-20 | NHL-E1090, NHL-E1110 | 126d | 15d |  |  | NSR | NHL | NSR | Standard | ETECHS | - | - | MS | DOCS | MS | MS2 |
| NHL-E1210 |  | MS3 Engineering approved by SAR (10%) - Hail | milestone | 0d | 2028-08-10 | 2028-08-10 | NHL-E1020, NHL-E1040, NHL-E1060, NHL-E1080, NHL-E1100, NHL-E1120, NHL-E1200 | 111d | 0d |  |  | NSR | NHL | NSR | Standard | SAR | - | - | MS | DOCS | MS | MS3 |
|  | SRV | **Site survey and as-found verification** |  |  | 2028-04-12 | 2028-05-21 |  |  |  |  |  |  |  |  |  |  |  |  |  |  |  |  |
|  | SUB | **Submittal** |  |  | 2028-04-12 | 2028-04-23 |  |  |  |  |  |  |  |  |  |  |  |  |  |  |  |  |
| NHL-E1010 |  | Survey: submittal of site survey and as-found report - Hail |  | 8d | 2028-04-12 | 2028-04-23 | PRJ-A1060, PRJ-M2100 FS+261d | 111d | 0d | Contract cost (BOQ x payment milestones) [23453 SAR]; Progress weight (fair EPC distribution, SAR value) [18600 SAR] | 18,600 | NSR | NHL | NSR | Standard | ETECHS | Survey | Submittal | ENG | DOCS | DES | MS2 |
|  | APR | **Approval** |  |  | 2028-04-24 | 2028-05-21 |  |  |  |  |  |  |  |  |  |  |  |  |  |  |  |  |
| NHL-E1020 |  | Survey: SAR approval of survey report - Hail |  | 15d | 2028-04-24 | 2028-05-21 | NHL-E1010 | 170d | 59d | Contract cost (BOQ x payment milestones) [16995 SAR]; Progress weight (fair EPC distribution, SAR value) [19840 SAR] | 19,840 | NSR | NHL | NSR | Standard | SAR | Survey | Approval | ENG | DOCS | DES | MS3 |
|  | CNC | **Concept design** |  |  | 2028-04-24 | 2028-06-01 |  |  |  |  |  |  |  |  |  |  |  |  |  |  |  |  |
|  | SUB | **Submittal** |  |  | 2028-04-24 | 2028-05-11 |  |  |  |  |  |  |  |  |  |  |  |  |  |  |  |  |
| NHL-E1030 |  | Concept design: submittal - Hail |  | 9d | 2028-04-24 | 2028-05-11 | NHL-E1010 | 111d | 0d | Contract cost (BOQ x payment milestones) [33309 SAR]; Progress weight (fair EPC distribution, SAR value) [14260 SAR] | 14,260 | NSR | NHL | NSR | Standard | ETECHS | Concept | Submittal | ENG | DOCS | DES | MS2 |
|  | APR | **Approval** |  |  | 2028-05-14 | 2028-06-01 |  |  |  |  |  |  |  |  |  |  |  |  |  |  |  |  |
| NHL-E1040 |  | Concept design: SAR review and approval - Hail |  | 15d | 2028-05-14 | 2028-06-01 | NHL-E1030 | 161d | 50d | Contract cost (BOQ x payment milestones) [33989 SAR]; Progress weight (fair EPC distribution, SAR value) [24180 SAR] | 24,180 | NSR | NHL | NSR | Standard | SAR | Concept | Approval | ENG | DOCS | DES | MS3 |
|  | PRE | **Preliminary (schematic) design** |  |  | 2028-05-14 | 2028-06-22 |  |  |  |  |  |  |  |  |  |  |  |  |  |  |  |  |
|  | SUB | **Submittal** |  |  | 2028-05-14 | 2028-06-01 |  |  |  |  |  |  |  |  |  |  |  |  |  |  |  |  |
| NHL-E1050 |  | Preliminary design: submittal - Hail |  | 15d | 2028-05-14 | 2028-06-01 | NHL-E1030 | 111d | 0d | Contract cost (BOQ x payment milestones) [66619 SAR]; Progress weight (fair EPC distribution, SAR value) [34720 SAR] | 34,720 | NSR | NHL | NSR | Standard | ETECHS | Preliminary | Submittal | ENG | DOCS | DES | MS2 |
|  | APR | **Approval** |  |  | 2028-06-04 | 2028-06-22 |  |  |  |  |  |  |  |  |  |  |  |  |  |  |  |  |
| NHL-E1060 |  | Preliminary design: SAR review and approval - Hail |  | 15d | 2028-06-04 | 2028-06-22 | NHL-E1050 | 146d | 35d | Contract cost (BOQ x payment milestones) [67978 SAR]; Progress weight (fair EPC distribution, SAR value) [34720 SAR] | 34,720 | NSR | NHL | NSR | Standard | SAR | Preliminary | Approval | ENG | DOCS | DES | MS3 |

| ID | WBS | Activity | Type | Duration | Start | Finish | Predecessors | Total float | Free float | Resources | Cost | Area | Station | Railway | Priority | Responsibility | Design stage | Submittal or approval | EPC phase | Discipline | Programme phase | Payment milestone |
| --- | --- | --- | --- | --- | --- | --- | --- | --- | --- | --- | --- | --- | --- | --- | --- | --- | --- | --- | --- | --- | --- | --- |
|  | DET | **Detailed design** |  |  | 2028-06-04 | 2028-07-26 |  |  |  |  |  |  |  |  |  |  |  |  |  |  |  |  |
|  | SUB | **Submittal** |  |  | 2028-06-04 | 2028-07-05 |  |  |  |  |  |  |  |  |  |  |  |  |  |  |  |  |
| NHL-E1070 |  | Detailed design: submittal (drawings, BOQ, data sheets) - Hail |  | 24d | 2028-06-04 | 2028-07-05 | NHL-E1050 | 111d | 0d | Contract cost (BOQ x payment milestones) [133238 SAR]; Progress weight (fair EPC distribution, SAR value) [70680 SAR] | 70,680 | NSR | NHL | NSR | Standard | ETECHS | Detailed | Submittal | ENG | DOCS | DES | MS2 |
|  | APR | **Approval** |  |  | 2028-07-06 | 2028-07-26 |  |  |  |  |  |  |  |  |  |  |  |  |  |  |  |  |
| NHL-E1080 |  | Detailed design: SAR review and approval - Hail |  | 15d | 2028-07-06 | 2028-07-26 | NHL-E1070 | 122d | 11d | Contract cost (BOQ x payment milestones) [135957 SAR]; Progress weight (fair EPC distribution, SAR value) [44020 SAR] | 44,020 | NSR | NHL | NSR | Standard | SAR | Detailed | Approval | ENG | DOCS | DES | MS3 |
|  | IFC | **IFC and shop drawings** |  |  | 2028-07-06 | 2028-08-10 |  |  |  |  |  |  |  |  |  |  |  |  |  |  |  |  |
|  | SUB | **Submittal** |  |  | 2028-07-06 | 2028-07-20 |  |  |  |  |  |  |  |  |  |  |  |  |  |  |  |  |
| NHL-E1090 |  | IFC and shop drawings: submittal - Hail |  | 11d | 2028-07-06 | 2028-07-20 | NHL-E1070 | 111d | 0d | Contract cost (BOQ x payment milestones) [66619 SAR]; Progress weight (fair EPC distribution, SAR value) [29140 SAR] | 29,140 | NSR | NHL | NSR | Standard | ETECHS | IFC | Submittal | ENG | DOCS | DES | MS2 |
|  | APR | **Approval** |  |  | 2028-07-23 | 2028-08-10 |  |  |  |  |  |  |  |  |  |  |  |  |  |  |  |  |
| NHL-E1100 |  | IFC and shop drawings: SAR approval and release - Hail |  | 15d | 2028-07-23 | 2028-08-10 | NHL-E1090 | 111d | 0d | Contract cost (BOQ x payment milestones) [67978 SAR]; Progress weight (fair EPC distribution, SAR value) [39680 SAR] | 39,680 | NSR | NHL | NSR | Standard | SAR | IFC | Approval | ENG | DOCS | DES | MS3 |
|  | HCS | **HCIS documentation (Stage 3 and 4)** |  |  | 2028-06-15 | 2028-08-10 |  |  |  |  |  |  |  |  |  |  |  |  |  |  |  |  |
|  | SUB | **Submittal** |  |  | 2028-06-15 | 2028-07-20 |  |  |  |  |  |  |  |  |  |  |  |  |  |  |  |  |
| NHL-E1110 |  | HCIS Stage 3 and 4 documents: preparation - Hail |  | 26d | 2028-06-15 | 2028-07-20 | NHL-E1050 FS+9d, NHL-E1090 FF | 111d | 0d | Contract cost (BOQ x payment milestones) [16655 SAR]; Progress weight (fair EPC distribution, SAR value) [14880 SAR] | 14,880 | NSR | NHL | NSR | Standard | ETECHS | HCIS | Submittal | ENG | DOCS | DES | MS2 |
|  | APR | **Approval** |  |  | 2028-07-23 | 2028-08-10 |  |  |  |  |  |  |  |  |  |  |  |  |  |  |  |  |
| NHL-E1120 |  | HCIS Stage 3 and 4 documents: SAR final review and HCIS submission - Hail |  | 15d | 2028-07-23 | 2028-08-10 | NHL-E1110 | 111d | 0d | Contract cost (BOQ x payment milestones) [16995 SAR]; Progress weight (fair EPC distribution, SAR value) [8680 SAR] | 8,680 | NSR | NHL | NSR | Standard | SAR/HCIS | HCIS | Approval | ENG | DOCS | DES | MS3 |
|  | ASB | **As-built and O&M documentation** |  |  | 2029-02-07 | 2029-04-16 |  |  |  |  |  |  |  |  |  |  |  |  |  |  |  |  |
|  | SUB | **Submittal** |  |  | 2029-02-07 | 2029-03-26 |  |  |  |  |  |  |  |  |  |  |  |  |  |  |  |  |
| NHL-E1130 |  | As-built and O&M documentation: submittal - Hail |  | 28d | 2029-02-07 | 2029-03-26 | NHL-C2100 | 111d | 0d | Contract cost (BOQ x payment milestones) [50984 SAR]; Progress weight (fair EPC distribution, SAR value) [24800 SAR] | 24,800 | NSR | NHL | NSR | Standard | ETECHS | As-built | Submittal | ENG | DOCS | COM | MS7 |
|  | APR | **Approval** |  |  | 2029-03-27 | 2029-04-16 |  |  |  |  |  |  |  |  |  |  |  |  |  |  |  |  |
| NHL-E1140 |  | As-built and O&M documentation: SAR review and approval - Hail |  | 15d | 2029-03-27 | 2029-04-16 | NHL-E1130 | 111d | 0d | Contract cost (BOQ x payment milestones) [16995 SAR]; Progress weight (fair EPC distribution, SAR value) [13640 SAR] | 13,640 | NSR | NHL | NSR | Standard | SAR | As-built | Approval | ENG | DOCS | COM | MS7 |
|  | NJF | **Al Jouf (NSR)** |  |  | 2028-06-29 | 2029-07-09 |  |  |  |  |  |  |  |  |  |  |  |  |  |  |  |  |
| NJF-E1200 |  | MS2 Engineering submittal complete (10%) - Al Jouf | milestone | 0d | 2028-10-05 | 2028-10-05 | NJF-E1090, NJF-E1110 | 71d | 15d |  |  | NSR | NJF | NSR | Standard | ETECHS | - | - | MS | DOCS | MS | MS2 |
| NJF-E1210 |  | MS3 Engineering approved by SAR (10%) - Al Jouf | milestone | 0d | 2028-10-26 | 2028-10-26 | NJF-E1020, NJF-E1040, NJF-E1060, NJF-E1080, NJF-E1100, NJF-E1120, NJF-E1200 | 56d | 0d |  |  | NSR | NJF | NSR | Standard | SAR | - | - | MS | DOCS | MS | MS3 |
|  | SRV | **Site survey and as-found verification** |  |  | 2028-06-29 | 2028-07-31 |  |  |  |  |  |  |  |  |  |  |  |  |  |  |  |  |
|  | SUB | **Submittal** |  |  | 2028-06-29 | 2028-07-10 |  |  |  |  |  |  |  |  |  |  |  |  |  |  |  |  |
| NJF-E1010 |  | Survey: submittal of site survey and as-found report - Al Jouf |  | 8d | 2028-06-29 | 2028-07-10 | PRJ-A1060, PRJ-M2100 FS+312d | 56d | 0d | Contract cost (BOQ x payment milestones) [23618 SAR]; Progress weight (fair EPC distribution, SAR value) [18600 SAR] | 18,600 | NSR | NJF | NSR | Standard | ETECHS | Survey | Submittal | ENG | DOCS | DES | MS2 |

| ID | WBS | Activity | Duration | Start | Finish | Predecessors | Total float | Free float | Resources | Cost | Area | Station | Railway | Priority | Responsibility | Design stage | Submittal or approval | EPC phase | Discipline | Programme phase | Payment milestone |
| --- | --- | --- | --- | --- | --- | --- | --- | --- | --- | --- | --- | --- | --- | --- | --- | --- | --- | --- | --- | --- | --- |
|  | APR | **Approval** |  | 2028-07-11 | 2028-07-31 |  |  |  |  |  |  |  |  |  |  |  |  |  |  |  |  |
| NJF-E1020 |  | Survey: SAR approval of survey report - Al Jouf | 15d | 2028-07-11 | 2028-07-31 | NJF-E1010 | 119d | 63d | Contract cost (BOQ x payment milestones) [17114 SAR]; Progress weight (fair EPC distribution, SAR value) [20460 SAR] | 20,460 | NSR | NJF | NSR | Standard | SAR | Survey | Approval | ENG | DOCS | DES | MS3 |
|  | CNC | **Concept design** |  | 2028-07-11 | 2028-08-13 |  |  |  |  |  |  |  |  |  |  |  |  |  |  |  |  |
|  | SUB | **Submittal** |  | 2028-07-11 | 2028-07-23 |  |  |  |  |  |  |  |  |  |  |  |  |  |  |  |  |
| NJF-E1030 |  | Concept design: submittal - Al Jouf | 9d | 2028-07-11 | 2028-07-23 | NJF-E1010 | 56d | 0d | Contract cost (BOQ x payment milestones) [33544 SAR]; Progress weight (fair EPC distribution, SAR value) [14260 SAR] | 14,260 | NSR | NJF | NSR | Standard | ETECHS | Concept | Submittal | ENG | DOCS | DES | MS2 |
|  | APR | **Approval** |  | 2028-07-24 | 2028-08-13 |  |  |  |  |  |  |  |  |  |  |  |  |  |  |  |  |
| NJF-E1040 |  | Concept design: SAR review and approval - Al Jouf | 15d | 2028-07-24 | 2028-08-13 | NJF-E1030 | 110d | 54d | Contract cost (BOQ x payment milestones) [34228 SAR]; Progress weight (fair EPC distribution, SAR value) [24180 SAR] | 24,180 | NSR | NJF | NSR | Standard | SAR | Concept | Approval | ENG | DOCS | DES | MS3 |
|  | PRE | **Preliminary (schematic) design** |  | 2028-07-24 | 2028-09-04 |  |  |  |  |  |  |  |  |  |  |  |  |  |  |  |  |
|  | SUB | **Submittal** |  | 2028-07-24 | 2028-08-14 |  |  |  |  |  |  |  |  |  |  |  |  |  |  |  |  |
| NJF-E1050 |  | Preliminary design: submittal - Al Jouf | 16d | 2028-07-24 | 2028-08-14 | NJF-E1030 | 56d | 0d | Contract cost (BOQ x payment milestones) [67088 SAR]; Progress weight (fair EPC distribution, SAR value) [35960 SAR] | 35,960 | NSR | NJF | NSR | Standard | ETECHS | Preliminary | Submittal | ENG | DOCS | DES | MS2 |
|  | APR | **Approval** |  | 2028-08-15 | 2028-09-04 |  |  |  |  |  |  |  |  |  |  |  |  |  |  |  |  |
| NJF-E1060 |  | Preliminary design: SAR review and approval - Al Jouf | 15d | 2028-08-15 | 2028-09-04 | NJF-E1050 | 94d | 38d | Contract cost (BOQ x payment milestones) [68457 SAR]; Progress weight (fair EPC distribution, SAR value) [33480 SAR] | 33,480 | NSR | NJF | NSR | Standard | SAR | Preliminary | Approval | ENG | DOCS | DES | MS3 |
|  | DET | **Detailed design** |  | 2028-08-15 | 2028-10-09 |  |  |  |  |  |  |  |  |  |  |  |  |  |  |  |  |
|  | SUB | **Submittal** |  | 2028-08-15 | 2028-09-18 |  |  |  |  |  |  |  |  |  |  |  |  |  |  |  |  |
| NJF-E1070 |  | Detailed design: submittal (drawings, BOQ, data sheets) - Al Jouf | 25d | 2028-08-15 | 2028-09-18 | NJF-E1050 | 56d | 0d | Contract cost (BOQ x payment milestones) [134176 SAR]; Progress weight (fair EPC distribution, SAR value) [72540 SAR] | 72,540 | NSR | NJF | NSR | Standard | ETECHS | Detailed | Submittal | ENG | DOCS | DES | MS2 |
|  | APR | **Approval** |  | 2028-09-19 | 2028-10-09 |  |  |  |  |  |  |  |  |  |  |  |  |  |  |  |  |
| NJF-E1080 |  | Detailed design: SAR review and approval - Al Jouf | 15d | 2028-09-19 | 2028-10-09 | NJF-E1070 | 69d | 13d | Contract cost (BOQ x payment milestones) [136914 SAR]; Progress weight (fair EPC distribution, SAR value) [43400 SAR] | 43,400 | NSR | NJF | NSR | Standard | SAR | Detailed | Approval | ENG | DOCS | DES | MS3 |
|  | IFC | **IFC and shop drawings** |  | 2028-09-19 | 2028-10-26 |  |  |  |  |  |  |  |  |  |  |  |  |  |  |  |  |
|  | SUB | **Submittal** |  | 2028-09-19 | 2028-10-05 |  |  |  |  |  |  |  |  |  |  |  |  |  |  |  |  |
| NJF-E1090 |  | IFC and shop drawings: submittal - Al Jouf | 13d | 2028-09-19 | 2028-10-05 | NJF-E1070 | 56d | 0d | Contract cost (BOQ x payment milestones) [67088 SAR]; Progress weight (fair EPC distribution, SAR value) [32240 SAR] | 32,240 | NSR | NJF | NSR | Standard | ETECHS | IFC | Submittal | ENG | DOCS | DES | MS2 |
|  | APR | **Approval** |  | 2028-10-08 | 2028-10-26 |  |  |  |  |  |  |  |  |  |  |  |  |  |  |  |  |
| NJF-E1100 |  | IFC and shop drawings: SAR approval and release - Al Jouf | 15d | 2028-10-08 | 2028-10-26 | NJF-E1090 | 56d | 0d | Contract cost (BOQ x payment milestones) [68457 SAR]; Progress weight (fair EPC distribution, SAR value) [37200 SAR] | 37,200 | NSR | NJF | NSR | Standard | SAR | IFC | Approval | ENG | DOCS | DES | MS3 |
|  | HCS | **HCIS documentation (Stage 3 and 4)** |  | 2028-08-28 | 2028-10-26 |  |  |  |  |  |  |  |  |  |  |  |  |  |  |  |  |
|  | SUB | **Submittal** |  | 2028-08-28 | 2028-10-05 |  |  |  |  |  |  |  |  |  |  |  |  |  |  |  |  |
| NJF-E1110 |  | HCIS Stage 3 and 4 documents: preparation - Al Jouf | 29d | 2028-08-28 | 2028-10-05 | NJF-E1050 FS+9d, NJF-E1090 FF | 56d | 0d | Contract cost (BOQ x payment milestones) [16772 SAR]; Progress weight (fair EPC distribution, SAR value) [15500 SAR] | 15,500 | NSR | NJF | NSR | Standard | ETECHS | HCIS | Submittal | ENG | DOCS | DES | MS2 |

| ID | WBS | Activity | Type | Duration | Start | Finish | Predecessors | Total float | Free float | Resources | Cost | Area | Station | Railway | Priority | Responsibility | Design stage | Submittal or approval | EPC phase | Discipline | Programme phase | Payment milestone |
| --- | --- | --- | --- | --- | --- | --- | --- | --- | --- | --- | --- | --- | --- | --- | --- | --- | --- | --- | --- | --- | --- | --- |
|  | APR | **Approval** |  |  | 2028-10-08 | 2028-10-26 |  |  |  |  |  |  |  |  |  |  |  |  |  |  |  |  |
| NJF-E1120 |  | HCIS Stage 3 and 4 documents: SAR final review and HCIS submission - Al Jouf |  | 15d | 2028-10-08 | 2028-10-26 | NJF-E1110 | 56d | 0d | Contract cost (BOQ x payment milestones) [17114 SAR]; Progress weight (fair EPC distribution, SAR value) [8060 SAR] | 8,060 | NSR | NJF | NSR | Standard | SAR/HCIS | HCIS | Approval | ENG | DOCS | DES | MS3 |
|  | ASB | **As-built and O&M documentation** |  |  | 2029-05-10 | 2029-07-09 |  |  |  |  |  |  |  |  |  |  |  |  |  |  |  |  |
|  | SUB | **Submittal** |  |  | 2029-05-10 | 2029-06-18 |  |  |  |  |  |  |  |  |  |  |  |  |  |  |  |  |
| NJF-E1130 |  | As-built and O&M documentation: submittal - Al Jouf |  | 28d | 2029-05-10 | 2029-06-18 | NJF-C2100 | 56d | 0d | Contract cost (BOQ x payment milestones) [51343 SAR]; Progress weight (fair EPC distribution, SAR value) [25420 SAR] | 25,420 | NSR | NJF | NSR | Standard | ETECHS | As-built | Submittal | ENG | DOCS | COM | MS7 |
|  | APR | **Approval** |  |  | 2029-06-19 | 2029-07-09 |  |  |  |  |  |  |  |  |  |  |  |  |  |  |  |  |
| NJF-E1140 |  | As-built and O&M documentation: SAR review and approval - Al Jouf |  | 15d | 2029-06-19 | 2029-07-09 | NJF-E1130 | 56d | 0d | Contract cost (BOQ x payment milestones) [17114 SAR]; Progress weight (fair EPC distribution, SAR value) [13640 SAR] | 13,640 | NSR | NJF | NSR | Standard | SAR | As-built | Approval | ENG | DOCS | COM | MS7 |
|  | NQR | **Al Qurayyat (NSR)** |  |  | 2028-08-16 | 2029-08-27 |  |  |  |  |  |  |  |  |  |  |  |  |  |  |  |  |
| NQR-E1200 |  | MS2 Engineering submittal complete (10%) - Al Qurayyat | milestone | 0d | 2028-11-23 | 2028-11-23 | NQR-E1090, NQR-E1110 | 36d | 15d |  |  | NSR | NQR | NSR | Standard | ETECHS | - | - | MS | DOCS | MS | MS2 |
| NQR-E1210 |  | MS3 Engineering approved by SAR (10%) - Al Qurayyat | milestone | 0d | 2028-12-14 | 2028-12-14 | NQR-E1020, NQR-E1040, NQR-E1060, NQR-E1080, NQR-E1100, NQR-E1120, NQR-E1200 | 21d | 0d |  |  | NSR | NQR | NSR | Standard | SAR | - | - | MS | DOCS | MS | MS3 |
|  | SRV | **Site survey and as-found verification** |  |  | 2028-08-16 | 2028-09-17 |  |  |  |  |  |  |  |  |  |  |  |  |  |  |  |  |
|  | SUB | **Submittal** |  |  | 2028-08-16 | 2028-08-27 |  |  |  |  |  |  |  |  |  |  |  |  |  |  |  |  |
| NQR-E1010 |  | Survey: submittal of site survey and as-found report - Al Qurayyat |  | 8d | 2028-08-16 | 2028-08-27 | PRJ-A1060, PRJ-M2100 FS+346d | 21d | 0d | Contract cost (BOQ x payment milestones) [23453 SAR]; Progress weight (fair EPC distribution, SAR value) [18600 SAR] | 18,600 | NSR | NQR | NSR | Standard | ETECHS | Survey | Submittal | ENG | DOCS | DES | MS2 |
|  | APR | **Approval** |  |  | 2028-08-28 | 2028-09-17 |  |  |  |  |  |  |  |  |  |  |  |  |  |  |  |  |
| NQR-E1020 |  | Survey: SAR approval of survey report - Al Qurayyat |  | 15d | 2028-08-28 | 2028-09-17 | NQR-E1010 | 85d | 64d | Contract cost (BOQ x payment milestones) [16995 SAR]; Progress weight (fair EPC distribution, SAR value) [19840 SAR] | 19,840 | NSR | NQR | NSR | Standard | SAR | Survey | Approval | ENG | DOCS | DES | MS3 |
|  | CNC | **Concept design** |  |  | 2028-08-28 | 2028-10-01 |  |  |  |  |  |  |  |  |  |  |  |  |  |  |  |  |
|  | SUB | **Submittal** |  |  | 2028-08-28 | 2028-09-10 |  |  |  |  |  |  |  |  |  |  |  |  |  |  |  |  |
| NQR-E1030 |  | Concept design: submittal - Al Qurayyat |  | 10d | 2028-08-28 | 2028-09-10 | NQR-E1010 | 21d | 0d | Contract cost (BOQ x payment milestones) [33309 SAR]; Progress weight (fair EPC distribution, SAR value) [15500 SAR] | 15,500 | NSR | NQR | NSR | Standard | ETECHS | Concept | Submittal | ENG | DOCS | DES | MS2 |
|  | APR | **Approval** |  |  | 2028-09-11 | 2028-10-01 |  |  |  |  |  |  |  |  |  |  |  |  |  |  |  |  |
| NQR-E1040 |  | Concept design: SAR review and approval - Al Qurayyat |  | 15d | 2028-09-11 | 2028-10-01 | NQR-E1030 | 75d | 54d | Contract cost (BOQ x payment milestones) [33989 SAR]; Progress weight (fair EPC distribution, SAR value) [22940 SAR] | 22,940 | NSR | NQR | NSR | Standard | SAR | Concept | Approval | ENG | DOCS | DES | MS3 |
|  | PRE | **Preliminary (schematic) design** |  |  | 2028-09-11 | 2028-10-23 |  |  |  |  |  |  |  |  |  |  |  |  |  |  |  |  |
|  | SUB | **Submittal** |  |  | 2028-09-11 | 2028-10-02 |  |  |  |  |  |  |  |  |  |  |  |  |  |  |  |  |
| NQR-E1050 |  | Preliminary design: submittal - Al Qurayyat |  | 16d | 2028-09-11 | 2028-10-02 | NQR-E1030 | 21d | 0d | Contract cost (BOQ x payment milestones) [66619 SAR]; Progress weight (fair EPC distribution, SAR value) [35340 SAR] | 35,340 | NSR | NQR | NSR | Standard | ETECHS | Preliminary | Submittal | ENG | DOCS | DES | MS2 |
|  | APR | **Approval** |  |  | 2028-10-03 | 2028-10-23 |  |  |  |  |  |  |  |  |  |  |  |  |  |  |  |  |
| NQR-E1060 |  | Preliminary design: SAR review and approval - Al Qurayyat |  | 15d | 2028-10-03 | 2028-10-23 | NQR-E1050 | 59d | 38d | Contract cost (BOQ x payment milestones) [67978 SAR]; Progress weight (fair EPC distribution, SAR value) [33480 SAR] | 33,480 | NSR | NQR | NSR | Standard | SAR | Preliminary | Approval | ENG | DOCS | DES | MS3 |

| ID | WBS | Activity | Type | Duration | Start | Finish | Predecessors | Total float | Free float | Resources | Cost | Area | Station | Railway | Priority | Responsibility | Design stage | Submittal or approval | EPC phase | Discipline | Programme phase | Payment milestone |
| --- | --- | --- | --- | --- | --- | --- | --- | --- | --- | --- | --- | --- | --- | --- | --- | --- | --- | --- | --- | --- | --- | --- |
|  | DET | **Detailed design** |  |  | 2028-10-03 | 2028-11-28 |  |  |  |  |  |  |  |  |  |  |  |  |  |  |  |  |
|  | SUB | **Submittal** |  |  | 2028-10-03 | 2028-11-07 |  |  |  |  |  |  |  |  |  |  |  |  |  |  |  |  |
| NQR-E1070 |  | Detailed design: submittal (drawings, BOQ, data sheets) - Al Qurayyat |  | 26d | 2028-10-03 | 2028-11-07 | NQR-E1050 | 21d | 0d | Contract cost (BOQ x payment milestones) [133238 SAR]; Progress weight (fair EPC distribution, SAR value) [73160 SAR] | 73,160 | NSR | NQR | NSR | Standard | ETECHS | Detailed | Submittal | ENG | DOCS | DES | MS2 |
|  | APR | **Approval** |  |  | 2028-11-08 | 2028-11-28 |  |  |  |  |  |  |  |  |  |  |  |  |  |  |  |  |
| NQR-E1080 |  | Detailed design: SAR review and approval - Al Qurayyat |  | 15d | 2028-11-08 | 2028-11-28 | NQR-E1070 | 33d | 12d | Contract cost (BOQ x payment milestones) [135957 SAR]; Progress weight (fair EPC distribution, SAR value) [42160 SAR] | 42,160 | NSR | NQR | NSR | Standard | SAR | Detailed | Approval | ENG | DOCS | DES | MS3 |
|  | IFC | **IFC and shop drawings** |  |  | 2028-11-08 | 2028-12-14 |  |  |  |  |  |  |  |  |  |  |  |  |  |  |  |  |
|  | SUB | **Submittal** |  |  | 2028-11-08 | 2028-11-23 |  |  |  |  |  |  |  |  |  |  |  |  |  |  |  |  |
| NQR-E1090 |  | IFC and shop drawings: submittal - Al Qurayyat |  | 12d | 2028-11-08 | 2028-11-23 | NQR-E1070 | 21d | 0d | Contract cost (BOQ x payment milestones) [66619 SAR]; Progress weight (fair EPC distribution, SAR value) [31000 SAR] | 31,000 | NSR | NQR | NSR | Standard | ETECHS | IFC | Submittal | ENG | DOCS | DES | MS2 |
|  | APR | **Approval** |  |  | 2028-11-26 | 2028-12-14 |  |  |  |  |  |  |  |  |  |  |  |  |  |  |  |  |
| NQR-E1100 |  | IFC and shop drawings: SAR approval and release - Al Qurayyat |  | 15d | 2028-11-26 | 2028-12-14 | NQR-E1090 | 21d | 0d | Contract cost (BOQ x payment milestones) [67978 SAR]; Progress weight (fair EPC distribution, SAR value) [38440 SAR] | 38,440 | NSR | NQR | NSR | Standard | SAR | IFC | Approval | ENG | DOCS | DES | MS3 |
|  | HCS | **HCIS documentation (Stage 3 and 4)** |  |  | 2028-10-17 | 2028-12-14 |  |  |  |  |  |  |  |  |  |  |  |  |  |  |  |  |
|  | SUB | **Submittal** |  |  | 2028-10-17 | 2028-11-23 |  |  |  |  |  |  |  |  |  |  |  |  |  |  |  |  |
| NQR-E1110 |  | HCIS Stage 3 and 4 documents: preparation - Al Qurayyat |  | 28d | 2028-10-17 | 2028-11-23 | NQR-E1050 FS+10d, NQR-E1090 FF | 21d | 0d | Contract cost (BOQ x payment milestones) [16655 SAR]; Progress weight (fair EPC distribution, SAR value) [14880 SAR] | 14,880 | NSR | NQR | NSR | Standard | ETECHS | HCIS | Submittal | ENG | DOCS | DES | MS2 |
|  | APR | **Approval** |  |  | 2028-11-26 | 2028-12-14 |  |  |  |  |  |  |  |  |  |  |  |  |  |  |  |  |
| NQR-E1120 |  | HCIS Stage 3 and 4 documents: SAR final review and HCIS submission - Al Qurayyat |  | 15d | 2028-11-26 | 2028-12-14 | NQR-E1110 | 21d | 0d | Contract cost (BOQ x payment milestones) [16995 SAR]; Progress weight (fair EPC distribution, SAR value) [8060 SAR] | 8,060 | NSR | NQR | NSR | Standard | SAR/HCIS | HCIS | Approval | ENG | DOCS | DES | MS3 |
|  | ASB | **As-built and O&M documentation** |  |  | 2029-06-28 | 2029-08-27 |  |  |  |  |  |  |  |  |  |  |  |  |  |  |  |  |
|  | SUB | **Submittal** |  |  | 2029-06-28 | 2029-08-06 |  |  |  |  |  |  |  |  |  |  |  |  |  |  |  |  |
| NQR-E1130 |  | As-built and O&M documentation: submittal - Al Qurayyat |  | 28d | 2029-06-28 | 2029-08-06 | NQR-C2100 | 21d | 0d | Contract cost (BOQ x payment milestones) [50984 SAR]; Progress weight (fair EPC distribution, SAR value) [24800 SAR] | 24,800 | NSR | NQR | NSR | Standard | ETECHS | As-built | Submittal | ENG | DOCS | COM | MS7 |
|  | APR | **Approval** |  |  | 2029-08-07 | 2029-08-27 |  |  |  |  |  |  |  |  |  |  |  |  |  |  |  |  |
| NQR-E1140 |  | As-built and O&M documentation: SAR review and approval - Al Qurayyat |  | 15d | 2029-08-07 | 2029-08-27 | NQR-E1130 | 21d | 0d | Contract cost (BOQ x payment milestones) [16995 SAR]; Progress weight (fair EPC distribution, SAR value) [13640 SAR] | 13,640 | NSR | NQR | NSR | Standard | SAR | As-built | Approval | ENG | DOCS | COM | MS7 |
|  | PRO | **Procurement** |  |  | 2027-05-02 | 2029-04-19 |  |  |  |  |  |  |  |  |  |  |  |  |  |  |  |  |
|  | NRY | **Riyadh (Thumamah) (NSR)** |  |  | 2027-05-02 | 2027-09-01 |  |  |  |  |  |  |  |  |  |  |  |  |  |  |  |  |
| NRY-P1100 |  | MS4 Material delivered (20%) - Riyadh (Thumamah) | milestone | 0d | 2027-09-01 | 2027-09-01 | NRY-P1070 | 430d | 0d |  |  | NSR | NRY | NSR | Priority 1 | ETECHS | - | - | MS | PM | MS | MS4 |
|  | CCT | **CCTV system** |  |  | 2027-05-02 | 2027-07-12 |  |  |  |  |  |  |  |  |  |  |  |  |  |  |  |  |
| NRY-P1010 |  | Manufacture CCTV cameras and analytics - Riyadh (Thumamah) |  | 47d | 2027-05-02 | 2027-07-12 | NRY-E1210 | 430d | 0d | Contract cost (BOQ x payment milestones) [103080 SAR]; Progress weight (fair EPC distribution, SAR value) [158100 SAR] | 158,100 | NSR | NRY | NSR | Priority 1 | Vendor | - | - | PRO | CCTV | PRO | MS4 |

| ID | WBS | Activity | Type | Duration | Start | Finish | Predecessors | Total float | Free float | Resources | Cost | Area | Station | Railway | Priority | Discipline | Responsibility | EPC phase | Design stage | Submittal or approval | Programme phase | Payment milestone |
| --- | --- | --- | --- | --- | --- | --- | --- | --- | --- | --- | --- | --- | --- | --- | --- | --- | --- | --- | --- | --- | --- | --- |
|  | VMS | **Video management and video wall** |  |  | 2027-05-02 | 2027-07-12 |  |  |  |  |  |  |  |  |  |  |  |  |  |  |  |  |
| NRY-P1020 |  | Manufacture video management servers, storage and video wall - Riyadh (Thumamah) |  | 47d | 2027-05-02 | 2027-07-12 | NRY-E1210 | 430d | 0d | Contract cost (BOQ x payment milestones) [126844 SAR]; Progress weight (fair EPC distribution, SAR value) [194680 SAR] | 194,680 | NSR | NRY | NSR | Priority 1 | VMS | Vendor | PRO | - | - | PRO | MS4 |
|  | ACC | **Access control and intercom** |  |  | 2027-05-02 | 2027-07-12 |  |  |  |  |  |  |  |  |  |  |  |  |  |  |  |  |
| NRY-P1030 |  | Manufacture access control and intercom equipment - Riyadh (Thumamah) |  | 47d | 2027-05-02 | 2027-07-12 | NRY-E1210 | 430d | 0d | Contract cost (BOQ x payment milestones) [13405 SAR]; Progress weight (fair EPC distribution, SAR value) [20460 SAR] | 20,460 | NSR | NRY | NSR | Priority 1 | ACC | Vendor | PRO | - | - | PRO | MS4 |
|  | UPN | **UPS, network and cabinets** |  |  | 2027-05-02 | 2027-07-12 |  |  |  |  |  |  |  |  |  |  |  |  |  |  |  |  |
| NRY-P1040 |  | Manufacture UPS, network switches and field cabinets - Riyadh (Thumamah) |  | 47d | 2027-05-02 | 2027-07-12 | NRY-E1210 | 430d | 0d | Contract cost (BOQ x payment milestones) [278789 SAR]; Progress weight (fair EPC distribution, SAR value) [428420 SAR] | 428,420 | NSR | NRY | NSR | Priority 1 | UPSNET | Vendor | PRO | - | - | PRO | MS4 |
|  | LOG | **FAT and logistics** |  |  | 2027-07-13 | 2027-09-01 |  |  |  |  |  |  |  |  |  |  |  |  |  |  |  |  |
| NRY-P1050 |  | Factory acceptance test at vendor premises - Riyadh (Thumamah) |  | 10d | 2027-07-13 | 2027-07-26 | NRY-P1010, NRY-P1020, NRY-P1030, NRY-P1040 | 430d | 0d | Contract cost (BOQ x payment milestones) [34808 SAR]; Progress weight (fair EPC distribution, SAR value) [133920 SAR] | 133,920 | NSR | NRY | NSR | Priority 1 | PM | ETECHS | PRO | - | - | PRO | MS4 |
| NRY-P1060 |  | Shipping and customs clearance - Riyadh (Thumamah) |  | 22d | 2027-07-27 | 2027-08-25 | NRY-P1050 | 430d | 0d | Contract cost (BOQ x payment milestones) [104424 SAR]; Progress weight (fair EPC distribution, SAR value) [267220 SAR] | 267,220 | NSR | NRY | NSR | Priority 1 | PM | Vendor | PRO | - | - | PRO | MS4 |
| NRY-P1070 |  | Delivery to station and receiving inspection - Riyadh (Thumamah) |  | 5d | 2027-08-26 | 2027-09-01 | NRY-P1060 | 430d | 0d | Contract cost (BOQ x payment milestones) [34808 SAR]; Progress weight (fair EPC distribution, SAR value) [133920 SAR] | 133,920 | NSR | NRY | NSR | Priority 1 | PM | ETECHS | PRO | - | - | PRO | MS4 |
|  | HMK | **Makkah (HHR)** |  |  | 2027-05-02 | 2027-11-08 |  |  |  |  |  |  |  |  |  |  |  |  |  |  |  |  |
| HMK-P1100 |  | MS4 Material delivered (20%) - Makkah | milestone | 0d | 2027-11-08 | 2027-11-08 | HMK-P1070 | 329d | 0d |  |  | HHR | HMK | HHR | Priority 1 | PM | ETECHS | MS | - | - | MS | MS4 |
|  | CCT | **CCTV system** |  |  | 2027-05-02 | 2027-08-29 |  |  |  |  |  |  |  |  |  |  |  |  |  |  |  |  |
| HMK-P1010 |  | Manufacture CCTV cameras and analytics - Makkah |  | 81d | 2027-05-02 | 2027-08-29 | HMK-E1210 | 329d | 0d | Contract cost (BOQ x payment milestones) [473780 SAR]; Progress weight (fair EPC distribution, SAR value) [727880 SAR] | 727,880 | HHR | HMK | HHR | Priority 1 | CCTV | Vendor | PRO | - | - | PRO | MS4 |
|  | VMS | **Video management and video wall** |  |  | 2027-05-02 | 2027-08-29 |  |  |  |  |  |  |  |  |  |  |  |  |  |  |  |  |
| HMK-P1020 |  | Manufacture video management servers, storage and video wall - Makkah |  | 81d | 2027-05-02 | 2027-08-29 | HMK-E1210 | 329d | 0d | Contract cost (BOQ x payment milestones) [158552 SAR]; Progress weight (fair EPC distribution, SAR value) [243660 SAR] | 243,660 | HHR | HMK | HHR | Priority 1 | VMS | Vendor | PRO | - | - | PRO | MS4 |
|  | ACC | **Access control and intercom** |  |  | 2027-05-02 | 2027-08-29 |  |  |  |  |  |  |  |  |  |  |  |  |  |  |  |  |
| HMK-P1030 |  | Manufacture access control and intercom equipment - Makkah |  | 81d | 2027-05-02 | 2027-08-29 | HMK-E1210 | 329d | 0d | Contract cost (BOQ x payment milestones) [12657 SAR]; Progress weight (fair EPC distribution, SAR value) [19220 SAR] | 19,220 | HHR | HMK | HHR | Priority 1 | ACC | Vendor | PRO | - | - | PRO | MS4 |
|  | UPN | **UPS, network and cabinets** |  |  | 2027-05-02 | 2027-08-29 |  |  |  |  |  |  |  |  |  |  |  |  |  |  |  |  |
| HMK-P1040 |  | Manufacture UPS, network switches and field cabinets - Makkah |  | 81d | 2027-05-02 | 2027-08-29 | HMK-E1210 | 329d | 0d | Contract cost (BOQ x payment milestones) [811524 SAR]; Progress weight (fair EPC distribution, SAR value) [1246820 SAR] | 1,246,820 | HHR | HMK | HHR | Priority 1 | UPSNET | Vendor | PRO | - | - | PRO | MS4 |
|  | LOG | **FAT and logistics** |  |  | 2027-08-30 | 2027-11-08 |  |  |  |  |  |  |  |  |  |  |  |  |  |  |  |  |
| HMK-P1050 |  | Factory acceptance test at vendor premises - Makkah |  | 10d | 2027-08-30 | 2027-09-12 | HMK-P1010, HMK-P1020, HMK-P1030, HMK-P1040 | 329d | 0d | Contract cost (BOQ x payment milestones) [97101 SAR]; Progress weight (fair EPC distribution, SAR value) [372620 SAR] | 372,620 | HHR | HMK | HHR | Priority 1 | PM | ETECHS | PRO | - | - | PRO | MS4 |
| HMK-P1060 |  | Shipping and customs clearance - Makkah |  | 35d | 2027-09-13 | 2027-11-01 | HMK-P1050 | 329d | 0d | Contract cost (BOQ x payment milestones) [291303 SAR]; Progress weight (fair EPC distribution, SAR value) [746480 SAR] | 746,480 | HHR | HMK | HHR | Priority 1 | PM | Vendor | PRO | - | - | PRO | MS4 |
| HMK-P1070 |  | Delivery to station and receiving inspection - Makkah |  | 5d | 2027-11-02 | 2027-11-08 | HMK-P1060 | 329d | 0d | Contract cost (BOQ x payment milestones) [97101 SAR]; Progress weight (fair EPC distribution, SAR value) [372620 SAR] | 372,620 | HHR | HMK | HHR | Priority 1 | PM | ETECHS | PRO | - | - | PRO | MS4 |

| ID | WBS | Activity | Type | Duration | Start | Finish | Predecessors | Total float | Free float | Resources | Cost | Area | Station | Railway | Priority | EPC phase | Discipline | Responsibility | Design stage | Submittal or approval | Payment milestone | Programme phase |
| --- | --- | --- | --- | --- | --- | --- | --- | --- | --- | --- | --- | --- | --- | --- | --- | --- | --- | --- | --- | --- | --- | --- |
|  | ERY | **Riyadh (Malaz) (EWR)** |  |  | 2027-05-02 | 2027-08-24 |  |  |  |  |  |  |  |  |  |  |  |  |  |  |  |  |
| ERY-P1100 |  | MS4 Material delivered (20%) - Riyadh (Malaz) | milestone | 0d | 2027-08-24 | 2027-08-24 | ERY-P1070 | 443d | 0d |  |  | EWR | ERY | EWR | Priority 2 | MS | PM | ETECHS | - | - | MS4 | MS |
|  | CCT | **CCTV system** |  |  | 2027-05-02 | 2027-07-06 |  |  |  |  |  |  |  |  |  |  |  |  |  |  |  |  |
| ERY-P1010 |  | Manufacture CCTV cameras and analytics - Riyadh (Malaz) |  | 43d | 2027-05-02 | 2027-07-06 | ERY-E1210 | 443d | 0d | Contract cost (BOQ x payment milestones) [101092 SAR]; Progress weight (fair EPC distribution, SAR value) [155000 SAR] | 155,000 | EWR | ERY | EWR | Priority 2 | PRO | CCTV | Vendor | - | - | MS4 | PRO |
|  | VMS | **Video management and video wall** |  |  | 2027-05-02 | 2027-07-06 |  |  |  |  |  |  |  |  |  |  |  |  |  |  |  |  |
| ERY-P1020 |  | Manufacture video management servers, storage and video wall - Riyadh (Malaz) |  | 43d | 2027-05-02 | 2027-07-06 | ERY-E1210 | 443d | 0d | Contract cost (BOQ x payment milestones) [128120 SAR]; Progress weight (fair EPC distribution, SAR value) [196540 SAR] | 196,540 | EWR | ERY | EWR | Priority 2 | PRO | VMS | Vendor | - | - | MS4 | PRO |
|  | ACC | **Access control and intercom** |  |  | 2027-05-02 | 2027-07-06 |  |  |  |  |  |  |  |  |  |  |  |  |  |  |  |  |
| ERY-P1030 |  | Manufacture access control and intercom equipment - Riyadh (Malaz) |  | 43d | 2027-05-02 | 2027-07-06 | ERY-E1210 | 443d | 0d | Contract cost (BOQ x payment milestones) [16098 SAR]; Progress weight (fair EPC distribution, SAR value) [24800 SAR] | 24,800 | EWR | ERY | EWR | Priority 2 | PRO | ACC | Vendor | - | - | MS4 | PRO |
|  | UPN | **UPS, network and cabinets** |  |  | 2027-05-02 | 2027-07-06 |  |  |  |  |  |  |  |  |  |  |  |  |  |  |  |  |
| ERY-P1040 |  | Manufacture UPS, network switches and field cabinets - Riyadh (Malaz) |  | 43d | 2027-05-02 | 2027-07-06 | ERY-E1210 | 443d | 0d | Contract cost (BOQ x payment milestones) [218418 SAR]; Progress weight (fair EPC distribution, SAR value) [335420 SAR] | 335,420 | EWR | ERY | EWR | Priority 2 | PRO | UPSNET | Vendor | - | - | MS4 | PRO |
|  | LOG | **FAT and logistics** |  |  | 2027-07-07 | 2027-08-24 |  |  |  |  |  |  |  |  |  |  |  |  |  |  |  |  |
| ERY-P1050 |  | Factory acceptance test at vendor premises - Riyadh (Malaz) |  | 10d | 2027-07-07 | 2027-07-20 | ERY-P1010, ERY-P1020, ERY-P1030, ERY-P1040 | 443d | 0d | Contract cost (BOQ x payment milestones) [30915 SAR]; Progress weight (fair EPC distribution, SAR value) [118420 SAR] | 118,420 | EWR | ERY | EWR | Priority 2 | PRO | PM | ETECHS | - | - | MS4 | PRO |
| ERY-P1060 |  | Shipping and customs clearance - Riyadh (Malaz) |  | 20d | 2027-07-21 | 2027-08-17 | ERY-P1050 | 443d | 0d | Contract cost (BOQ x payment milestones) [92746 SAR]; Progress weight (fair EPC distribution, SAR value) [237460 SAR] | 237,460 | EWR | ERY | EWR | Priority 2 | PRO | PM | Vendor | - | - | MS4 | PRO |
| ERY-P1070 |  | Delivery to station and receiving inspection - Riyadh (Malaz) |  | 5d | 2027-08-18 | 2027-08-24 | ERY-P1060 | 443d | 0d | Contract cost (BOQ x payment milestones) [30915 SAR]; Progress weight (fair EPC distribution, SAR value) [118420 SAR] | 118,420 | EWR | ERY | EWR | Priority 2 | PRO | PM | ETECHS | - | - | MS4 | PRO |
|  | HJD | **Jeddah (HHR)** |  |  | 2027-07-29 | 2028-01-27 |  |  |  |  |  |  |  |  |  |  |  |  |  |  |  |  |
| HJD-P1100 |  | MS4 Material delivered (20%) - Jeddah | milestone | 0d | 2028-01-27 | 2028-01-27 | HJD-P1070 | 288d | 0d |  |  | HHR | HJD | HHR | Standard | MS | PM | ETECHS | - | - | MS4 | MS |
|  | CCT | **CCTV system** |  |  | 2027-07-29 | 2027-11-18 |  |  |  |  |  |  |  |  |  |  |  |  |  |  |  |  |
| HJD-P1010 |  | Manufacture CCTV cameras and analytics - Jeddah |  | 80d | 2027-07-29 | 2027-11-18 | HJD-E1210 | 288d | 0d | Contract cost (BOQ x payment milestones) [396208 SAR]; Progress weight (fair EPC distribution, SAR value) [608840 SAR] | 608,840 | HHR | HJD | HHR | Standard | PRO | CCTV | Vendor | - | - | MS4 | PRO |
|  | VMS | **Video management and video wall** |  |  | 2027-07-29 | 2027-11-18 |  |  |  |  |  |  |  |  |  |  |  |  |  |  |  |  |
| HJD-P1020 |  | Manufacture video management servers, storage and video wall - Jeddah |  | 80d | 2027-07-29 | 2027-11-18 | HJD-E1210 | 288d | 0d | Contract cost (BOQ x payment milestones) [185712 SAR]; Progress weight (fair EPC distribution, SAR value) [285200 SAR] | 285,200 | HHR | HJD | HHR | Standard | PRO | VMS | Vendor | - | - | MS4 | PRO |
|  | ACC | **Access control and intercom** |  |  | 2027-07-29 | 2027-11-18 |  |  |  |  |  |  |  |  |  |  |  |  |  |  |  |  |
| HJD-P1030 |  | Manufacture access control and intercom equipment - Jeddah |  | 80d | 2027-07-29 | 2027-11-18 | HJD-E1210 | 288d | 0d | Contract cost (BOQ x payment milestones) [12555 SAR]; Progress weight (fair EPC distribution, SAR value) [19220 SAR] | 19,220 | HHR | HJD | HHR | Standard | PRO | ACC | Vendor | - | - | MS4 | PRO |
|  | UPN | **UPS, network and cabinets** |  |  | 2027-07-29 | 2027-11-18 |  |  |  |  |  |  |  |  |  |  |  |  |  |  |  |  |
| HJD-P1040 |  | Manufacture UPS, network switches and field cabinets - Jeddah |  | 80d | 2027-07-29 | 2027-11-18 | HJD-E1210 | 288d | 0d | Contract cost (BOQ x payment milestones) [838156 SAR]; Progress weight (fair EPC distribution, SAR value) [1287740 SAR] | 1,287,740 | HHR | HJD | HHR | Standard | PRO | UPSNET | Vendor | - | - | MS4 | PRO |

| ID | WBS | Activity | Type | Duration | Start | Finish | Predecessors | Total float | Free float | Resources | Cost | Area | Station | Railway | Priority | Discipline | Responsibility | EPC phase | Design stage | Submittal or approval | Programme phase | Payment milestone |
| --- | --- | --- | --- | --- | --- | --- | --- | --- | --- | --- | --- | --- | --- | --- | --- | --- | --- | --- | --- | --- | --- | --- |
|  | LOG | **FAT and logistics** |  |  | 2027-11-21 | 2028-01-27 |  |  |  |  |  |  |  |  |  |  |  |  |  |  |  |  |
| HJD-P1050 |  | Factory acceptance test at vendor premises - Jeddah |  | 10d | 2027-11-21 | 2027-12-02 | HJD-P1010, HJD-P1020, HJD-P1030, HJD-P1040 | 288d | 0d | Contract cost (BOQ x payment milestones) [95509 SAR]; Progress weight (fair EPC distribution, SAR value) [367040 SAR] | 367,040 | HHR | HJD | HHR | Standard | PM | ETECHS | PRO | - | - | PRO | MS4 |
| HJD-P1060 |  | Shipping and customs clearance - Jeddah |  | 35d | 2027-12-05 | 2028-01-20 | HJD-P1050 | 288d | 0d | Contract cost (BOQ x payment milestones) [286526 SAR]; Progress weight (fair EPC distribution, SAR value) [734080 SAR] | 734,080 | HHR | HJD | HHR | Standard | PM | Vendor | PRO | - | - | PRO | MS4 |
| HJD-P1070 |  | Delivery to station and receiving inspection - Jeddah |  | 5d | 2028-01-23 | 2028-01-27 | HJD-P1060 | 288d | 0d | Contract cost (BOQ x payment milestones) [95509 SAR]; Progress weight (fair EPC distribution, SAR value) [367040 SAR] | 367,040 | HHR | HJD | HHR | Standard | PM | ETECHS | PRO | - | - | PRO | MS4 |
|  | EDM | **Dammam (EWR)** |  |  | 2027-10-17 | 2028-02-01 |  |  |  |  |  |  |  |  |  |  |  |  |  |  |  |  |
| EDM-P1100 |  | MS4 Material delivered (20%) - Dammam | milestone | 0d | 2028-02-01 | 2028-02-01 | EDM-P1070 | 329d | 0d |  |  | EWR | EDM | EWR | Standard | PM | ETECHS | MS | - | - | MS | MS4 |
|  | CCT | **CCTV system** |  |  | 2027-10-17 | 2027-12-14 |  |  |  |  |  |  |  |  |  |  |  |  |  |  |  |  |
| EDM-P1010 |  | Manufacture CCTV cameras and analytics - Dammam |  | 43d | 2027-10-17 | 2027-12-14 | EDM-E1210 | 329d | 0d | Contract cost (BOQ x payment milestones) [99436 SAR]; Progress weight (fair EPC distribution, SAR value) [152520 SAR] | 152,520 | EWR | EDM | EWR | Standard | CCTV | Vendor | PRO | - | - | PRO | MS4 |
|  | VMS | **Video management and video wall** |  |  | 2027-10-17 | 2027-12-14 |  |  |  |  |  |  |  |  |  |  |  |  |  |  |  |  |
| EDM-P1020 |  | Manufacture video management servers, storage and video wall - Dammam |  | 43d | 2027-10-17 | 2027-12-14 | EDM-E1210 | 329d | 0d | Contract cost (BOQ x payment milestones) [148015 SAR]; Progress weight (fair EPC distribution, SAR value) [227540 SAR] | 227,540 | EWR | EDM | EWR | Standard | VMS | Vendor | PRO | - | - | PRO | MS4 |
|  | ACC | **Access control and intercom** |  |  | 2027-10-17 | 2027-12-14 |  |  |  |  |  |  |  |  |  |  |  |  |  |  |  |  |
| EDM-P1030 |  | Manufacture access control and intercom equipment - Dammam |  | 43d | 2027-10-17 | 2027-12-14 | EDM-E1210 | 329d | 0d | Contract cost (BOQ x payment milestones) [15834 SAR]; Progress weight (fair EPC distribution, SAR value) [24180 SAR] | 24,180 | EWR | EDM | EWR | Standard | ACC | Vendor | PRO | - | - | PRO | MS4 |
|  | UPN | **UPS, network and cabinets** |  |  | 2027-10-17 | 2027-12-14 |  |  |  |  |  |  |  |  |  |  |  |  |  |  |  |  |
| EDM-P1040 |  | Manufacture UPS, network switches and field cabinets - Dammam |  | 43d | 2027-10-17 | 2027-12-14 | EDM-E1210 | 329d | 0d | Contract cost (BOQ x payment milestones) [214841 SAR]; Progress weight (fair EPC distribution, SAR value) [329840 SAR] | 329,840 | EWR | EDM | EWR | Standard | UPSNET | Vendor | PRO | - | - | PRO | MS4 |
|  | LOG | **FAT and logistics** |  |  | 2027-12-15 | 2028-02-01 |  |  |  |  |  |  |  |  |  |  |  |  |  |  |  |  |
| EDM-P1050 |  | Factory acceptance test at vendor premises - Dammam |  | 10d | 2027-12-15 | 2027-12-28 | EDM-P1010, EDM-P1020, EDM-P1030, EDM-P1040 | 329d | 0d | Contract cost (BOQ x payment milestones) [31875 SAR]; Progress weight (fair EPC distribution, SAR value) [122140 SAR] | 122,140 | EWR | EDM | EWR | Standard | PM | ETECHS | PRO | - | - | PRO | MS4 |
| EDM-P1060 |  | Shipping and customs clearance - Dammam |  | 20d | 2027-12-29 | 2028-01-25 | EDM-P1050 | 329d | 0d | Contract cost (BOQ x payment milestones) [95625 SAR]; Progress weight (fair EPC distribution, SAR value) [244900 SAR] | 244,900 | EWR | EDM | EWR | Standard | PM | Vendor | PRO | - | - | PRO | MS4 |
| EDM-P1070 |  | Delivery to station and receiving inspection - Dammam |  | 5d | 2028-01-26 | 2028-02-01 | EDM-P1060 | 329d | 0d | Contract cost (BOQ x payment milestones) [31875 SAR]; Progress weight (fair EPC distribution, SAR value) [122140 SAR] | 122,140 | EWR | EDM | EWR | Standard | PM | ETECHS | PRO | - | - | PRO | MS4 |
|  | NQS | **Al Qassim (NSR)** |  |  | 2027-12-12 | 2028-04-12 |  |  |  |  |  |  |  |  |  |  |  |  |  |  |  |  |
| NQS-P1100 |  | MS4 Material delivered (20%) - Al Qassim | milestone | 0d | 2028-04-12 | 2028-04-12 | NQS-P1070 | 276d | 0d |  |  | NSR | NQS | NSR | Standard | PM | ETECHS | MS | - | - | MS | MS4 |
|  | CCT | **CCTV system** |  |  | 2027-12-12 | 2028-02-14 |  |  |  |  |  |  |  |  |  |  |  |  |  |  |  |  |
| NQS-P1010 |  | Manufacture CCTV cameras and analytics - Al Qassim |  | 47d | 2027-12-12 | 2028-02-14 | NQS-E1210 | 276d | 0d | Contract cost (BOQ x payment milestones) [104169 SAR]; Progress weight (fair EPC distribution, SAR value) [159960 SAR] | 159,960 | NSR | NQS | NSR | Standard | CCTV | Vendor | PRO | - | - | PRO | MS4 |
|  | VMS | **Video management and video wall** |  |  | 2027-12-12 | 2028-02-14 |  |  |  |  |  |  |  |  |  |  |  |  |  |  |  |  |
| NQS-P1020 |  | Manufacture video management servers, storage and video wall - Al Qassim |  | 47d | 2027-12-12 | 2028-02-14 | NQS-E1210 | 276d | 0d | Contract cost (BOQ x payment milestones) [110385 SAR]; Progress weight (fair EPC distribution, SAR value) [169260 SAR] | 169,260 | NSR | NQS | NSR | Standard | VMS | Vendor | PRO | - | - | PRO | MS4 |

| ID | WBS | Activity | Type | Duration | Start | Finish | Predecessors | Total float | Free float | Resources | Cost | Area | Station | Railway | Priority | Discipline | Responsibility | EPC phase | Design stage | Submittal or approval | Programme phase | Payment milestone |
| --- | --- | --- | --- | --- | --- | --- | --- | --- | --- | --- | --- | --- | --- | --- | --- | --- | --- | --- | --- | --- | --- | --- |
|  | ACC | **Access control and intercom** |  |  | 2027-12-12 | 2028-02-14 |  |  |  |  |  |  |  |  |  |  |  |  |  |  |  |  |
| NQS-P1030 |  | Manufacture access control and intercom equipment - Al Qassim |  | 47d | 2027-12-12 | 2028-02-14 | NQS-E1210 | 276d | 0d | Contract cost (BOQ x payment milestones) [13547 SAR]; Progress weight (fair EPC distribution, SAR value) [21080 SAR] | 21,080 | NSR | NQS | NSR | Standard | ACC | Vendor | PRO | - | - | PRO | MS4 |
|  | UPN | **UPS, network and cabinets** |  |  | 2027-12-12 | 2028-02-14 |  |  |  |  |  |  |  |  |  |  |  |  |  |  |  |  |
| NQS-P1040 |  | Manufacture UPS, network switches and field cabinets - Al Qassim |  | 47d | 2027-12-12 | 2028-02-14 | NQS-E1210 | 276d | 0d | Contract cost (BOQ x payment milestones) [281736 SAR]; Progress weight (fair EPC distribution, SAR value) [432760 SAR] | 432,760 | NSR | NQS | NSR | Standard | UPSNET | Vendor | PRO | - | - | PRO | MS4 |
|  | LOG | **FAT and logistics** |  |  | 2028-02-15 | 2028-04-12 |  |  |  |  |  |  |  |  |  |  |  |  |  |  |  |  |
| NQS-P1050 |  | Factory acceptance test at vendor premises - Al Qassim |  | 10d | 2028-02-15 | 2028-03-06 | NQS-P1010, NQS-P1020, NQS-P1030, NQS-P1040 | 276d | 0d | Contract cost (BOQ x payment milestones) [33989 SAR]; Progress weight (fair EPC distribution, SAR value) [130820 SAR] | 130,820 | NSR | NQS | NSR | Standard | PM | ETECHS | PRO | - | - | PRO | MS4 |
| NQS-P1060 |  | Shipping and customs clearance - Al Qassim |  | 22d | 2028-03-07 | 2028-04-05 | NQS-P1050 | 276d | 0d | Contract cost (BOQ x payment milestones) [101967 SAR]; Progress weight (fair EPC distribution, SAR value) [261020 SAR] | 261,020 | NSR | NQS | NSR | Standard | PM | Vendor | PRO | - | - | PRO | MS4 |
| NQS-P1070 |  | Delivery to station and receiving inspection - Al Qassim |  | 5d | 2028-04-06 | 2028-04-12 | NQS-P1060 | 276d | 0d | Contract cost (BOQ x payment milestones) [33989 SAR]; Progress weight (fair EPC distribution, SAR value) [130820 SAR] | 130,820 | NSR | NQS | NSR | Standard | PM | ETECHS | PRO | - | - | PRO | MS4 |
|  | EHF | **Hufuf (EWR)** |  |  | 2027-12-12 | 2028-04-02 |  |  |  |  |  |  |  |  |  |  |  |  |  |  |  |  |
| EHF-P1100 |  | MS4 Material delivered (20%) - Hufuf | milestone | 0d | 2028-04-02 | 2028-04-02 | EHF-P1070 | 293d | 0d |  |  | EWR | EHF | EWR | Standard | PM | ETECHS | MS | - | - | MS | MS4 |
|  | CCT | **CCTV system** |  |  | 2027-12-12 | 2028-02-06 |  |  |  |  |  |  |  |  |  |  |  |  |  |  |  |  |
| EHF-P1010 |  | Manufacture CCTV cameras and analytics - Hufuf |  | 41d | 2027-12-12 | 2028-02-06 | EHF-E1210 | 293d | 0d | Contract cost (BOQ x payment milestones) [71254 SAR]; Progress weight (fair EPC distribution, SAR value) [109740 SAR] | 109,740 | EWR | EHF | EWR | Standard | CCTV | Vendor | PRO | - | - | PRO | MS4 |
|  | VMS | **Video management and video wall** |  |  | 2027-12-12 | 2028-02-06 |  |  |  |  |  |  |  |  |  |  |  |  |  |  |  |  |
| EHF-P1020 |  | Manufacture video management servers, storage and video wall - Hufuf |  | 41d | 2027-12-12 | 2028-02-06 | EHF-E1210 | 293d | 0d | Contract cost (BOQ x payment milestones) [129428 SAR]; Progress weight (fair EPC distribution, SAR value) [199020 SAR] | 199,020 | EWR | EHF | EWR | Standard | VMS | Vendor | PRO | - | - | PRO | MS4 |
|  | ACC | **Access control and intercom** |  |  | 2027-12-12 | 2028-02-06 |  |  |  |  |  |  |  |  |  |  |  |  |  |  |  |  |
| EHF-P1030 |  | Manufacture access control and intercom equipment - Hufuf |  | 41d | 2027-12-12 | 2028-02-06 | EHF-E1210 | 293d | 0d | Contract cost (BOQ x payment milestones) [16348 SAR]; Progress weight (fair EPC distribution, SAR value) [24800 SAR] | 24,800 | EWR | EHF | EWR | Standard | ACC | Vendor | PRO | - | - | PRO | MS4 |
|  | UPN | **UPS, network and cabinets** |  |  | 2027-12-12 | 2028-02-06 |  |  |  |  |  |  |  |  |  |  |  |  |  |  |  |  |
| EHF-P1040 |  | Manufacture UPS, network switches and field cabinets - Hufuf |  | 41d | 2027-12-12 | 2028-02-06 | EHF-E1210 | 293d | 0d | Contract cost (BOQ x payment milestones) [207246 SAR]; Progress weight (fair EPC distribution, SAR value) [318060 SAR] | 318,060 | EWR | EHF | EWR | Standard | UPSNET | Vendor | PRO | - | - | PRO | MS4 |
|  | LOG | **FAT and logistics** |  |  | 2028-02-07 | 2028-04-02 |  |  |  |  |  |  |  |  |  |  |  |  |  |  |  |  |
| EHF-P1050 |  | Factory acceptance test at vendor premises - Hufuf |  | 10d | 2028-02-07 | 2028-02-27 | EHF-P1010, EHF-P1020, EHF-P1030, EHF-P1040 | 293d | 0d | Contract cost (BOQ x payment milestones) [28285 SAR]; Progress weight (fair EPC distribution, SAR value) [108500 SAR] | 108,500 | EWR | EHF | EWR | Standard | PM | ETECHS | PRO | - | - | PRO | MS4 |
| EHF-P1060 |  | Shipping and customs clearance - Hufuf |  | 20d | 2028-02-28 | 2028-03-26 | EHF-P1050 | 293d | 0d | Contract cost (BOQ x payment milestones) [84855 SAR]; Progress weight (fair EPC distribution, SAR value) [217000 SAR] | 217,000 | EWR | EHF | EWR | Standard | PM | Vendor | PRO | - | - | PRO | MS4 |
| EHF-P1070 |  | Delivery to station and receiving inspection - Hufuf |  | 5d | 2028-03-27 | 2028-04-02 | EHF-P1060 | 293d | 0d | Contract cost (BOQ x payment milestones) [28285 SAR]; Progress weight (fair EPC distribution, SAR value) [108500 SAR] | 108,500 | EWR | EHF | EWR | Standard | PM | ETECHS | PRO | - | - | PRO | MS4 |
|  | NMJ | **Al Majma'ah (NSR)** |  |  | 2028-01-30 | 2028-06-07 |  |  |  |  |  |  |  |  |  |  |  |  |  |  |  |  |
| NMJ-P1100 |  | MS4 Material delivered (20%) - Al Majma'ah | milestone | 0d | 2028-06-07 | 2028-06-07 | NMJ-P1070 | 241d | 0d |  |  | NSR | NMJ | NSR | Standard | PM | ETECHS | MS | - | - | MS | MS4 |

| ID | WBS | Activity | Type | Duration | Start | Finish | Predecessors | Total float | Free float | Resources | Cost | Area | Station | Railway | Priority | Discipline | Responsibility | EPC phase | Design stage | Submittal or approval | Programme phase | Payment milestone |
| --- | --- | --- | --- | --- | --- | --- | --- | --- | --- | --- | --- | --- | --- | --- | --- | --- | --- | --- | --- | --- | --- | --- |
|  | CCT | **CCTV system** |  |  | 2028-01-30 | 2028-04-10 |  |  |  |  |  |  |  |  |  |  |  |  |  |  |  |  |
| NMJ-P1010 |  | Manufacture CCTV cameras and analytics - Al Majma'ah |  | 47d | 2028-01-30 | 2028-04-10 | NMJ-E1210 | 241d | 0d | Contract cost (BOQ x payment milestones) [104169 SAR]; Progress weight (fair EPC distribution, SAR value) [159960 SAR] | 159,960 | NSR | NMJ | NSR | Standard | CCTV | Vendor | PRO | - | - | PRO | MS4 |
|  | VMS | **Video management and video wall** |  |  | 2028-01-30 | 2028-04-10 |  |  |  |  |  |  |  |  |  |  |  |  |  |  |  |  |
| NMJ-P1020 |  | Manufacture video management servers, storage and video wall - Al Majma'ah |  | 47d | 2028-01-30 | 2028-04-10 | NMJ-E1210 | 241d | 0d | Contract cost (BOQ x payment milestones) [110385 SAR]; Progress weight (fair EPC distribution, SAR value) [169260 SAR] | 169,260 | NSR | NMJ | NSR | Standard | VMS | Vendor | PRO | - | - | PRO | MS4 |
|  | ACC | **Access control and intercom** |  |  | 2028-01-30 | 2028-04-10 |  |  |  |  |  |  |  |  |  |  |  |  |  |  |  |  |
| NMJ-P1030 |  | Manufacture access control and intercom equipment - Al Majma'ah |  | 47d | 2028-01-30 | 2028-04-10 | NMJ-E1210 | 241d | 0d | Contract cost (BOQ x payment milestones) [13547 SAR]; Progress weight (fair EPC distribution, SAR value) [21080 SAR] | 21,080 | NSR | NMJ | NSR | Standard | ACC | Vendor | PRO | - | - | PRO | MS4 |
|  | UPN | **UPS, network and cabinets** |  |  | 2028-01-30 | 2028-04-10 |  |  |  |  |  |  |  |  |  |  |  |  |  |  |  |  |
| NMJ-P1040 |  | Manufacture UPS, network switches and field cabinets - Al Majma'ah |  | 47d | 2028-01-30 | 2028-04-10 | NMJ-E1210 | 241d | 0d | Contract cost (BOQ x payment milestones) [281736 SAR]; Progress weight (fair EPC distribution, SAR value) [432760 SAR] | 432,760 | NSR | NMJ | NSR | Standard | UPSNET | Vendor | PRO | - | - | PRO | MS4 |
|  | LOG | **FAT and logistics** |  |  | 2028-04-11 | 2028-06-07 |  |  |  |  |  |  |  |  |  |  |  |  |  |  |  |  |
| NMJ-P1050 |  | Factory acceptance test at vendor premises - Al Majma'ah |  | 10d | 2028-04-11 | 2028-04-24 | NMJ-P1010, NMJ-P1020, NMJ-P1030, NMJ-P1040 | 241d | 0d | Contract cost (BOQ x payment milestones) [33989 SAR]; Progress weight (fair EPC distribution, SAR value) [130820 SAR] | 130,820 | NSR | NMJ | NSR | Standard | PM | ETECHS | PRO | - | - | PRO | MS4 |
| NMJ-P1060 |  | Shipping and customs clearance - Al Majma'ah |  | 22d | 2028-04-25 | 2028-05-31 | NMJ-P1050 | 241d | 0d | Contract cost (BOQ x payment milestones) [101967 SAR]; Progress weight (fair EPC distribution, SAR value) [261020 SAR] | 261,020 | NSR | NMJ | NSR | Standard | PM | Vendor | PRO | - | - | PRO | MS4 |
| NMJ-P1070 |  | Delivery to station and receiving inspection - Al Majma'ah |  | 5d | 2028-06-01 | 2028-06-07 | NMJ-P1060 | 241d | 0d | Contract cost (BOQ x payment milestones) [33989 SAR]; Progress weight (fair EPC distribution, SAR value) [130820 SAR] | 130,820 | NSR | NMJ | NSR | Standard | PM | ETECHS | PRO | - | - | PRO | MS4 |
|  | HKA | **KAEC (HHR)** |  |  | 2028-05-25 | 2028-10-15 |  |  |  |  |  |  |  |  |  |  |  |  |  |  |  |  |
| HKA-P1100 |  | MS4 Material delivered (20%) - KAEC | milestone | 0d | 2028-10-15 | 2028-10-15 | HKA-P1070 | 118d | 0d |  |  | HHR | HKA | HHR | Standard | PM | ETECHS | MS | - | - | MS | MS4 |
|  | CCT | **CCTV system** |  |  | 2028-05-25 | 2028-08-16 |  |  |  |  |  |  |  |  |  |  |  |  |  |  |  |  |
| HKA-P1010 |  | Manufacture CCTV cameras and analytics - KAEC |  | 60d | 2028-05-25 | 2028-08-16 | HKA-E1210 | 118d | 0d | Contract cost (BOQ x payment milestones) [263474 SAR]; Progress weight (fair EPC distribution, SAR value) [404860 SAR] | 404,860 | HHR | HKA | HHR | Standard | CCTV | Vendor | PRO | - | - | PRO | MS4 |
|  | VMS | **Video management and video wall** |  |  | 2028-05-25 | 2028-08-16 |  |  |  |  |  |  |  |  |  |  |  |  |  |  |  |  |
| HKA-P1020 |  | Manufacture video management servers, storage and video wall - KAEC |  | 60d | 2028-05-25 | 2028-08-16 | HKA-E1210 | 118d | 0d | Contract cost (BOQ x payment milestones) [111291 SAR]; Progress weight (fair EPC distribution, SAR value) [171120 SAR] | 171,120 | HHR | HKA | HHR | Standard | VMS | Vendor | PRO | - | - | PRO | MS4 |
|  | ACC | **Access control and intercom** |  |  | 2028-05-25 | 2028-08-16 |  |  |  |  |  |  |  |  |  |  |  |  |  |  |  |  |
| HKA-P1030 |  | Manufacture access control and intercom equipment - KAEC |  | 60d | 2028-05-25 | 2028-08-16 | HKA-E1210 | 118d | 0d | Contract cost (BOQ x payment milestones) [12074 SAR]; Progress weight (fair EPC distribution, SAR value) [18600 SAR] | 18,600 | HHR | HKA | HHR | Standard | ACC | Vendor | PRO | - | - | PRO | MS4 |
|  | UPN | **UPS, network and cabinets** |  |  | 2028-05-25 | 2028-08-16 |  |  |  |  |  |  |  |  |  |  |  |  |  |  |  |  |
| HKA-P1040 |  | Manufacture UPS, network switches and field cabinets - KAEC |  | 60d | 2028-05-25 | 2028-08-16 | HKA-E1210 | 118d | 0d | Contract cost (BOQ x payment milestones) [447818 SAR]; Progress weight (fair EPC distribution, SAR value) [687580 SAR] | 687,580 | HHR | HKA | HHR | Standard | UPSNET | Vendor | PRO | - | - | PRO | MS4 |
|  | LOG | **FAT and logistics** |  |  | 2028-08-17 | 2028-10-15 |  |  |  |  |  |  |  |  |  |  |  |  |  |  |  |  |
| HKA-P1050 |  | Factory acceptance test at vendor premises - KAEC |  | 10d | 2028-08-17 | 2028-08-30 | HKA-P1010, HKA-P1020, HKA-P1030, HKA-P1040 | 118d | 0d | Contract cost (BOQ x payment milestones) [55644 SAR]; Progress weight (fair EPC distribution, SAR value) [213900 SAR] | 213,900 | HHR | HKA | HHR | Standard | PM | ETECHS | PRO | - | - | PRO | MS4 |
| HKA-P1060 |  | Shipping and customs clearance - KAEC |  | 27d | 2028-08-31 | 2028-10-08 | HKA-P1050 | 118d | 0d | Contract cost (BOQ x payment milestones) [166931 SAR]; Progress weight (fair EPC distribution, SAR value) [427180 SAR] | 427,180 | HHR | HKA | HHR | Standard | PM | Vendor | PRO | - | - | PRO | MS4 |
| HKA-P1070 |  | Delivery to station and receiving inspection - KAEC |  | 5d | 2028-10-09 | 2028-10-15 | HKA-P1060 | 118d | 0d | Contract cost (BOQ x payment milestones) [55644 SAR]; Progress weight (fair EPC distribution, SAR value) [213900 SAR] | 213,900 | HHR | HKA | HHR | Standard | PM | ETECHS | PRO | - | - | PRO | MS4 |

| ID | WBS | Activity | Type | Duration | Start | Finish | Predecessors | Total float | Free float | Resources | Cost | Area | Station | Railway | Priority | EPC phase | Discipline | Responsibility | Design stage | Submittal or approval | Payment milestone | Programme phase |
| --- | --- | --- | --- | --- | --- | --- | --- | --- | --- | --- | --- | --- | --- | --- | --- | --- | --- | --- | --- | --- | --- | --- |
|  | HMD | **Madinah (HHR)** |  |  | 2028-05-25 | 2028-10-12 |  |  |  |  |  |  |  |  |  |  |  |  |  |  |  |  |
| HMD-P1100 |  | MS4 Material delivered (20%) - Madinah | milestone | 0d | 2028-10-12 | 2028-10-12 | HMD-P1070 | 114d | 0d |  |  | HHR | HMD | HHR | Standard | MS | PM | ETECHS | - | - | MS4 | MS |
|  | CCT | **CCTV system** |  |  | 2028-05-25 | 2028-08-15 |  |  |  |  |  |  |  |  |  |  |  |  |  |  |  |  |
| HMD-P1010 |  | Manufacture CCTV cameras and analytics - Madinah |  | 59d | 2028-05-25 | 2028-08-15 | HMD-E1210 | 114d | 0d | Contract cost (BOQ x payment milestones) [264932 SAR]; Progress weight (fair EPC distribution, SAR value) [406720 SAR] | 406,720 | HHR | HMD | HHR | Standard | PRO | CCTV | Vendor | - | - | MS4 | PRO |
|  | VMS | **Video management and video wall** |  |  | 2028-05-25 | 2028-08-15 |  |  |  |  |  |  |  |  |  |  |  |  |  |  |  |  |
| HMD-P1020 |  | Manufacture video management servers, storage and video wall - Madinah |  | 59d | 2028-05-25 | 2028-08-15 | HMD-E1210 | 114d | 0d | Contract cost (BOQ x payment milestones) [116027 SAR]; Progress weight (fair EPC distribution, SAR value) [177940 SAR] | 177,940 | HHR | HMD | HHR | Standard | PRO | VMS | Vendor | - | - | MS4 | PRO |
|  | ACC | **Access control and intercom** |  |  | 2028-05-25 | 2028-08-15 |  |  |  |  |  |  |  |  |  |  |  |  |  |  |  |  |
| HMD-P1030 |  | Manufacture access control and intercom equipment - Madinah |  | 59d | 2028-05-25 | 2028-08-15 | HMD-E1210 | 114d | 0d | Contract cost (BOQ x payment milestones) [12501 SAR]; Progress weight (fair EPC distribution, SAR value) [19220 SAR] | 19,220 | HHR | HMD | HHR | Standard | PRO | ACC | Vendor | - | - | MS4 | PRO |
|  | UPN | **UPS, network and cabinets** |  |  | 2028-05-25 | 2028-08-15 |  |  |  |  |  |  |  |  |  |  |  |  |  |  |  |  |
| HMD-P1040 |  | Manufacture UPS, network switches and field cabinets - Madinah |  | 59d | 2028-05-25 | 2028-08-15 | HMD-E1210 | 114d | 0d | Contract cost (BOQ x payment milestones) [440861 SAR]; Progress weight (fair EPC distribution, SAR value) [677040 SAR] | 677,040 | HHR | HMD | HHR | Standard | PRO | UPSNET | Vendor | - | - | MS4 | PRO |
|  | LOG | **FAT and logistics** |  |  | 2028-08-16 | 2028-10-12 |  |  |  |  |  |  |  |  |  |  |  |  |  |  |  |  |
| HMD-P1050 |  | Factory acceptance test at vendor premises - Madinah |  | 10d | 2028-08-16 | 2028-08-29 | HMD-P1010, HMD-P1020, HMD-P1030, HMD-P1040 | 114d | 0d | Contract cost (BOQ x payment milestones) [55621 SAR]; Progress weight (fair EPC distribution, SAR value) [213280 SAR] | 213,280 | HHR | HMD | HHR | Standard | PRO | PM | ETECHS | - | - | MS4 | PRO |
| HMD-P1060 |  | Shipping and customs clearance - Madinah |  | 27d | 2028-08-30 | 2028-10-05 | HMD-P1050 | 114d | 0d | Contract cost (BOQ x payment milestones) [166864 SAR]; Progress weight (fair EPC distribution, SAR value) [427180 SAR] | 427,180 | HHR | HMD | HHR | Standard | PRO | PM | Vendor | - | - | MS4 | PRO |
| HMD-P1070 |  | Delivery to station and receiving inspection - Madinah |  | 5d | 2028-10-08 | 2028-10-12 | HMD-P1060 | 114d | 0d | Contract cost (BOQ x payment milestones) [55621 SAR]; Progress weight (fair EPC distribution, SAR value) [213280 SAR] | 213,280 | HHR | HMD | HHR | Standard | PRO | PM | ETECHS | - | - | MS4 | PRO |
|  | EAB | **Abqaiq (EWR)** |  |  | 2028-07-20 | 2028-10-30 |  |  |  |  |  |  |  |  |  |  |  |  |  |  |  |  |
| EAB-P1100 |  | MS4 Material delivered (20%) - Abqaiq | milestone | 0d | 2028-10-30 | 2028-10-30 | EAB-P1070 | 158d | 0d |  |  | EWR | EAB | EWR | Standard | MS | PM | ETECHS | - | - | MS4 | MS |
|  | CCT | **CCTV system** |  |  | 2028-07-20 | 2028-09-12 |  |  |  |  |  |  |  |  |  |  |  |  |  |  |  |  |
| EAB-P1010 |  | Manufacture CCTV cameras and analytics - Abqaiq |  | 39d | 2028-07-20 | 2028-09-12 | EAB-E1210 | 158d | 0d | Contract cost (BOQ x payment milestones) [36997 SAR]; Progress weight (fair EPC distribution, SAR value) [57040 SAR] | 57,040 | EWR | EAB | EWR | Standard | PRO | CCTV | Vendor | - | - | MS4 | PRO |
|  | VMS | **Video management and video wall** |  |  | 2028-07-20 | 2028-09-12 |  |  |  |  |  |  |  |  |  |  |  |  |  |  |  |  |
| EAB-P1020 |  | Manufacture video management servers, storage and video wall - Abqaiq |  | 39d | 2028-07-20 | 2028-09-12 | EAB-E1210 | 158d | 0d | Contract cost (BOQ x payment milestones) [95266 SAR]; Progress weight (fair EPC distribution, SAR value) [146320 SAR] | 146,320 | EWR | EAB | EWR | Standard | PRO | VMS | Vendor | - | - | MS4 | PRO |
|  | ACC | **Access control and intercom** |  |  | 2028-07-20 | 2028-09-12 |  |  |  |  |  |  |  |  |  |  |  |  |  |  |  |  |
| EAB-P1030 |  | Manufacture access control and intercom equipment - Abqaiq |  | 39d | 2028-07-20 | 2028-09-12 | EAB-E1210 | 158d | 0d | Contract cost (BOQ x payment milestones) [14683 SAR]; Progress weight (fair EPC distribution, SAR value) [22320 SAR] | 22,320 | EWR | EAB | EWR | Standard | PRO | ACC | Vendor | - | - | MS4 | PRO |
|  | UPN | **UPS, network and cabinets** |  |  | 2028-07-20 | 2028-09-12 |  |  |  |  |  |  |  |  |  |  |  |  |  |  |  |  |
| EAB-P1040 |  | Manufacture UPS, network switches and field cabinets - Abqaiq |  | 39d | 2028-07-20 | 2028-09-12 | EAB-E1210 | 158d | 0d | Contract cost (BOQ x payment milestones) [153905 SAR]; Progress weight (fair EPC distribution, SAR value) [236220 SAR] | 236,220 | EWR | EAB | EWR | Standard | PRO | UPSNET | Vendor | - | - | MS4 | PRO |

| ID | WBS | Activity | Type | Duration | Start | Finish | Predecessors | Total float | Free float | Resources | Cost | Area | Station | Railway | Priority | Discipline | Responsibility | EPC phase | Design stage | Submittal or approval | Programme phase | Payment milestone |
| --- | --- | --- | --- | --- | --- | --- | --- | --- | --- | --- | --- | --- | --- | --- | --- | --- | --- | --- | --- | --- | --- | --- |
|  | LOG | **FAT and logistics** |  |  | 2028-09-13 | 2028-10-30 |  |  |  |  |  |  |  |  |  |  |  |  |  |  |  |  |
| EAB-P1050 |  | Factory acceptance test at vendor premises - Abqaiq |  | 10d | 2028-09-13 | 2028-09-26 | EAB-P1010, EAB-P1020, EAB-P1030, EAB-P1040 | 158d | 0d | Contract cost (BOQ x payment milestones) [20057 SAR]; Progress weight (fair EPC distribution, SAR value) [76880 SAR] | 76,880 | EWR | EAB | EWR | Standard | PM | ETECHS | PRO | - | - | PRO | MS4 |
| EAB-P1060 |  | Shipping and customs clearance - Abqaiq |  | 19d | 2028-09-27 | 2028-10-23 | EAB-P1050 | 158d | 0d | Contract cost (BOQ x payment milestones) [60170 SAR]; Progress weight (fair EPC distribution, SAR value) [153760 SAR] | 153,760 | EWR | EAB | EWR | Standard | PM | Vendor | PRO | - | - | PRO | MS4 |
| EAB-P1070 |  | Delivery to station and receiving inspection - Abqaiq |  | 5d | 2028-10-24 | 2028-10-30 | EAB-P1060 | 158d | 0d | Contract cost (BOQ x payment milestones) [20057 SAR]; Progress weight (fair EPC distribution, SAR value) [76880 SAR] | 76,880 | EWR | EAB | EWR | Standard | PM | ETECHS | PRO | - | - | PRO | MS4 |
|  | NHL | **Hail (NSR)** |  |  | 2028-08-13 | 2028-12-06 |  |  |  |  |  |  |  |  |  |  |  |  |  |  |  |  |
| NHL-P1100 |  | MS4 Material delivered (20%) - Hail | milestone | 0d | 2028-12-06 | 2028-12-06 | NHL-P1070 | 111d | 0d |  |  | NSR | NHL | NSR | Standard | PM | ETECHS | MS | - | - | MS | MS4 |
|  | CCT | **CCTV system** |  |  | 2028-08-13 | 2028-10-16 |  |  |  |  |  |  |  |  |  |  |  |  |  |  |  |  |
| NHL-P1010 |  | Manufacture CCTV cameras and analytics - Hail |  | 47d | 2028-08-13 | 2028-10-16 | NHL-E1210 | 111d | 0d | Contract cost (BOQ x payment milestones) [104169 SAR]; Progress weight (fair EPC distribution, SAR value) [159960 SAR] | 159,960 | NSR | NHL | NSR | Standard | CCTV | Vendor | PRO | - | - | PRO | MS4 |
|  | VMS | **Video management and video wall** |  |  | 2028-08-13 | 2028-10-16 |  |  |  |  |  |  |  |  |  |  |  |  |  |  |  |  |
| NHL-P1020 |  | Manufacture video management servers, storage and video wall - Hail |  | 47d | 2028-08-13 | 2028-10-16 | NHL-E1210 | 111d | 0d | Contract cost (BOQ x payment milestones) [110385 SAR]; Progress weight (fair EPC distribution, SAR value) [169260 SAR] | 169,260 | NSR | NHL | NSR | Standard | VMS | Vendor | PRO | - | - | PRO | MS4 |
|  | ACC | **Access control and intercom** |  |  | 2028-08-13 | 2028-10-16 |  |  |  |  |  |  |  |  |  |  |  |  |  |  |  |  |
| NHL-P1030 |  | Manufacture access control and intercom equipment - Hail |  | 47d | 2028-08-13 | 2028-10-16 | NHL-E1210 | 111d | 0d | Contract cost (BOQ x payment milestones) [13547 SAR]; Progress weight (fair EPC distribution, SAR value) [21080 SAR] | 21,080 | NSR | NHL | NSR | Standard | ACC | Vendor | PRO | - | - | PRO | MS4 |
|  | UPN | **UPS, network and cabinets** |  |  | 2028-08-13 | 2028-10-16 |  |  |  |  |  |  |  |  |  |  |  |  |  |  |  |  |
| NHL-P1040 |  | Manufacture UPS, network switches and field cabinets - Hail |  | 47d | 2028-08-13 | 2028-10-16 | NHL-E1210 | 111d | 0d | Contract cost (BOQ x payment milestones) [281736 SAR]; Progress weight (fair EPC distribution, SAR value) [432760 SAR] | 432,760 | NSR | NHL | NSR | Standard | UPSNET | Vendor | PRO | - | - | PRO | MS4 |
|  | LOG | **FAT and logistics** |  |  | 2028-10-17 | 2028-12-06 |  |  |  |  |  |  |  |  |  |  |  |  |  |  |  |  |
| NHL-P1050 |  | Factory acceptance test at vendor premises - Hail |  | 10d | 2028-10-17 | 2028-10-30 | NHL-P1010, NHL-P1020, NHL-P1030, NHL-P1040 | 111d | 0d | Contract cost (BOQ x payment milestones) [33989 SAR]; Progress weight (fair EPC distribution, SAR value) [130820 SAR] | 130,820 | NSR | NHL | NSR | Standard | PM | ETECHS | PRO | - | - | PRO | MS4 |
| NHL-P1060 |  | Shipping and customs clearance - Hail |  | 22d | 2028-10-31 | 2028-11-29 | NHL-P1050 | 111d | 0d | Contract cost (BOQ x payment milestones) [101967 SAR]; Progress weight (fair EPC distribution, SAR value) [261020 SAR] | 261,020 | NSR | NHL | NSR | Standard | PM | Vendor | PRO | - | - | PRO | MS4 |
| NHL-P1070 |  | Delivery to station and receiving inspection - Hail |  | 5d | 2028-11-30 | 2028-12-06 | NHL-P1060 | 111d | 0d | Contract cost (BOQ x payment milestones) [33989 SAR]; Progress weight (fair EPC distribution, SAR value) [130820 SAR] | 130,820 | NSR | NHL | NSR | Standard | PM | ETECHS | PRO | - | - | PRO | MS4 |
|  | NJF | **Al Jouf (NSR)** |  |  | 2028-10-29 | 2029-03-01 |  |  |  |  |  |  |  |  |  |  |  |  |  |  |  |  |
| NJF-P1100 |  | MS4 Material delivered (20%) - Al Jouf | milestone | 0d | 2029-03-01 | 2029-03-01 | NJF-P1070 | 56d | 0d |  |  | NSR | NJF | NSR | Standard | PM | ETECHS | MS | - | - | MS | MS4 |
|  | CCT | **CCTV system** |  |  | 2028-10-29 | 2029-01-01 |  |  |  |  |  |  |  |  |  |  |  |  |  |  |  |  |
| NJF-P1010 |  | Manufacture CCTV cameras and analytics - Al Jouf |  | 47d | 2028-10-29 | 2029-01-01 | NJF-E1210 | 56d | 0d | Contract cost (BOQ x payment milestones) [103843 SAR]; Progress weight (fair EPC distribution, SAR value) [159340 SAR] | 159,340 | NSR | NJF | NSR | Standard | CCTV | Vendor | PRO | - | - | PRO | MS4 |
|  | VMS | **Video management and video wall** |  |  | 2028-10-29 | 2029-01-01 |  |  |  |  |  |  |  |  |  |  |  |  |  |  |  |  |
| NJF-P1020 |  | Manufacture video management servers, storage and video wall - Al Jouf |  | 47d | 2028-10-29 | 2029-01-01 | NJF-E1210 | 56d | 0d | Contract cost (BOQ x payment milestones) [110039 SAR]; Progress weight (fair EPC distribution, SAR value) [169260 SAR] | 169,260 | NSR | NJF | NSR | Standard | VMS | Vendor | PRO | - | - | PRO | MS4 |

| ID | WBS | Activity | Type | Duration | Start | Finish | Predecessors | Total float | Free float | Resources | Cost | Area | Station | Railway | Priority | Discipline | Responsibility | EPC phase | Design stage | Submittal or approval | Programme phase | Payment milestone |
| --- | --- | --- | --- | --- | --- | --- | --- | --- | --- | --- | --- | --- | --- | --- | --- | --- | --- | --- | --- | --- | --- | --- |
|  | ACC | **Access control and intercom** |  |  | 2028-10-29 | 2029-01-01 |  |  |  |  |  |  |  |  |  |  |  |  |  |  |  |  |
| NJF-P1030 |  | Manufacture access control and intercom equipment - Al Jouf |  | 47d | 2028-10-29 | 2029-01-01 | NJF-E1210 | 56d | 0d | Contract cost (BOQ x payment milestones) [13505 SAR]; Progress weight (fair EPC distribution, SAR value) [20460 SAR] | 20,460 | NSR | NJF | NSR | Standard | ACC | Vendor | PRO | - | - | PRO | MS4 |
|  | UPN | **UPS, network and cabinets** |  |  | 2028-10-29 | 2029-01-01 |  |  |  |  |  |  |  |  |  |  |  |  |  |  |  |  |
| NJF-P1040 |  | Manufacture UPS, network switches and field cabinets - Al Jouf |  | 47d | 2028-10-29 | 2029-01-01 | NJF-E1210 | 56d | 0d | Contract cost (BOQ x payment milestones) [286040 SAR]; Progress weight (fair EPC distribution, SAR value) [439580 SAR] | 439,580 | NSR | NJF | NSR | Standard | UPSNET | Vendor | PRO | - | - | PRO | MS4 |
|  | LOG | **FAT and logistics** |  |  | 2029-01-02 | 2029-03-01 |  |  |  |  |  |  |  |  |  |  |  |  |  |  |  |  |
| NJF-P1050 |  | Factory acceptance test at vendor premises - Al Jouf |  | 10d | 2029-01-02 | 2029-01-15 | NJF-P1010, NJF-P1020, NJF-P1030, NJF-P1040 | 56d | 0d | Contract cost (BOQ x payment milestones) [34228 SAR]; Progress weight (fair EPC distribution, SAR value) [131440 SAR] | 131,440 | NSR | NJF | NSR | Standard | PM | ETECHS | PRO | - | - | PRO | MS4 |
| NJF-P1060 |  | Shipping and customs clearance - Al Jouf |  | 22d | 2029-01-16 | 2029-02-21 | NJF-P1050 | 56d | 0d | Contract cost (BOQ x payment milestones) [102685 SAR]; Progress weight (fair EPC distribution, SAR value) [262880 SAR] | 262,880 | NSR | NJF | NSR | Standard | PM | Vendor | PRO | - | - | PRO | MS4 |
| NJF-P1070 |  | Delivery to station and receiving inspection - Al Jouf |  | 5d | 2029-02-25 | 2029-03-01 | NJF-P1060 | 56d | 0d | Contract cost (BOQ x payment milestones) [34228 SAR]; Progress weight (fair EPC distribution, SAR value) [131440 SAR] | 131,440 | NSR | NJF | NSR | Standard | PM | ETECHS | PRO | - | - | PRO | MS4 |
|  | NQR | **Al Qurayyat (NSR)** |  |  | 2028-12-17 | 2029-04-19 |  |  |  |  |  |  |  |  |  |  |  |  |  |  |  |  |
| NQR-P1100 |  | MS4 Material delivered (20%) - Al Qurayyat | milestone | 0d | 2029-04-19 | 2029-04-19 | NQR-P1070 | 21d | 0d |  |  | NSR | NQR | NSR | Standard | PM | ETECHS | MS | - | - | MS | MS4 |
|  | CCT | **CCTV system** |  |  | 2028-12-17 | 2029-02-27 |  |  |  |  |  |  |  |  |  |  |  |  |  |  |  |  |
| NQR-P1010 |  | Manufacture CCTV cameras and analytics - Al Qurayyat |  | 47d | 2028-12-17 | 2029-02-27 | NQR-E1210 | 21d | 0d | Contract cost (BOQ x payment milestones) [104169 SAR]; Progress weight (fair EPC distribution, SAR value) [159960 SAR] | 159,960 | NSR | NQR | NSR | Standard | CCTV | Vendor | PRO | - | - | PRO | MS4 |
|  | VMS | **Video management and video wall** |  |  | 2028-12-17 | 2029-02-27 |  |  |  |  |  |  |  |  |  |  |  |  |  |  |  |  |
| NQR-P1020 |  | Manufacture video management servers, storage and video wall - Al Qurayyat |  | 47d | 2028-12-17 | 2029-02-27 | NQR-E1210 | 21d | 0d | Contract cost (BOQ x payment milestones) [110385 SAR]; Progress weight (fair EPC distribution, SAR value) [169260 SAR] | 169,260 | NSR | NQR | NSR | Standard | VMS | Vendor | PRO | - | - | PRO | MS4 |
|  | ACC | **Access control and intercom** |  |  | 2028-12-17 | 2029-02-27 |  |  |  |  |  |  |  |  |  |  |  |  |  |  |  |  |
| NQR-P1030 |  | Manufacture access control and intercom equipment - Al Qurayyat |  | 47d | 2028-12-17 | 2029-02-27 | NQR-E1210 | 21d | 0d | Contract cost (BOQ x payment milestones) [13547 SAR]; Progress weight (fair EPC distribution, SAR value) [21080 SAR] | 21,080 | NSR | NQR | NSR | Standard | ACC | Vendor | PRO | - | - | PRO | MS4 |
|  | UPN | **UPS, network and cabinets** |  |  | 2028-12-17 | 2029-02-27 |  |  |  |  |  |  |  |  |  |  |  |  |  |  |  |  |
| NQR-P1040 |  | Manufacture UPS, network switches and field cabinets - Al Qurayyat |  | 47d | 2028-12-17 | 2029-02-27 | NQR-E1210 | 21d | 0d | Contract cost (BOQ x payment milestones) [281736 SAR]; Progress weight (fair EPC distribution, SAR value) [432760 SAR] | 432,760 | NSR | NQR | NSR | Standard | UPSNET | Vendor | PRO | - | - | PRO | MS4 |
|  | LOG | **FAT and logistics** |  |  | 2029-02-28 | 2029-04-19 |  |  |  |  |  |  |  |  |  |  |  |  |  |  |  |  |
| NQR-P1050 |  | Factory acceptance test at vendor premises - Al Qurayyat |  | 10d | 2029-02-28 | 2029-03-13 | NQR-P1010, NQR-P1020, NQR-P1030, NQR-P1040 | 21d | 0d | Contract cost (BOQ x payment milestones) [33989 SAR]; Progress weight (fair EPC distribution, SAR value) [130820 SAR] | 130,820 | NSR | NQR | NSR | Standard | PM | ETECHS | PRO | - | - | PRO | MS4 |
| NQR-P1060 |  | Shipping and customs clearance - Al Qurayyat |  | 22d | 2029-03-14 | 2029-04-12 | NQR-P1050 | 21d | 0d | Contract cost (BOQ x payment milestones) [101967 SAR]; Progress weight (fair EPC distribution, SAR value) [261020 SAR] | 261,020 | NSR | NQR | NSR | Standard | PM | Vendor | PRO | - | - | PRO | MS4 |
| NQR-P1070 |  | Delivery to station and receiving inspection - Al Qurayyat |  | 5d | 2029-04-15 | 2029-04-19 | NQR-P1060 | 21d | 0d | Contract cost (BOQ x payment milestones) [33989 SAR]; Progress weight (fair EPC distribution, SAR value) [130820 SAR] | 130,820 | NSR | NQR | NSR | Standard | PM | ETECHS | PRO | - | - | PRO | MS4 |
|  | CON | **Construction** |  |  | 2027-03-01 | 2029-06-27 |  |  |  |  |  |  |  |  |  |  |  |  |  |  |  |  |
|  | NRY | **Riyadh (Thumamah) (NSR)** |  |  | 2027-03-01 | 2027-11-03 |  |  |  |  |  |  |  |  |  |  |  |  |  |  |  |  |
| NRY-C2100 |  | MS5 Installation complete (20%) - Riyadh (Thumamah) | milestone | 0d | 2027-11-03 | 2027-11-03 | NRY-C2020, NRY-C2030, NRY-C2040, NRY-C2050, NRY-C1020 | 430d | 0d |  |  | NSR | NRY | NSR | Priority 1 | PM | ETECHS | MS | - | - | MS | MS5 |

| ID | WBS | Activity | Type | Duration | Start | Finish | Predecessors | Total float | Free float | Resources | Cost | Area | Station | Railway | Priority | EPC phase | Design stage | Submittal or approval | Responsibility | Discipline | Programme phase | Payment milestone |
| --- | --- | --- | --- | --- | --- | --- | --- | --- | --- | --- | --- | --- | --- | --- | --- | --- | --- | --- | --- | --- | --- | --- |
|  | ENA | **Enabling works** |  |  | 2027-03-01 | 2027-04-11 |  |  |  |  |  |  |  |  |  |  |  |  |  |  |  |  |
| NRY-X1010 |  | Enabling works: site preparation, setting out, temporary works and utilities clearance - Riyadh (Thumamah) |  | 10d | 2027-03-01 | 2027-03-21 | PRJ-M1150 FS+40d | 472d | 0d | Contract cost (BOQ x payment milestones) [8432 SAR]; Progress weight (fair EPC distribution, SAR value) [33480 SAR] | 33,480 | NSR | NRY | NSR | Priority 1 | CON | - | - | ETECHS | CIVIL | ENA | MS5 |
| NRY-X1020 |  | Enabling works: cable routes, duct-bank and cabinet plinth preparation - Riyadh (Thumamah) |  | 15d | 2027-03-22 | 2027-04-11 | NRY-X1010 | 472d | 0d | Contract cost (BOQ x payment milestones) [12648 SAR]; Progress weight (fair EPC distribution, SAR value) [50220 SAR] | 50,220 | NSR | NRY | NSR | Priority 1 | CON | - | - | ETECHS | CIVIL | ENA | MS5 |
|  | CIV | **Civil works** |  |  | 2027-04-12 | 2027-08-10 |  |  |  |  |  |  |  |  |  |  |  |  |  |  |  |  |
| NRY-C1010 |  | Civil: platform trenches and duct banks - Riyadh (Thumamah) |  | 57d | 2027-04-12 | 2027-07-06 | NRY-X1020 | 472d | 0d | Contract cost (BOQ x payment milestones) [105400 SAR]; Progress weight (fair EPC distribution, SAR value) [217000 SAR] | 217,000 | NSR | NRY | NSR | Priority 1 | CON | - | - | ETECHS | CIVIL | CON | MS5 |
| NRY-C1020 |  | Civil: camera and ALPR pole foundations and poles - Riyadh (Thumamah) |  | 45d | 2027-06-09 | 2027-08-10 | NRY-C1010 SS+37d | 472d | 42d | Contract cost (BOQ x payment milestones) [84320 SAR]; Progress weight (fair EPC distribution, SAR value) [166780 SAR] | 166,780 | NSR | NRY | NSR | Priority 1 | CON | - | - | ETECHS | CIVIL | CON | MS5 |
|  | INS | **Installation** |  |  | 2027-09-02 | 2027-11-03 |  |  |  |  |  |  |  |  |  |  |  |  |  |  |  |  |
| NRY-C2010 |  | Install UPS, network switches and field cabinets - Riyadh (Thumamah) |  | 13d | 2027-09-02 | 2027-09-20 | NRY-P1100 | 430d | 0d | Contract cost (BOQ x payment milestones) [97072 SAR]; Progress weight (fair EPC distribution, SAR value) [100440 SAR] | 100,440 | NSR | NRY | NSR | Priority 1 | CON | - | - | ETECHS | UPSNET | CON | MS5 |
| NRY-C2020 |  | Cabling and termination (power, fibre, data) - Riyadh (Thumamah) |  | 22d | 2027-09-08 | 2027-10-10 | NRY-C2010 SS+4d, NRY-C1010 SS+41d | 430d | 0d | Contract cost (BOQ x payment milestones) [145607 SAR]; Progress weight (fair EPC distribution, SAR value) [200260 SAR] | 200,260 | NSR | NRY | NSR | Priority 1 | CON | - | - | ETECHS | CCTV | CON | MS5 |
| NRY-C2040 |  | Install video management, video wall and control-room equipment - Riyadh (Thumamah) |  | 15d | 2027-09-21 | 2027-10-12 | NRY-C2010 | 446d | 16d | Contract cost (BOQ x payment milestones) [72804 SAR]; Progress weight (fair EPC distribution, SAR value) [100440 SAR] | 100,440 | NSR | NRY | NSR | Priority 1 | CON | - | - | ETECHS | VMS | CON | MS5 |
| NRY-C2050 |  | Install access control and intercom - Riyadh (Thumamah) |  | 13d | 2027-09-28 | 2027-10-14 | NRY-C2010 FS+4d | 444d | 14d | Contract cost (BOQ x payment milestones) [48536 SAR]; Progress weight (fair EPC distribution, SAR value) [66960 SAR] | 66,960 | NSR | NRY | NSR | Priority 1 | CON | - | - | ETECHS | ACC | CON | MS5 |
| NRY-C2030 |  | Install and aim CCTV cameras - Riyadh (Thumamah) |  | 18d | 2027-10-11 | 2027-11-03 | NRY-C2020, NRY-C1020 | 430d | 0d | Contract cost (BOQ x payment milestones) [121339 SAR]; Progress weight (fair EPC distribution, SAR value) [166780 SAR] | 166,780 | NSR | NRY | NSR | Priority 1 | CON | - | - | ETECHS | CCTV | CON | MS5 |
|  | HMK | **Makkah (HHR)** |  |  | 2027-03-01 | 2028-03-07 |  |  |  |  |  |  |  |  |  |  |  |  |  |  |  |  |
| HMK-C2100 |  | MS5 Installation complete (20%) - Makkah | milestone | 0d | 2028-03-07 | 2028-03-07 | HMK-C2020, HMK-C2030, HMK-C2040, HMK-C2050, HMK-C1020 | 329d | 0d |  |  | HHR | HMK | HHR | Priority 1 | MS | - | - | ETECHS | PM | MS | MS5 |
|  | ENA | **Enabling works** |  |  | 2027-03-01 | 2027-04-11 |  |  |  |  |  |  |  |  |  |  |  |  |  |  |  |  |
| HMK-X1010 |  | Enabling works: site preparation, setting out, temporary works and utilities clearance - Makkah |  | 10d | 2027-03-01 | 2027-03-21 | PRJ-M1150 FS+40d | 448d | 0d | Contract cost (BOQ x payment milestones) [7867 SAR]; Progress weight (fair EPC distribution, SAR value) [93000 SAR] | 93,000 | HHR | HMK | HHR | Priority 1 | CON | - | - | ETECHS | CIVIL | ENA | MS5 |
| HMK-X1020 |  | Enabling works: cable routes, duct-bank and cabinet plinth preparation - Makkah |  | 15d | 2027-03-22 | 2027-04-11 | HMK-X1010 | 448d | 0d | Contract cost (BOQ x payment milestones) [11800 SAR]; Progress weight (fair EPC distribution, SAR value) [140120 SAR] | 140,120 | HHR | HMK | HHR | Priority 1 | CON | - | - | ETECHS | CIVIL | ENA | MS5 |
|  | CIV | **Civil works** |  |  | 2027-04-12 | 2027-07-21 |  |  |  |  |  |  |  |  |  |  |  |  |  |  |  |  |
| HMK-C1010 |  | Civil: platform trenches and duct banks - Makkah |  | 48d | 2027-04-12 | 2027-06-23 | HMK-X1020 | 448d | 0d | Contract cost (BOQ x payment milestones) [98335 SAR]; Progress weight (fair EPC distribution, SAR value) [605740 SAR] | 605,740 | HHR | HMK | HHR | Priority 1 | CON | - | - | ETECHS | CIVIL | CON | MS5 |
| HMK-C1020 |  | Civil: camera and ALPR pole foundations and poles - Makkah |  | 37d | 2027-06-01 | 2027-07-21 | HMK-C1010 SS+31d | 455d | 126d | Contract cost (BOQ x payment milestones) [78668 SAR]; Progress weight (fair EPC distribution, SAR value) [466240 SAR] | 466,240 | HHR | HMK | HHR | Priority 1 | CON | - | - | ETECHS | CIVIL | CON | MS5 |
|  | INS | **Installation** |  |  | 2027-11-09 | 2028-03-07 |  |  |  |  |  |  |  |  |  |  |  |  |  |  |  |  |
| HMK-C2010 |  | Install UPS, network switches and field cabinets - Makkah |  | 24d | 2027-11-09 | 2027-12-12 | HMK-P1100 | 329d | 0d | Contract cost (BOQ x payment milestones) [349070 SAR]; Progress weight (fair EPC distribution, SAR value) [279620 SAR] | 279,620 | HHR | HMK | HHR | Priority 1 | CON | - | - | ETECHS | UPSNET | CON | MS5 |
| HMK-C2020 |  | Cabling and termination (power, fibre, data) - Makkah |  | 41d | 2027-11-21 | 2028-01-16 | HMK-C2010 SS+8d, HMK-C1010 SS+34d | 329d | 0d | Contract cost (BOQ x payment milestones) [523604 SAR]; Progress weight (fair EPC distribution, SAR value) [559240 SAR] | 559,240 | HHR | HMK | HHR | Priority 1 | CON | - | - | ETECHS | CCTV | CON | MS5 |
| HMK-C2040 |  | Install video management, video wall and control-room equipment - Makkah |  | 28d | 2027-12-13 | 2028-01-19 | HMK-C2010 | 358d | 29d | Contract cost (BOQ x payment milestones) [261802 SAR]; Progress weight (fair EPC distribution, SAR value) [279620 SAR] | 279,620 | HHR | HMK | HHR | Priority 1 | CON | - | - | ETECHS | VMS | CON | MS5 |
| HMK-C2050 |  | Install access control and intercom - Makkah |  | 24d | 2027-12-23 | 2028-01-25 | HMK-C2010 FS+8d | 354d | 25d | Contract cost (BOQ x payment milestones) [174535 SAR]; Progress weight (fair EPC distribution, SAR value) [186620 SAR] | 186,620 | HHR | HMK | HHR | Priority 1 | CON | - | - | ETECHS | ACC | CON | MS5 |
| HMK-C2030 |  | Install and aim CCTV cameras - Makkah |  | 32d | 2028-01-17 | 2028-03-07 | HMK-C2020, HMK-C1020 | 329d | 0d | Contract cost (BOQ x payment milestones) [436337 SAR]; Progress weight (fair EPC distribution, SAR value) [466240 SAR] | 466,240 | HHR | HMK | HHR | Priority 1 | CON | - | - | ETECHS | CCTV | CON | MS5 |

| ID | WBS | Activity | Type | Duration | Start | Finish | Predecessors | Total float | Free float | Resources | Cost | Area | Station | Railway | Priority | EPC phase | Discipline | Responsibility | Design stage | Submittal or approval | Payment milestone | Programme phase |
| --- | --- | --- | --- | --- | --- | --- | --- | --- | --- | --- | --- | --- | --- | --- | --- | --- | --- | --- | --- | --- | --- | --- |
|  | ERY | **Riyadh (Malaz) (EWR)** |  |  | 2027-03-01 | 2027-10-18 |  |  |  |  |  |  |  |  |  |  |  |  |  |  |  |  |
| ERY-C2100 |  | MS5 Installation complete (20%) - Riyadh (Malaz) | milestone | 0d | 2027-10-18 | 2027-10-18 | ERY-C2020, ERY-C2030, ERY-C2040, ERY-C2050, ERY-C1020 | 443d | 0d |  |  | EWR | ERY | EWR | Priority 2 | MS | PM | ETECHS | - | - | MS5 | MS |
|  | ENA | **Enabling works** |  |  | 2027-03-01 | 2027-03-28 |  |  |  |  |  |  |  |  |  |  |  |  |  |  |  |  |
| ERY-X1010 |  | Enabling works: site preparation, setting out, temporary works and utilities clearance - Riyadh (Malaz) |  | 5d | 2027-03-01 | 2027-03-14 | ERY-E1010 SS+40d | 490d | 0d | Contract cost (BOQ x payment milestones) [8803 SAR]; Progress weight (fair EPC distribution, SAR value) [29760 SAR] | 29,760 | EWR | ERY | EWR | Priority 2 | CON | CIVIL | ETECHS | - | - | MS5 | ENA |
| ERY-X1020 |  | Enabling works: cable routes, duct-bank and cabinet plinth preparation - Riyadh (Malaz) |  | 10d | 2027-03-15 | 2027-03-28 | ERY-X1010 | 490d | 0d | Contract cost (BOQ x payment milestones) [13205 SAR]; Progress weight (fair EPC distribution, SAR value) [44640 SAR] | 44,640 | EWR | ERY | EWR | Priority 2 | CON | CIVIL | ETECHS | - | - | MS5 | ENA |
|  | CIV | **Civil works** |  |  | 2027-03-29 | 2027-07-21 |  |  |  |  |  |  |  |  |  |  |  |  |  |  |  |  |
| ERY-C1010 |  | Civil: platform trenches and duct banks - Riyadh (Malaz) |  | 55d | 2027-03-29 | 2027-06-20 | ERY-X1020 | 490d | 0d | Contract cost (BOQ x payment milestones) [110038 SAR]; Progress weight (fair EPC distribution, SAR value) [192820 SAR] | 192,820 | EWR | ERY | EWR | Priority 2 | CON | CIVIL | ETECHS | - | - | MS5 | CON |
| ERY-C1020 |  | Civil: camera and ALPR pole foundations and poles - Riyadh (Malaz) |  | 43d | 2027-05-24 | 2027-07-21 | ERY-C1010 SS+35d | 490d | 47d | Contract cost (BOQ x payment milestones) [88030 SAR]; Progress weight (fair EPC distribution, SAR value) [148180 SAR] | 148,180 | EWR | ERY | EWR | Priority 2 | CON | CIVIL | ETECHS | - | - | MS5 | CON |
|  | INS | **Installation** |  |  | 2027-08-25 | 2027-10-18 |  |  |  |  |  |  |  |  |  |  |  |  |  |  |  |  |
| ERY-C2010 |  | Install UPS, network switches and field cabinets - Riyadh (Malaz) |  | 11d | 2027-08-25 | 2027-09-08 | ERY-P1100 | 443d | 0d | Contract cost (BOQ x payment milestones) [79646 SAR]; Progress weight (fair EPC distribution, SAR value) [89280 SAR] | 89,280 | EWR | ERY | EWR | Priority 2 | CON | UPSNET | ETECHS | - | - | MS5 | CON |
| ERY-C2020 |  | Cabling and termination (power, fibre, data) - Riyadh (Malaz) |  | 19d | 2027-08-31 | 2027-09-27 | ERY-C2010 SS+4d, ERY-C1010 SS+39d | 443d | 0d | Contract cost (BOQ x payment milestones) [119468 SAR]; Progress weight (fair EPC distribution, SAR value) [177940 SAR] | 177,940 | EWR | ERY | EWR | Priority 2 | CON | CCTV | ETECHS | - | - | MS5 | CON |
| ERY-C2040 |  | Install video management, video wall and control-room equipment - Riyadh (Malaz) |  | 13d | 2027-09-09 | 2027-09-28 | ERY-C2010 | 457d | 14d | Contract cost (BOQ x payment milestones) [59734 SAR]; Progress weight (fair EPC distribution, SAR value) [89280 SAR] | 89,280 | EWR | ERY | EWR | Priority 2 | CON | VMS | ETECHS | - | - | MS5 | CON |
| ERY-C2050 |  | Install access control and intercom - Riyadh (Malaz) |  | 11d | 2027-09-15 | 2027-09-30 | ERY-C2010 FS+4d | 455d | 12d | Contract cost (BOQ x payment milestones) [39823 SAR]; Progress weight (fair EPC distribution, SAR value) [59520 SAR] | 59,520 | EWR | ERY | EWR | Priority 2 | CON | ACC | ETECHS | - | - | MS5 | CON |
| ERY-C2030 |  | Install and aim CCTV cameras - Riyadh (Malaz) |  | 15d | 2027-09-28 | 2027-10-18 | ERY-C2020, ERY-C1020 | 443d | 0d | Contract cost (BOQ x payment milestones) [99557 SAR]; Progress weight (fair EPC distribution, SAR value) [148180 SAR] | 148,180 | EWR | ERY | EWR | Priority 2 | CON | CCTV | ETECHS | - | - | MS5 | CON |
|  | HJD | **Jeddah (HHR)** |  |  | 2027-06-02 | 2028-05-16 |  |  |  |  |  |  |  |  |  |  |  |  |  |  |  |  |
| HJD-C2100 |  | MS5 Installation complete (20%) - Jeddah | milestone | 0d | 2028-05-16 | 2028-05-16 | HJD-C2020, HJD-C2030, HJD-C2040, HJD-C2050, HJD-C1020 | 288d | 0d |  |  | HHR | HJD | HHR | Standard | MS | PM | ETECHS | - | - | MS5 | MS |
|  | ENA | **Enabling works** |  |  | 2027-06-02 | 2027-06-22 |  |  |  |  |  |  |  |  |  |  |  |  |  |  |  |  |
| HJD-X1010 |  | Enabling works: site preparation, setting out, temporary works and utilities clearance - Jeddah |  | 5d | 2027-06-02 | 2027-06-08 | HJD-E1010 SS+42d | 419d | 0d | Contract cost (BOQ x payment milestones) [7180 SAR]; Progress weight (fair EPC distribution, SAR value) [91760 SAR] | 91,760 | HHR | HJD | HHR | Standard | CON | CIVIL | ETECHS | - | - | MS5 | ENA |
| HJD-X1020 |  | Enabling works: cable routes, duct-bank and cabinet plinth preparation - Jeddah |  | 10d | 2027-06-09 | 2027-06-22 | HJD-X1010 | 419d | 0d | Contract cost (BOQ x payment milestones) [10770 SAR]; Progress weight (fair EPC distribution, SAR value) [137640 SAR] | 137,640 | HHR | HJD | HHR | Standard | CON | CIVIL | ETECHS | - | - | MS5 | ENA |
|  | CIV | **Civil works** |  |  | 2027-06-23 | 2027-09-19 |  |  |  |  |  |  |  |  |  |  |  |  |  |  |  |  |
| HJD-C1010 |  | Civil: platform trenches and duct banks - Jeddah |  | 44d | 2027-06-23 | 2027-08-23 | HJD-X1020 | 419d | 0d | Contract cost (BOQ x payment milestones) [89747 SAR]; Progress weight (fair EPC distribution, SAR value) [595820 SAR] | 595,820 | HHR | HJD | HHR | Standard | CON | CIVIL | ETECHS | - | - | MS5 | CON |
| HJD-C1020 |  | Civil: camera and ALPR pole foundations and poles - Jeddah |  | 35d | 2027-08-02 | 2027-09-19 | HJD-C1010 SS+28d | 422d | 134d | Contract cost (BOQ x payment milestones) [71798 SAR]; Progress weight (fair EPC distribution, SAR value) [458180 SAR] | 458,180 | HHR | HJD | HHR | Standard | CON | CIVIL | ETECHS | - | - | MS5 | CON |
|  | INS | **Installation** |  |  | 2028-01-30 | 2028-05-16 |  |  |  |  |  |  |  |  |  |  |  |  |  |  |  |  |
| HJD-C2010 |  | Install UPS, network switches and field cabinets - Jeddah |  | 20d | 2028-01-30 | 2028-03-02 | HJD-P1100 | 288d | 0d | Contract cost (BOQ x payment milestones) [346136 SAR]; Progress weight (fair EPC distribution, SAR value) [275280 SAR] | 275,280 | HHR | HJD | HHR | Standard | CON | UPSNET | ETECHS | - | - | MS5 | CON |
| HJD-C2020 |  | Cabling and termination (power, fibre, data) - Jeddah |  | 34d | 2028-02-08 | 2028-04-02 | HJD-C2010 SS+7d, HJD-C1010 SS+32d | 288d | 0d | Contract cost (BOQ x payment milestones) [519205 SAR]; Progress weight (fair EPC distribution, SAR value) [549940 SAR] | 549,940 | HHR | HJD | HHR | Standard | CON | CCTV | ETECHS | - | - | MS5 | CON |
| HJD-C2040 |  | Install video management, video wall and control-room equipment - Jeddah |  | 24d | 2028-03-05 | 2028-04-05 | HJD-C2010 | 312d | 24d | Contract cost (BOQ x payment milestones) [259602 SAR]; Progress weight (fair EPC distribution, SAR value) [275280 SAR] | 275,280 | HHR | HJD | HHR | Standard | CON | VMS | ETECHS | - | - | MS5 | CON |
| HJD-C2050 |  | Install access control and intercom - Jeddah |  | 20d | 2028-03-14 | 2028-04-10 | HJD-C2010 FS+7d | 309d | 21d | Contract cost (BOQ x payment milestones) [173068 SAR]; Progress weight (fair EPC distribution, SAR value) [183520 SAR] | 183,520 | HHR | HJD | HHR | Standard | CON | ACC | ETECHS | - | - | MS5 | CON |
| HJD-C2030 |  | Install and aim CCTV cameras - Jeddah |  | 27d | 2028-04-03 | 2028-05-16 | HJD-C2020, HJD-C1020 | 288d | 0d | Contract cost (BOQ x payment milestones) [432670 SAR]; Progress weight (fair EPC distribution, SAR value) [458180 SAR] | 458,180 | HHR | HJD | HHR | Standard | CON | CCTV | ETECHS | - | - | MS5 | CON |

| ID | WBS | Activity | Type | Duration | Start | Finish | Predecessors | Total float | Free float | Resources | Cost | Area | Station | Railway | Priority | EPC phase | Discipline | Responsibility | Design stage | Submittal or approval | Payment milestone | Programme phase |
| --- | --- | --- | --- | --- | --- | --- | --- | --- | --- | --- | --- | --- | --- | --- | --- | --- | --- | --- | --- | --- | --- | --- |
|  | EDM | **Dammam (EWR)** |  |  | 2027-08-16 | 2028-04-02 |  |  |  |  |  |  |  |  |  |  |  |  |  |  |  |  |
| EDM-C2100 |  | MS5 Installation complete (20%) - Dammam | milestone | 0d | 2028-04-02 | 2028-04-02 | EDM-C2020, EDM-C2030, EDM-C2040, EDM-C2050, EDM-C1020 | 329d | 0d |  |  | EWR | EDM | EWR | Standard | MS | PM | ETECHS | - | - | MS5 | MS |
|  | ENA | **Enabling works** |  |  | 2027-08-16 | 2027-09-05 |  |  |  |  |  |  |  |  |  |  |  |  |  |  |  |  |
| EDM-X1010 |  | Enabling works: site preparation, setting out, temporary works and utilities clearance - Dammam |  | 5d | 2027-08-16 | 2027-08-22 | EDM-E1010 SS+42d | 380d | 0d | Contract cost (BOQ x payment milestones) [8803 SAR]; Progress weight (fair EPC distribution, SAR value) [30380 SAR] | 30,380 | EWR | EDM | EWR | Standard | CON | CIVIL | ETECHS | - | - | MS5 | ENA |
| EDM-X1020 |  | Enabling works: cable routes, duct-bank and cabinet plinth preparation - Dammam |  | 10d | 2027-08-23 | 2027-09-05 | EDM-X1010 | 380d | 0d | Contract cost (BOQ x payment milestones) [13204 SAR]; Progress weight (fair EPC distribution, SAR value) [45880 SAR] | 45,880 | EWR | EDM | EWR | Standard | CON | CIVIL | ETECHS | - | - | MS5 | ENA |
|  | CIV | **Civil works** |  |  | 2027-09-06 | 2027-12-23 |  |  |  |  |  |  |  |  |  |  |  |  |  |  |  |  |
| EDM-C1010 |  | Civil: platform trenches and duct banks - Dammam |  | 55d | 2027-09-06 | 2027-11-22 | EDM-X1020 | 380d | 0d | Contract cost (BOQ x payment milestones) [110036 SAR]; Progress weight (fair EPC distribution, SAR value) [199020 SAR] | 199,020 | EWR | EDM | EWR | Standard | CON | CIVIL | ETECHS | - | - | MS5 | CON |
| EDM-C1020 |  | Civil: camera and ALPR pole foundations and poles - Dammam |  | 43d | 2027-10-26 | 2027-12-23 | EDM-C1010 SS+35d | 380d | 51d | Contract cost (BOQ x payment milestones) [88029 SAR]; Progress weight (fair EPC distribution, SAR value) [153140 SAR] | 153,140 | EWR | EDM | EWR | Standard | CON | CIVIL | ETECHS | - | - | MS5 | CON |
|  | INS | **Installation** |  |  | 2028-02-02 | 2028-04-02 |  |  |  |  |  |  |  |  |  |  |  |  |  |  |  |  |
| EDM-C2010 |  | Install UPS, network switches and field cabinets - Dammam |  | 11d | 2028-02-02 | 2028-02-16 | EDM-P1100 | 329d | 0d | Contract cost (BOQ x payment milestones) [83486 SAR]; Progress weight (fair EPC distribution, SAR value) [91760 SAR] | 91,760 | EWR | EDM | EWR | Standard | CON | UPSNET | ETECHS | - | - | MS5 | CON |
| EDM-C2020 |  | Cabling and termination (power, fibre, data) - Dammam |  | 19d | 2028-02-08 | 2028-03-12 | EDM-C2010 SS+4d, EDM-C1010 SS+39d | 329d | 0d | Contract cost (BOQ x payment milestones) [125229 SAR]; Progress weight (fair EPC distribution, SAR value) [183520 SAR] | 183,520 | EWR | EDM | EWR | Standard | CON | CCTV | ETECHS | - | - | MS5 | CON |
| EDM-C2040 |  | Install video management, video wall and control-room equipment - Dammam |  | 13d | 2028-02-17 | 2028-03-13 | EDM-C2010 | 343d | 14d | Contract cost (BOQ x payment milestones) [62615 SAR]; Progress weight (fair EPC distribution, SAR value) [91760 SAR] | 91,760 | EWR | EDM | EWR | Standard | CON | VMS | ETECHS | - | - | MS5 | CON |
| EDM-C2050 |  | Install access control and intercom - Dammam |  | 11d | 2028-03-01 | 2028-03-15 | EDM-C2010 FS+4d | 341d | 12d | Contract cost (BOQ x payment milestones) [41743 SAR]; Progress weight (fair EPC distribution, SAR value) [61380 SAR] | 61,380 | EWR | EDM | EWR | Standard | CON | ACC | ETECHS | - | - | MS5 | CON |
| EDM-C2030 |  | Install and aim CCTV cameras - Dammam |  | 15d | 2028-03-13 | 2028-04-02 | EDM-C2020, EDM-C1020 | 329d | 0d | Contract cost (BOQ x payment milestones) [104358 SAR]; Progress weight (fair EPC distribution, SAR value) [153140 SAR] | 153,140 | EWR | EDM | EWR | Standard | CON | CCTV | ETECHS | - | - | MS5 | CON |
|  | NQS | **Al Qassim (NSR)** |  |  | 2027-10-10 | 2028-06-20 |  |  |  |  |  |  |  |  |  |  |  |  |  |  |  |  |
| NQS-C2100 |  | MS5 Installation complete (20%) - Al Qassim | milestone | 0d | 2028-06-20 | 2028-06-20 | NQS-C2020, NQS-C2030, NQS-C2040, NQS-C2050, NQS-C1020 | 276d | 0d |  |  | NSR | NQS | NSR | Standard | MS | PM | ETECHS | - | - | MS5 | MS |
|  | ENA | **Enabling works** |  |  | 2027-10-10 | 2027-10-28 |  |  |  |  |  |  |  |  |  |  |  |  |  |  |  |  |
| NQS-X1010 |  | Enabling works: site preparation, setting out, temporary works and utilities clearance - Al Qassim |  | 5d | 2027-10-10 | 2027-10-14 | NQS-E1010 SS+42d | 334d | 0d | Contract cost (BOQ x payment milestones) [8432 SAR]; Progress weight (fair EPC distribution, SAR value) [32860 SAR] | 32,860 | NSR | NQS | NSR | Standard | CON | CIVIL | ETECHS | - | - | MS5 | ENA |
| NQS-X1020 |  | Enabling works: cable routes, duct-bank and cabinet plinth preparation - Al Qassim |  | 10d | 2027-10-17 | 2027-10-28 | NQS-X1010 | 334d | 0d | Contract cost (BOQ x payment milestones) [12648 SAR]; Progress weight (fair EPC distribution, SAR value) [48980 SAR] | 48,980 | NSR | NQS | NSR | Standard | CON | CIVIL | ETECHS | - | - | MS5 | ENA |
|  | CIV | **Civil works** |  |  | 2027-10-31 | 2028-02-28 |  |  |  |  |  |  |  |  |  |  |  |  |  |  |  |  |
| NQS-C1010 |  | Civil: platform trenches and duct banks - Al Qassim |  | 57d | 2027-10-31 | 2028-01-17 | NQS-X1020 | 334d | 0d | Contract cost (BOQ x payment milestones) [105400 SAR]; Progress weight (fair EPC distribution, SAR value) [212040 SAR] | 212,040 | NSR | NQS | NSR | Standard | CON | CIVIL | ETECHS | - | - | MS5 | CON |
| NQS-C1020 |  | Civil: camera and ALPR pole foundations and poles - Al Qassim |  | 45d | 2027-12-21 | 2028-02-28 | NQS-C1010 SS+37d | 334d | 58d | Contract cost (BOQ x payment milestones) [84320 SAR]; Progress weight (fair EPC distribution, SAR value) [163060 SAR] | 163,060 | NSR | NQS | NSR | Standard | CON | CIVIL | ETECHS | - | - | MS5 | CON |
|  | INS | **Installation** |  |  | 2028-04-13 | 2028-06-20 |  |  |  |  |  |  |  |  |  |  |  |  |  |  |  |  |
| NQS-C2010 |  | Install UPS, network switches and field cabinets - Al Qassim |  | 13d | 2028-04-13 | 2028-05-08 | NQS-P1100 | 276d | 0d | Contract cost (BOQ x payment milestones) [93797 SAR]; Progress weight (fair EPC distribution, SAR value) [97960 SAR] | 97,960 | NSR | NQS | NSR | Standard | CON | UPSNET | ETECHS | - | - | MS5 | CON |
| NQS-C2020 |  | Cabling and termination (power, fibre, data) - Al Qassim |  | 22d | 2028-04-19 | 2028-05-25 | NQS-C2010 SS+4d, NQS-C1010 SS+41d | 276d | 0d | Contract cost (BOQ x payment milestones) [140695 SAR]; Progress weight (fair EPC distribution, SAR value) [195920 SAR] | 195,920 | NSR | NQS | NSR | Standard | CON | CCTV | ETECHS | - | - | MS5 | CON |
| NQS-C2040 |  | Install video management, video wall and control-room equipment - Al Qassim |  | 15d | 2028-05-09 | 2028-05-29 | NQS-C2010 | 292d | 16d | Contract cost (BOQ x payment milestones) [70348 SAR]; Progress weight (fair EPC distribution, SAR value) [97960 SAR] | 97,960 | NSR | NQS | NSR | Standard | CON | VMS | ETECHS | - | - | MS5 | CON |
| NQS-C2050 |  | Install access control and intercom - Al Qassim |  | 13d | 2028-05-15 | 2028-05-31 | NQS-C2010 FS+4d | 290d | 14d | Contract cost (BOQ x payment milestones) [46898 SAR]; Progress weight (fair EPC distribution, SAR value) [65100 SAR] | 65,100 | NSR | NQS | NSR | Standard | CON | ACC | ETECHS | - | - | MS5 | CON |
| NQS-C2030 |  | Install and aim CCTV cameras - Al Qassim |  | 18d | 2028-05-28 | 2028-06-20 | NQS-C2020, NQS-C1020 | 276d | 0d | Contract cost (BOQ x payment milestones) [117246 SAR]; Progress weight (fair EPC distribution, SAR value) [163060 SAR] | 163,060 | NSR | NQS | NSR | Standard | CON | CCTV | ETECHS | - | - | MS5 | CON |

| ID | WBS | Activity | Type | Duration | Start | Finish | Predecessors | Total float | Free float | Resources | Cost | Area | Station | Railway | Priority | EPC phase | Discipline | Responsibility | Design stage | Submittal or approval | Payment milestone | Programme phase |
| --- | --- | --- | --- | --- | --- | --- | --- | --- | --- | --- | --- | --- | --- | --- | --- | --- | --- | --- | --- | --- | --- | --- |
|  | EHF | **Hufuf (EWR)** |  |  | 2027-10-10 | 2028-05-29 |  |  |  |  |  |  |  |  |  |  |  |  |  |  |  |  |
| EHF-C2100 |  | MS5 Installation complete (20%) - Hufuf | milestone | 0d | 2028-05-29 | 2028-05-29 | EHF-C2020, EHF-C2030, EHF-C2040, EHF-C2050, EHF-C1020 | 293d | 0d |  |  | EWR | EHF | EWR | Standard | MS | PM | ETECHS | - | - | MS5 | MS |
|  | ENA | **Enabling works** |  |  | 2027-10-10 | 2027-10-28 |  |  |  |  |  |  |  |  |  |  |  |  |  |  |  |  |
| EHF-X1010 |  | Enabling works: site preparation, setting out, temporary works and utilities clearance - Hufuf |  | 5d | 2027-10-10 | 2027-10-14 | EHF-E1010 SS+42d | 346d | 0d | Contract cost (BOQ x payment milestones) [8277 SAR]; Progress weight (fair EPC distribution, SAR value) [27280 SAR] | 27,280 | EWR | EHF | EWR | Standard | CON | CIVIL | ETECHS | - | - | MS5 | ENA |
| EHF-X1020 |  | Enabling works: cable routes, duct-bank and cabinet plinth preparation - Hufuf |  | 10d | 2027-10-17 | 2027-10-28 | EHF-X1010 | 346d | 0d | Contract cost (BOQ x payment milestones) [12415 SAR]; Progress weight (fair EPC distribution, SAR value) [40920 SAR] | 40,920 | EWR | EHF | EWR | Standard | CON | CIVIL | ETECHS | - | - | MS5 | ENA |
|  | CIV | **Civil works** |  |  | 2027-10-31 | 2028-02-10 |  |  |  |  |  |  |  |  |  |  |  |  |  |  |  |  |
| EHF-C1010 |  | Civil: platform trenches and duct banks - Hufuf |  | 53d | 2027-10-31 | 2028-01-11 | EHF-X1020 | 346d | 0d | Contract cost (BOQ x payment milestones) [103459 SAR]; Progress weight (fair EPC distribution, SAR value) [176700 SAR] | 176,700 | EWR | EHF | EWR | Standard | CON | CIVIL | ETECHS | - | - | MS5 | CON |
| EHF-C1020 |  | Civil: camera and ALPR pole foundations and poles - Hufuf |  | 41d | 2027-12-16 | 2028-02-10 | EHF-C1010 SS+34d | 346d | 53d | Contract cost (BOQ x payment milestones) [82767 SAR]; Progress weight (fair EPC distribution, SAR value) [135780 SAR] | 135,780 | EWR | EHF | EWR | Standard | CON | CIVIL | ETECHS | - | - | MS5 | CON |
|  | INS | **Installation** |  |  | 2028-04-03 | 2028-05-29 |  |  |  |  |  |  |  |  |  |  |  |  |  |  |  |  |
| EHF-C2010 |  | Install UPS, network switches and field cabinets - Hufuf |  | 11d | 2028-04-03 | 2028-04-17 | EHF-P1100 | 293d | 0d | Contract cost (BOQ x payment milestones) [71756 SAR]; Progress weight (fair EPC distribution, SAR value) [81220 SAR] | 81,220 | EWR | EHF | EWR | Standard | CON | UPSNET | ETECHS | - | - | MS5 | CON |
| EHF-C2020 |  | Cabling and termination (power, fibre, data) - Hufuf |  | 18d | 2028-04-09 | 2028-05-09 | EHF-C2010 SS+4d, EHF-C1010 SS+38d | 293d | 0d | Contract cost (BOQ x payment milestones) [107635 SAR]; Progress weight (fair EPC distribution, SAR value) [163060 SAR] | 163,060 | EWR | EHF | EWR | Standard | CON | CCTV | ETECHS | - | - | MS5 | CON |
| EHF-C2040 |  | Install video management, video wall and control-room equipment - Hufuf |  | 12d | 2028-04-18 | 2028-05-10 | EHF-C2010 | 306d | 13d | Contract cost (BOQ x payment milestones) [53817 SAR]; Progress weight (fair EPC distribution, SAR value) [81220 SAR] | 81,220 | EWR | EHF | EWR | Standard | CON | VMS | ETECHS | - | - | MS5 | CON |
| EHF-C2050 |  | Install access control and intercom - Hufuf |  | 11d | 2028-04-24 | 2028-05-15 | EHF-C2010 FS+4d | 303d | 10d | Contract cost (BOQ x payment milestones) [35878 SAR]; Progress weight (fair EPC distribution, SAR value) [54560 SAR] | 54,560 | EWR | EHF | EWR | Standard | CON | ACC | ETECHS | - | - | MS5 | CON |
| EHF-C2030 |  | Install and aim CCTV cameras - Hufuf |  | 14d | 2028-05-10 | 2028-05-29 | EHF-C2020, EHF-C1020 | 293d | 0d | Contract cost (BOQ x payment milestones) [89695 SAR]; Progress weight (fair EPC distribution, SAR value) [135780 SAR] | 135,780 | EWR | EHF | EWR | Standard | CON | CCTV | ETECHS | - | - | MS5 | CON |
|  | NMJ | **Al Majma'ah (NSR)** |  |  | 2027-11-25 | 2028-08-08 |  |  |  |  |  |  |  |  |  |  |  |  |  |  |  |  |
| NMJ-C2100 |  | MS5 Installation complete (20%) - Al Majma'ah | milestone | 0d | 2028-08-08 | 2028-08-08 | NMJ-C2020, NMJ-C2030, NMJ-C2040, NMJ-C2050, NMJ-C1020 | 241d | 0d |  |  | NSR | NMJ | NSR | Standard | MS | PM | ETECHS | - | - | MS5 | MS |
|  | ENA | **Enabling works** |  |  | 2027-11-25 | 2027-12-15 |  |  |  |  |  |  |  |  |  |  |  |  |  |  |  |  |
| NMJ-X1010 |  | Enabling works: site preparation, setting out, temporary works and utilities clearance - Al Majma'ah |  | 5d | 2027-11-25 | 2027-12-01 | NMJ-E1010 SS+42d | 300d | 0d | Contract cost (BOQ x payment milestones) [8432 SAR]; Progress weight (fair EPC distribution, SAR value) [32860 SAR] | 32,860 | NSR | NMJ | NSR | Standard | CON | CIVIL | ETECHS | - | - | MS5 | ENA |
| NMJ-X1020 |  | Enabling works: cable routes, duct-bank and cabinet plinth preparation - Al Majma'ah |  | 10d | 2027-12-02 | 2027-12-15 | NMJ-X1010 | 300d | 0d | Contract cost (BOQ x payment milestones) [12648 SAR]; Progress weight (fair EPC distribution, SAR value) [48980 SAR] | 48,980 | NSR | NMJ | NSR | Standard | CON | CIVIL | ETECHS | - | - | MS5 | ENA |
|  | CIV | **Civil works** |  |  | 2027-12-16 | 2028-04-16 |  |  |  |  |  |  |  |  |  |  |  |  |  |  |  |  |
| NMJ-C1010 |  | Civil: platform trenches and duct banks - Al Majma'ah |  | 57d | 2027-12-16 | 2028-03-12 | NMJ-X1020 | 300d | 0d | Contract cost (BOQ x payment milestones) [105400 SAR]; Progress weight (fair EPC distribution, SAR value) [212040 SAR] | 212,040 | NSR | NMJ | NSR | Standard | CON | CIVIL | ETECHS | - | - | MS5 | CON |
| NMJ-C1020 |  | Civil: camera and ALPR pole foundations and poles - Al Majma'ah |  | 45d | 2028-02-07 | 2028-04-16 | NMJ-C1010 SS+37d | 300d | 59d | Contract cost (BOQ x payment milestones) [84320 SAR]; Progress weight (fair EPC distribution, SAR value) [163060 SAR] | 163,060 | NSR | NMJ | NSR | Standard | CON | CIVIL | ETECHS | - | - | MS5 | CON |
|  | INS | **Installation** |  |  | 2028-06-08 | 2028-08-08 |  |  |  |  |  |  |  |  |  |  |  |  |  |  |  |  |
| NMJ-C2010 |  | Install UPS, network switches and field cabinets - Al Majma'ah |  | 13d | 2028-06-08 | 2028-06-26 | NMJ-P1100 | 241d | 0d | Contract cost (BOQ x payment milestones) [93797 SAR]; Progress weight (fair EPC distribution, SAR value) [97960 SAR] | 97,960 | NSR | NMJ | NSR | Standard | CON | UPSNET | ETECHS | - | - | MS5 | CON |
| NMJ-C2020 |  | Cabling and termination (power, fibre, data) - Al Majma'ah |  | 22d | 2028-06-14 | 2028-07-13 | NMJ-C2010 SS+4d, NMJ-C1010 SS+41d | 241d | 0d | Contract cost (BOQ x payment milestones) [140695 SAR]; Progress weight (fair EPC distribution, SAR value) [195920 SAR] | 195,920 | NSR | NMJ | NSR | Standard | CON | CCTV | ETECHS | - | - | MS5 | CON |
| NMJ-C2040 |  | Install video management, video wall and control-room equipment - Al Majma'ah |  | 15d | 2028-06-27 | 2028-07-17 | NMJ-C2010 | 257d | 16d | Contract cost (BOQ x payment milestones) [70348 SAR]; Progress weight (fair EPC distribution, SAR value) [97960 SAR] | 97,960 | NSR | NMJ | NSR | Standard | CON | VMS | ETECHS | - | - | MS5 | CON |
| NMJ-C2050 |  | Install access control and intercom - Al Majma'ah |  | 13d | 2028-07-03 | 2028-07-19 | NMJ-C2010 FS+4d | 255d | 14d | Contract cost (BOQ x payment milestones) [46898 SAR]; Progress weight (fair EPC distribution, SAR value) [65100 SAR] | 65,100 | NSR | NMJ | NSR | Standard | CON | ACC | ETECHS | - | - | MS5 | CON |
| NMJ-C2030 |  | Install and aim CCTV cameras - Al Majma'ah |  | 18d | 2028-07-16 | 2028-08-08 | NMJ-C2020, NMJ-C1020 | 241d | 0d | Contract cost (BOQ x payment milestones) [117246 SAR]; Progress weight (fair EPC distribution, SAR value) [163060 SAR] | 163,060 | NSR | NMJ | NSR | Standard | CON | CCTV | ETECHS | - | - | MS5 | CON |

| ID | WBS | Activity | Type | Duration | Start | Finish | Predecessors | Total float | Free float | Resources | Cost | Area | Station | Railway | Priority | EPC phase | Discipline | Responsibility | Design stage | Submittal or approval | Payment milestone | Programme phase |
| --- | --- | --- | --- | --- | --- | --- | --- | --- | --- | --- | --- | --- | --- | --- | --- | --- | --- | --- | --- | --- | --- | --- |
|  | HKA | **KAEC (HHR)** |  |  | 2028-03-30 | 2029-01-17 |  |  |  |  |  |  |  |  |  |  |  |  |  |  |  |  |
| HKA-C2100 |  | MS5 Installation complete (20%) - KAEC | milestone | 0d | 2029-01-17 | 2029-01-17 | HKA-C2020, HKA-C2030, HKA-C2040, HKA-C2050, HKA-C1020 | 118d | 0d |  |  | HHR | HKA | HHR | Standard | MS | PM | ETECHS | - | - | MS5 | MS |
|  | ENA | **Enabling works** |  |  | 2028-03-30 | 2028-04-19 |  |  |  |  |  |  |  |  |  |  |  |  |  |  |  |  |
| HKA-X1010 |  | Enabling works: site preparation, setting out, temporary works and utilities clearance - KAEC |  | 5d | 2028-03-30 | 2028-04-05 | HKA-E1010 SS+42d | 229d | 0d | Contract cost (BOQ x payment milestones) [2574 SAR]; Progress weight (fair EPC distribution, SAR value) [53320 SAR] | 53,320 | HHR | HKA | HHR | Standard | CON | CIVIL | ETECHS | - | - | MS5 | ENA |
| HKA-X1020 |  | Enabling works: cable routes, duct-bank and cabinet plinth preparation - KAEC |  | 10d | 2028-04-06 | 2028-04-19 | HKA-X1010 | 229d | 0d | Contract cost (BOQ x payment milestones) [3861 SAR]; Progress weight (fair EPC distribution, SAR value) [79980 SAR] | 79,980 | HHR | HKA | HHR | Standard | CON | CIVIL | ETECHS | - | - | MS5 | ENA |
|  | CIV | **Civil works** |  |  | 2028-04-20 | 2028-06-15 |  |  |  |  |  |  |  |  |  |  |  |  |  |  |  |  |
| HKA-C1010 |  | Civil: platform trenches and duct banks - KAEC |  | 25d | 2028-04-20 | 2028-05-31 | HKA-X1020 | 229d | 0d | Contract cost (BOQ x payment milestones) [32177 SAR]; Progress weight (fair EPC distribution, SAR value) [347200 SAR] | 347,200 | HHR | HKA | HHR | Standard | CON | CIVIL | ETECHS | - | - | MS5 | CON |
| HKA-C1020 |  | Civil: camera and ALPR pole foundations and poles - KAEC |  | 20d | 2028-05-21 | 2028-06-15 | HKA-C1010 SS+16d | 245d | 127d | Contract cost (BOQ x payment milestones) [25742 SAR]; Progress weight (fair EPC distribution, SAR value) [267220 SAR] | 267,220 | HHR | HKA | HHR | Standard | CON | CIVIL | ETECHS | - | - | MS5 | CON |
|  | INS | **Installation** |  |  | 2028-10-16 | 2029-01-17 |  |  |  |  |  |  |  |  |  |  |  |  |  |  |  |  |
| HKA-C2010 |  | Install UPS, network switches and field cabinets - KAEC |  | 20d | 2028-10-16 | 2028-11-12 | HKA-P1100 | 118d | 0d | Contract cost (BOQ x payment milestones) [209704 SAR]; Progress weight (fair EPC distribution, SAR value) [159960 SAR] | 159,960 | HHR | HKA | HHR | Standard | CON | UPSNET | ETECHS | - | - | MS5 | CON |
| HKA-C2020 |  | Cabling and termination (power, fibre, data) - KAEC |  | 34d | 2028-10-25 | 2028-12-11 | HKA-C2010 SS+7d, HKA-C1010 SS+18d | 118d | 0d | Contract cost (BOQ x payment milestones) [314556 SAR]; Progress weight (fair EPC distribution, SAR value) [320540 SAR] | 320,540 | HHR | HKA | HHR | Standard | CON | CCTV | ETECHS | - | - | MS5 | CON |
| HKA-C2040 |  | Install video management, video wall and control-room equipment - KAEC |  | 23d | 2028-11-13 | 2028-12-13 | HKA-C2010 | 143d | 25d | Contract cost (BOQ x payment milestones) [157278 SAR]; Progress weight (fair EPC distribution, SAR value) [159960 SAR] | 159,960 | HHR | HKA | HHR | Standard | CON | VMS | ETECHS | - | - | MS5 | CON |
| HKA-C2050 |  | Install access control and intercom - KAEC |  | 20d | 2028-11-22 | 2028-12-19 | HKA-C2010 FS+7d | 139d | 21d | Contract cost (BOQ x payment milestones) [104852 SAR]; Progress weight (fair EPC distribution, SAR value) [106640 SAR] | 106,640 | HHR | HKA | HHR | Standard | CON | ACC | ETECHS | - | - | MS5 | CON |
| HKA-C2030 |  | Install and aim CCTV cameras - KAEC |  | 27d | 2028-12-12 | 2029-01-17 | HKA-C2020, HKA-C1020 | 118d | 0d | Contract cost (BOQ x payment milestones) [262130 SAR]; Progress weight (fair EPC distribution, SAR value) [267220 SAR] | 267,220 | HHR | HKA | HHR | Standard | CON | CCTV | ETECHS | - | - | MS5 | CON |
|  | HMD | **Madinah (HHR)** |  |  | 2028-03-30 | 2029-01-22 |  |  |  |  |  |  |  |  |  |  |  |  |  |  |  |  |
| HMD-C2100 |  | MS5 Installation complete (20%) - Madinah | milestone | 0d | 2029-01-22 | 2029-01-22 | HMD-C2020, HMD-C2030, HMD-C2040, HMD-C2050, HMD-C1020 | 114d | 0d |  |  | HHR | HMD | HHR | Standard | MS | PM | ETECHS | - | - | MS5 | MS |
|  | ENA | **Enabling works** |  |  | 2028-03-30 | 2028-04-19 |  |  |  |  |  |  |  |  |  |  |  |  |  |  |  |  |
| HMD-X1010 |  | Enabling works: site preparation, setting out, temporary works and utilities clearance - Madinah |  | 5d | 2028-03-30 | 2028-04-05 | HMD-E1010 SS+42d | 220d | 0d | Contract cost (BOQ x payment milestones) [4005 SAR]; Progress weight (fair EPC distribution, SAR value) [53320 SAR] | 53,320 | HHR | HMD | HHR | Standard | CON | CIVIL | ETECHS | - | - | MS5 | ENA |
| HMD-X1020 |  | Enabling works: cable routes, duct-bank and cabinet plinth preparation - Madinah |  | 10d | 2028-04-06 | 2028-04-19 | HMD-X1010 | 220d | 0d | Contract cost (BOQ x payment milestones) [6008 SAR]; Progress weight (fair EPC distribution, SAR value) [79980 SAR] | 79,980 | HHR | HMD | HHR | Standard | CON | CIVIL | ETECHS | - | - | MS5 | ENA |
|  | CIV | **Civil works** |  |  | 2028-04-20 | 2028-06-27 |  |  |  |  |  |  |  |  |  |  |  |  |  |  |  |  |
| HMD-C1010 |  | Civil: platform trenches and duct banks - Madinah |  | 31d | 2028-04-20 | 2028-06-08 | HMD-X1020 | 220d | 0d | Contract cost (BOQ x payment milestones) [50065 SAR]; Progress weight (fair EPC distribution, SAR value) [347200 SAR] | 347,200 | HHR | HMD | HHR | Standard | CON | CIVIL | ETECHS | - | - | MS5 | CON |
| HMD-C1020 |  | Civil: camera and ALPR pole foundations and poles - Madinah |  | 24d | 2028-05-25 | 2028-06-27 | HMD-C1010 SS+20d | 234d | 120d | Contract cost (BOQ x payment milestones) [40052 SAR]; Progress weight (fair EPC distribution, SAR value) [267220 SAR] | 267,220 | HHR | HMD | HHR | Standard | CON | CIVIL | ETECHS | - | - | MS5 | CON |
|  | INS | **Installation** |  |  | 2028-10-15 | 2029-01-22 |  |  |  |  |  |  |  |  |  |  |  |  |  |  |  |  |
| HMD-C2010 |  | Install UPS, network switches and field cabinets - Madinah |  | 22d | 2028-10-15 | 2028-11-13 | HMD-P1100 | 114d | 0d | Contract cost (BOQ x payment milestones) [202459 SAR]; Progress weight (fair EPC distribution, SAR value) [159960 SAR] | 159,960 | HHR | HMD | HHR | Standard | CON | UPSNET | ETECHS | - | - | MS5 | CON |
| HMD-C2020 |  | Cabling and termination (power, fibre, data) - Madinah |  | 36d | 2028-10-24 | 2028-12-12 | HMD-C2010 SS+7d, HMD-C1010 SS+22d | 114d | 0d | Contract cost (BOQ x payment milestones) [303689 SAR]; Progress weight (fair EPC distribution, SAR value) [320540 SAR] | 320,540 | HHR | HMD | HHR | Standard | CON | CCTV | ETECHS | - | - | MS5 | CON |
| HMD-C2040 |  | Install video management, video wall and control-room equipment - Madinah |  | 25d | 2028-11-14 | 2028-12-18 | HMD-C2010 | 139d | 25d | Contract cost (BOQ x payment milestones) [151845 SAR]; Progress weight (fair EPC distribution, SAR value) [159960 SAR] | 159,960 | HHR | HMD | HHR | Standard | CON | VMS | ETECHS | - | - | MS5 | CON |
| HMD-C2050 |  | Install access control and intercom - Madinah |  | 22d | 2028-11-23 | 2028-12-24 | HMD-C2010 FS+7d | 135d | 21d | Contract cost (BOQ x payment milestones) [101230 SAR]; Progress weight (fair EPC distribution, SAR value) [106640 SAR] | 106,640 | HHR | HMD | HHR | Standard | CON | ACC | ETECHS | - | - | MS5 | CON |
| HMD-C2030 |  | Install and aim CCTV cameras - Madinah |  | 29d | 2028-12-13 | 2029-01-22 | HMD-C2020, HMD-C1020 | 114d | 0d | Contract cost (BOQ x payment milestones) [253074 SAR]; Progress weight (fair EPC distribution, SAR value) [267220 SAR] | 267,220 | HHR | HMD | HHR | Standard | CON | CCTV | ETECHS | - | - | MS5 | CON |

| ID | WBS | Activity | Type | Duration | Start | Finish | Predecessors | Total float | Free float | Resources | Cost | Area | Station | Railway | Priority | EPC phase | Discipline | Responsibility | Design stage | Submittal or approval | Payment milestone | Programme phase |
| --- | --- | --- | --- | --- | --- | --- | --- | --- | --- | --- | --- | --- | --- | --- | --- | --- | --- | --- | --- | --- | --- | --- |
|  | EAB | **Abqaiq (EWR)** |  |  | 2028-05-24 | 2028-12-05 |  |  |  |  |  |  |  |  |  |  |  |  |  |  |  |  |
| EAB-C2100 |  | MS5 Installation complete (20%) - Abqaiq | milestone | 0d | 2028-12-05 | 2028-12-05 | EAB-C2020, EAB-C2030, EAB-C2040, EAB-C2050, EAB-C1020 | 158d | 0d |  |  | EWR | EAB | EWR | Standard | MS | PM | ETECHS | - | - | MS5 | MS |
|  | ENA | **Enabling works** |  |  | 2028-05-24 | 2028-06-13 |  |  |  |  |  |  |  |  |  |  |  |  |  |  |  |  |
| EAB-X1010 |  | Enabling works: site preparation, setting out, temporary works and utilities clearance - Abqaiq |  | 5d | 2028-05-24 | 2028-05-30 | EAB-E1010 SS+42d | 222d | 0d | Contract cost (BOQ x payment milestones) [4715 SAR]; Progress weight (fair EPC distribution, SAR value) [19220 SAR] | 19,220 | EWR | EAB | EWR | Standard | CON | CIVIL | ETECHS | - | - | MS5 | ENA |
| EAB-X1020 |  | Enabling works: cable routes, duct-bank and cabinet plinth preparation - Abqaiq |  | 10d | 2028-05-31 | 2028-06-13 | EAB-X1010 | 222d | 0d | Contract cost (BOQ x payment milestones) [7073 SAR]; Progress weight (fair EPC distribution, SAR value) [29140 SAR] | 29,140 | EWR | EAB | EWR | Standard | CON | CIVIL | ETECHS | - | - | MS5 | ENA |
|  | CIV | **Civil works** |  |  | 2028-06-14 | 2028-08-23 |  |  |  |  |  |  |  |  |  |  |  |  |  |  |  |  |
| EAB-C1010 |  | Civil: platform trenches and duct banks - Abqaiq |  | 36d | 2028-06-14 | 2028-08-02 | EAB-X1020 | 222d | 0d | Contract cost (BOQ x payment milestones) [58942 SAR]; Progress weight (fair EPC distribution, SAR value) [125240 SAR] | 125,240 | EWR | EAB | EWR | Standard | CON | CIVIL | ETECHS | - | - | MS5 | CON |
| EAB-C1020 |  | Civil: camera and ALPR pole foundations and poles - Abqaiq |  | 28d | 2028-07-17 | 2028-08-23 | EAB-C1010 SS+23d | 222d | 64d | Contract cost (BOQ x payment milestones) [47154 SAR]; Progress weight (fair EPC distribution, SAR value) [96100 SAR] | 96,100 | EWR | EAB | EWR | Standard | CON | CIVIL | ETECHS | - | - | MS5 | CON |
|  | INS | **Installation** |  |  | 2028-10-31 | 2028-12-05 |  |  |  |  |  |  |  |  |  |  |  |  |  |  |  |  |
| EAB-C2010 |  | Install UPS, network switches and field cabinets - Abqaiq |  | 8d | 2028-10-31 | 2028-11-09 | EAB-P1100 | 158d | 0d | Contract cost (BOQ x payment milestones) [56650 SAR]; Progress weight (fair EPC distribution, SAR value) [57660 SAR] | 57,660 | EWR | EAB | EWR | Standard | CON | UPSNET | ETECHS | - | - | MS5 | CON |
| EAB-C2020 |  | Cabling and termination (power, fibre, data) - Abqaiq |  | 13d | 2028-11-05 | 2028-11-21 | EAB-C2010 SS+3d, EAB-C1010 SS+26d | 158d | 0d | Contract cost (BOQ x payment milestones) [84975 SAR]; Progress weight (fair EPC distribution, SAR value) [115320 SAR] | 115,320 | EWR | EAB | EWR | Standard | CON | CCTV | ETECHS | - | - | MS5 | CON |
| EAB-C2040 |  | Install video management, video wall and control-room equipment - Abqaiq |  | 9d | 2028-11-12 | 2028-11-22 | EAB-C2010 | 167d | 9d | Contract cost (BOQ x payment milestones) [42488 SAR]; Progress weight (fair EPC distribution, SAR value) [57660 SAR] | 57,660 | EWR | EAB | EWR | Standard | CON | VMS | ETECHS | - | - | MS5 | CON |
| EAB-C2050 |  | Install access control and intercom - Abqaiq |  | 8d | 2028-11-15 | 2028-11-26 | EAB-C2010 FS+3d | 165d | 7d | Contract cost (BOQ x payment milestones) [28325 SAR]; Progress weight (fair EPC distribution, SAR value) [38440 SAR] | 38,440 | EWR | EAB | EWR | Standard | CON | ACC | ETECHS | - | - | MS5 | CON |
| EAB-C2030 |  | Install and aim CCTV cameras - Abqaiq |  | 10d | 2028-11-22 | 2028-12-05 | EAB-C2020, EAB-C1020 | 158d | 0d | Contract cost (BOQ x payment milestones) [70813 SAR]; Progress weight (fair EPC distribution, SAR value) [96100 SAR] | 96,100 | EWR | EAB | EWR | Standard | CON | CCTV | ETECHS | - | - | MS5 | CON |
|  | NHL | **Hail (NSR)** |  |  | 2028-06-18 | 2029-02-06 |  |  |  |  |  |  |  |  |  |  |  |  |  |  |  |  |
| NHL-C2100 |  | MS5 Installation complete (20%) - Hail | milestone | 0d | 2029-02-06 | 2029-02-06 | NHL-C2020, NHL-C2030, NHL-C2040, NHL-C2050, NHL-C1020 | 111d | 0d |  |  | NSR | NHL | NSR | Standard | MS | PM | ETECHS | - | - | MS5 | MS |
|  | ENA | **Enabling works** |  |  | 2028-06-18 | 2028-07-06 |  |  |  |  |  |  |  |  |  |  |  |  |  |  |  |  |
| NHL-X1010 |  | Enabling works: site preparation, setting out, temporary works and utilities clearance - Hail |  | 5d | 2028-06-18 | 2028-06-22 | NHL-E1010 SS+42d | 164d | 0d | Contract cost (BOQ x payment milestones) [8432 SAR]; Progress weight (fair EPC distribution, SAR value) [32860 SAR] | 32,860 | NSR | NHL | NSR | Standard | CON | CIVIL | ETECHS | - | - | MS5 | ENA |
| NHL-X1020 |  | Enabling works: cable routes, duct-bank and cabinet plinth preparation - Hail |  | 10d | 2028-06-25 | 2028-07-06 | NHL-X1010 | 164d | 0d | Contract cost (BOQ x payment milestones) [12648 SAR]; Progress weight (fair EPC distribution, SAR value) [48980 SAR] | 48,980 | NSR | NHL | NSR | Standard | CON | CIVIL | ETECHS | - | - | MS5 | ENA |
|  | CIV | **Civil works** |  |  | 2028-07-09 | 2028-10-30 |  |  |  |  |  |  |  |  |  |  |  |  |  |  |  |  |
| NHL-C1010 |  | Civil: platform trenches and duct banks - Hail |  | 57d | 2028-07-09 | 2028-09-25 | NHL-X1020 | 164d | 0d | Contract cost (BOQ x payment milestones) [105400 SAR]; Progress weight (fair EPC distribution, SAR value) [212040 SAR] | 212,040 | NSR | NHL | NSR | Standard | CON | CIVIL | ETECHS | - | - | MS5 | CON |
| NHL-C1020 |  | Civil: camera and ALPR pole foundations and poles - Hail |  | 45d | 2028-08-29 | 2028-10-30 | NHL-C1010 SS+37d | 164d | 53d | Contract cost (BOQ x payment milestones) [84320 SAR]; Progress weight (fair EPC distribution, SAR value) [163060 SAR] | 163,060 | NSR | NHL | NSR | Standard | CON | CIVIL | ETECHS | - | - | MS5 | CON |
|  | INS | **Installation** |  |  | 2028-12-07 | 2029-02-06 |  |  |  |  |  |  |  |  |  |  |  |  |  |  |  |  |
| NHL-C2010 |  | Install UPS, network switches and field cabinets - Hail |  | 13d | 2028-12-07 | 2028-12-25 | NHL-P1100 | 111d | 0d | Contract cost (BOQ x payment milestones) [93797 SAR]; Progress weight (fair EPC distribution, SAR value) [97960 SAR] | 97,960 | NSR | NHL | NSR | Standard | CON | UPSNET | ETECHS | - | - | MS5 | CON |
| NHL-C2020 |  | Cabling and termination (power, fibre, data) - Hail |  | 22d | 2028-12-13 | 2029-01-11 | NHL-C2010 SS+4d, NHL-C1010 SS+41d | 111d | 0d | Contract cost (BOQ x payment milestones) [140695 SAR]; Progress weight (fair EPC distribution, SAR value) [195920 SAR] | 195,920 | NSR | NHL | NSR | Standard | CON | CCTV | ETECHS | - | - | MS5 | CON |
| NHL-C2040 |  | Install video management, video wall and control-room equipment - Hail |  | 15d | 2028-12-26 | 2029-01-15 | NHL-C2010 | 127d | 16d | Contract cost (BOQ x payment milestones) [70348 SAR]; Progress weight (fair EPC distribution, SAR value) [97960 SAR] | 97,960 | NSR | NHL | NSR | Standard | CON | VMS | ETECHS | - | - | MS5 | CON |
| NHL-C2050 |  | Install access control and intercom - Hail |  | 13d | 2029-01-01 | 2029-01-17 | NHL-C2010 FS+4d | 125d | 14d | Contract cost (BOQ x payment milestones) [46898 SAR]; Progress weight (fair EPC distribution, SAR value) [65100 SAR] | 65,100 | NSR | NHL | NSR | Standard | CON | ACC | ETECHS | - | - | MS5 | CON |
| NHL-C2030 |  | Install and aim CCTV cameras - Hail |  | 18d | 2029-01-14 | 2029-02-06 | NHL-C2020, NHL-C1020 | 111d | 0d | Contract cost (BOQ x payment milestones) [117246 SAR]; Progress weight (fair EPC distribution, SAR value) [163060 SAR] | 163,060 | NSR | NHL | NSR | Standard | CON | CCTV | ETECHS | - | - | MS5 | CON |

| ID | WBS | Activity | Type | Duration | Start | Finish | Predecessors | Total float | Free float | Resources | Cost | Area | Station | Railway | Priority | EPC phase | Discipline | Responsibility | Design stage | Submittal or approval | Payment milestone | Programme phase |
| --- | --- | --- | --- | --- | --- | --- | --- | --- | --- | --- | --- | --- | --- | --- | --- | --- | --- | --- | --- | --- | --- | --- |
|  | NJF | **Al Jouf (NSR)** |  |  | 2028-08-28 | 2029-05-09 |  |  |  |  |  |  |  |  |  |  |  |  |  |  |  |  |
| NJF-C2100 |  | MS5 Installation complete (20%) - Al Jouf | milestone | 0d | 2029-05-09 | 2029-05-09 | NJF-C2020, NJF-C2030, NJF-C2040, NJF-C2050, NJF-C1020 | 56d | 0d |  |  | NSR | NJF | NSR | Standard | MS | PM | ETECHS | - | - | MS5 | MS |
|  | ENA | **Enabling works** |  |  | 2028-08-28 | 2028-09-17 |  |  |  |  |  |  |  |  |  |  |  |  |  |  |  |  |
| NJF-X1010 |  | Enabling works: site preparation, setting out, temporary works and utilities clearance - Al Jouf |  | 5d | 2028-08-28 | 2028-09-03 | NJF-E1010 SS+42d | 113d | 0d | Contract cost (BOQ x payment milestones) [8432 SAR]; Progress weight (fair EPC distribution, SAR value) [32860 SAR] | 32,860 | NSR | NJF | NSR | Standard | CON | CIVIL | ETECHS | - | - | MS5 | ENA |
| NJF-X1020 |  | Enabling works: cable routes, duct-bank and cabinet plinth preparation - Al Jouf |  | 10d | 2028-09-04 | 2028-09-17 | NJF-X1010 | 113d | 0d | Contract cost (BOQ x payment milestones) [12648 SAR]; Progress weight (fair EPC distribution, SAR value) [48980 SAR] | 48,980 | NSR | NJF | NSR | Standard | CON | CIVIL | ETECHS | - | - | MS5 | ENA |
|  | CIV | **Civil works** |  |  | 2028-09-18 | 2029-01-09 |  |  |  |  |  |  |  |  |  |  |  |  |  |  |  |  |
| NJF-C1010 |  | Civil: platform trenches and duct banks - Al Jouf |  | 57d | 2028-09-18 | 2028-12-05 | NJF-X1020 | 113d | 0d | Contract cost (BOQ x payment milestones) [105400 SAR]; Progress weight (fair EPC distribution, SAR value) [213280 SAR] | 213,280 | NSR | NJF | NSR | Standard | CON | CIVIL | ETECHS | - | - | MS5 | CON |
| NJF-C1020 |  | Civil: camera and ALPR pole foundations and poles - Al Jouf |  | 45d | 2028-11-08 | 2029-01-09 | NJF-C1010 SS+37d | 113d | 57d | Contract cost (BOQ x payment milestones) [84320 SAR]; Progress weight (fair EPC distribution, SAR value) [164300 SAR] | 164,300 | NSR | NJF | NSR | Standard | CON | CIVIL | ETECHS | - | - | MS5 | CON |
|  | INS | **Installation** |  |  | 2029-03-04 | 2029-05-09 |  |  |  |  |  |  |  |  |  |  |  |  |  |  |  |  |
| NJF-C2010 |  | Install UPS, network switches and field cabinets - Al Jouf |  | 13d | 2029-03-04 | 2029-03-20 | NJF-P1100 | 56d | 0d | Contract cost (BOQ x payment milestones) [94754 SAR]; Progress weight (fair EPC distribution, SAR value) [98580 SAR] | 98,580 | NSR | NJF | NSR | Standard | CON | UPSNET | ETECHS | - | - | MS5 | CON |
| NJF-C2020 |  | Cabling and termination (power, fibre, data) - Al Jouf |  | 22d | 2029-03-08 | 2029-04-08 | NJF-C2010 SS+4d, NJF-C1010 SS+41d | 56d | 0d | Contract cost (BOQ x payment milestones) [142131 SAR]; Progress weight (fair EPC distribution, SAR value) [197160 SAR] | 197,160 | NSR | NJF | NSR | Standard | CON | CCTV | ETECHS | - | - | MS5 | CON |
| NJF-C2040 |  | Install video management, video wall and control-room equipment - Al Jouf |  | 15d | 2029-03-21 | 2029-04-10 | NJF-C2010 | 72d | 16d | Contract cost (BOQ x payment milestones) [71065 SAR]; Progress weight (fair EPC distribution, SAR value) [98580 SAR] | 98,580 | NSR | NJF | NSR | Standard | CON | VMS | ETECHS | - | - | MS5 | CON |
| NJF-C2050 |  | Install access control and intercom - Al Jouf |  | 13d | 2029-03-27 | 2029-04-12 | NJF-C2010 FS+4d | 70d | 14d | Contract cost (BOQ x payment milestones) [47377 SAR]; Progress weight (fair EPC distribution, SAR value) [65720 SAR] | 65,720 | NSR | NJF | NSR | Standard | CON | ACC | ETECHS | - | - | MS5 | CON |
| NJF-C2030 |  | Install and aim CCTV cameras - Al Jouf |  | 18d | 2029-04-09 | 2029-05-09 | NJF-C2020, NJF-C1020 | 56d | 0d | Contract cost (BOQ x payment milestones) [118442 SAR]; Progress weight (fair EPC distribution, SAR value) [164300 SAR] | 164,300 | NSR | NJF | NSR | Standard | CON | CCTV | ETECHS | - | - | MS5 | CON |
|  | NQR | **Al Qurayyat (NSR)** |  |  | 2028-10-15 | 2029-06-27 |  |  |  |  |  |  |  |  |  |  |  |  |  |  |  |  |
| NQR-C2100 |  | MS5 Installation complete (20%) - Al Qurayyat | milestone | 0d | 2029-06-27 | 2029-06-27 | NQR-C2020, NQR-C2030, NQR-C2040, NQR-C2050, NQR-C1020 | 21d | 0d |  |  | NSR | NQR | NSR | Standard | MS | PM | ETECHS | - | - | MS5 | MS |
|  | ENA | **Enabling works** |  |  | 2028-10-15 | 2028-11-02 |  |  |  |  |  |  |  |  |  |  |  |  |  |  |  |  |
| NQR-X1010 |  | Enabling works: site preparation, setting out, temporary works and utilities clearance - Al Qurayyat |  | 5d | 2028-10-15 | 2028-10-19 | NQR-E1010 SS+42d | 79d | 0d | Contract cost (BOQ x payment milestones) [8432 SAR]; Progress weight (fair EPC distribution, SAR value) [32860 SAR] | 32,860 | NSR | NQR | NSR | Standard | CON | CIVIL | ETECHS | - | - | MS5 | ENA |
| NQR-X1020 |  | Enabling works: cable routes, duct-bank and cabinet plinth preparation - Al Qurayyat |  | 10d | 2028-10-22 | 2028-11-02 | NQR-X1010 | 79d | 0d | Contract cost (BOQ x payment milestones) [12648 SAR]; Progress weight (fair EPC distribution, SAR value) [48980 SAR] | 48,980 | NSR | NQR | NSR | Standard | CON | CIVIL | ETECHS | - | - | MS5 | ENA |
|  | CIV | **Civil works** |  |  | 2028-11-05 | 2029-03-06 |  |  |  |  |  |  |  |  |  |  |  |  |  |  |  |  |
| NQR-C1010 |  | Civil: platform trenches and duct banks - Al Qurayyat |  | 57d | 2028-11-05 | 2029-01-22 | NQR-X1020 | 79d | 0d | Contract cost (BOQ x payment milestones) [105400 SAR]; Progress weight (fair EPC distribution, SAR value) [212040 SAR] | 212,040 | NSR | NQR | NSR | Standard | CON | CIVIL | ETECHS | - | - | MS5 | CON |
| NQR-C1020 |  | Civil: camera and ALPR pole foundations and poles - Al Qurayyat |  | 45d | 2028-12-26 | 2029-03-06 | NQR-C1010 SS+37d | 79d | 58d | Contract cost (BOQ x payment milestones) [84320 SAR]; Progress weight (fair EPC distribution, SAR value) [163060 SAR] | 163,060 | NSR | NQR | NSR | Standard | CON | CIVIL | ETECHS | - | - | MS5 | CON |
|  | INS | **Installation** |  |  | 2029-04-29 | 2029-06-27 |  |  |  |  |  |  |  |  |  |  |  |  |  |  |  |  |
| NQR-C2010 |  | Install UPS, network switches and field cabinets - Al Qurayyat |  | 13d | 2029-04-29 | 2029-05-15 | NQR-P1100 | 21d | 0d | Contract cost (BOQ x payment milestones) [93797 SAR]; Progress weight (fair EPC distribution, SAR value) [97960 SAR] | 97,960 | NSR | NQR | NSR | Standard | CON | UPSNET | ETECHS | - | - | MS5 | CON |
| NQR-C2020 |  | Cabling and termination (power, fibre, data) - Al Qurayyat |  | 22d | 2029-05-03 | 2029-06-03 | NQR-C2010 SS+4d, NQR-C1010 SS+41d | 21d | 0d | Contract cost (BOQ x payment milestones) [140695 SAR]; Progress weight (fair EPC distribution, SAR value) [195920 SAR] | 195,920 | NSR | NQR | NSR | Standard | CON | CCTV | ETECHS | - | - | MS5 | CON |
| NQR-C2040 |  | Install video management, video wall and control-room equipment - Al Qurayyat |  | 15d | 2029-05-16 | 2029-06-05 | NQR-C2010 | 37d | 16d | Contract cost (BOQ x payment milestones) [70348 SAR]; Progress weight (fair EPC distribution, SAR value) [97960 SAR] | 97,960 | NSR | NQR | NSR | Standard | CON | VMS | ETECHS | - | - | MS5 | CON |
| NQR-C2050 |  | Install access control and intercom - Al Qurayyat |  | 13d | 2029-05-22 | 2029-06-07 | NQR-C2010 FS+4d | 35d | 14d | Contract cost (BOQ x payment milestones) [46898 SAR]; Progress weight (fair EPC distribution, SAR value) [65100 SAR] | 65,100 | NSR | NQR | NSR | Standard | CON | ACC | ETECHS | - | - | MS5 | CON |
| NQR-C2030 |  | Install and aim CCTV cameras - Al Qurayyat |  | 18d | 2029-06-04 | 2029-06-27 | NQR-C2020, NQR-C1020 | 21d | 0d | Contract cost (BOQ x payment milestones) [117246 SAR]; Progress weight (fair EPC distribution, SAR value) [163060 SAR] | 163,060 | NSR | NQR | NSR | Standard | CON | CCTV | ETECHS | - | - | MS5 | CON |

| ID | WBS | Activity | Type | Duration | Start | Finish | Predecessors | Total float | Free float | Resources | Cost | Area | Station | Railway | Priority | EPC phase | Discipline | Responsibility | Design stage | Submittal or approval | Payment milestone | Programme phase |
| --- | --- | --- | --- | --- | --- | --- | --- | --- | --- | --- | --- | --- | --- | --- | --- | --- | --- | --- | --- | --- | --- | --- |
|  | COM | **Commissioning and Handover** |  |  | 2027-10-19 | 2029-09-17 |  |  |  |  |  |  |  |  |  |  |  |  |  |  |  |  |
|  | NRY | **Riyadh (Thumamah) (NSR)** |  |  | 2027-11-04 | 2028-01-24 |  |  |  |  |  |  |  |  |  |  |  |  |  |  |  |  |
| NRY-T1100 |  | MS6 SAT complete (10%) - Riyadh (Thumamah) | milestone | 0d | 2027-12-05 | 2027-12-05 | NRY-T1020, NRY-T1130 | 451d | 21d |  |  | NSR | NRY | NSR | Priority 1 | MS | TC | SAR | - | - | MS6 | MS |
| NRY-T1130 |  | Mock-up approved - roll-out to other stations - Riyadh (Thumamah) | milestone | 0d | 2027-12-05 | 2027-12-05 | NRY-T1030 | 451d | 0d |  |  | NSR | NRY | NSR | Priority 1 | MS | TC | SAR | - | - | - | MS |
| NRY-T3100 |  | MS7 Station accepted - final acceptance and handover (10%) - Riyadh (Thumamah) | milestone | 0d | 2028-01-24 | 2028-01-24 | NRY-T3010 | 430d | 409d |  |  | NSR | NRY | NSR | Priority 1 | MS | TC | SAR | - | - | MS7 | MS |
|  | TST | **Testing and commissioning** |  |  | 2027-11-04 | 2027-11-22 |  |  |  |  |  |  |  |  |  |  |  |  |  |  |  |  |
| NRY-T1010 |  | Pre-commissioning and loop checks - Riyadh (Thumamah) |  | 5d | 2027-11-04 | 2027-11-10 | NRY-C2100 | 430d | 0d | Contract cost (BOQ x payment milestones) [135054 SAR]; Progress weight (fair EPC distribution, SAR value) [100440 SAR] | 100,440 | NSR | NRY | NSR | Priority 1 | COM | TC | ETECHS | - | - | MS6 | COM |
| NRY-T1020 |  | Site acceptance test (SAT) and commissioning - Riyadh (Thumamah) |  | 8d | 2027-11-11 | 2027-11-22 | NRY-T1010 | 430d | 0d | Contract cost (BOQ x payment milestones) [202582 SAR]; Progress weight (fair EPC distribution, SAR value) [117180 SAR] | 117,180 | NSR | NRY | NSR | Priority 1 | COM | TC | ETECHS | - | - | MS6 | COM |
|  | TRN | **Training** |  |  | 2027-11-23 | 2027-12-06 |  |  |  |  |  |  |  |  |  |  |  |  |  |  |  |  |
| NRY-T2010 |  | Operator and maintenance training - Riyadh (Thumamah) |  | 10d | 2027-11-23 | 2027-12-06 | NRY-T1020 | 450d | 20d | Contract cost (BOQ x payment milestones) [52212 SAR]; Progress weight (fair EPC distribution, SAR value) [66960 SAR] | 66,960 | NSR | NRY | NSR | Priority 1 | COM | TC | ETECHS | - | - | MS7 | COM |
|  | TOA | **Trial operation and acceptance** |  |  | 2027-11-23 | 2028-01-24 |  |  |  |  |  |  |  |  |  |  |  |  |  |  |  |  |
| NRY-T2020 |  | Trial operation (maximum 45 days) - Riyadh (Thumamah) |  | 30d | 2027-11-23 | 2028-01-03 | NRY-T1020 | 430d | 0d | Contract cost (BOQ x payment milestones) [121828 SAR]; Progress weight (fair EPC distribution, SAR value) [100440 SAR] | 100,440 | NSR | NRY | NSR | Priority 1 | COM | TC | SAR | - | - | MS7 | COM |
| NRY-T3010 |  | Taking-over application, SAR review and handover - Riyadh (Thumamah) |  | 15d | 2028-01-04 | 2028-01-24 | NRY-T1100, NRY-T2010, NRY-T2020, NRY-E1140, NRY-T1130 | 430d | 0d | Contract cost (BOQ x payment milestones) [104424 SAR]; Progress weight (fair EPC distribution, SAR value) [100440 SAR] | 100,440 | NSR | NRY | NSR | Priority 1 | COM | TC | SAR | - | - | MS7 | COM |
|  | MOK | **Mock-up approval** |  |  | 2027-11-04 | 2027-12-05 |  |  |  |  |  |  |  |  |  |  |  |  |  |  |  |  |
| NRY-T1030 |  | Mock-up approval: site visit and SAR approval of the executed works (roll-out to other stations) - Riyadh (Thumamah) |  | 22d | 2027-11-04 | 2027-12-05 | NRY-C2100 | 451d | 0d | Contract cost (BOQ x payment milestones) [10442 SAR]; Progress weight (fair EPC distribution, SAR value) [16740 SAR] | 16,740 | NSR | NRY | NSR | Priority 1 | COM | TC | SAR | - | Approval | MS6 | COM |
|  | HMK | **Makkah (HHR)** |  |  | 2028-03-08 | 2028-06-27 |  |  |  |  |  |  |  |  |  |  |  |  |  |  |  |  |
| HMK-T1100 |  | MS6 SAT complete (10%) - Makkah | milestone | 0d | 2028-04-18 | 2028-04-18 | HMK-T1020 | 359d | 30d |  |  | HHR | HMK | HHR | Priority 1 | MS | TC | SAR | - | - | MS6 | MS |
| HMK-T3100 |  | MS7 Station accepted - final acceptance and handover (10%) - Makkah | milestone | 0d | 2028-06-27 | 2028-06-27 | HMK-T3010 | 329d | 308d |  |  | HHR | HMK | HHR | Priority 1 | MS | TC | SAR | - | - | MS7 | MS |
|  | TST | **Testing and commissioning** |  |  | 2028-03-08 | 2028-04-18 |  |  |  |  |  |  |  |  |  |  |  |  |  |  |  |  |
| HMK-T1010 |  | Pre-commissioning and loop checks - Makkah |  | 12d | 2028-03-08 | 2028-03-23 | HMK-C2100 | 329d | 0d | Contract cost (BOQ x payment milestones) [388404 SAR]; Progress weight (fair EPC distribution, SAR value) [279620 SAR] | 279,620 | HHR | HMK | HHR | Priority 1 | COM | TC | ETECHS | - | - | MS6 | COM |
| HMK-T1020 |  | Site acceptance test (SAT) and commissioning - Makkah |  | 18d | 2028-03-26 | 2028-04-18 | HMK-T1010 | 329d | 0d | Contract cost (BOQ x payment milestones) [582605 SAR]; Progress weight (fair EPC distribution, SAR value) [372620 SAR] | 372,620 | HHR | HMK | HHR | Priority 1 | COM | TC | ETECHS | - | - | MS6 | COM |
|  | TRN | **Training** |  |  | 2028-04-19 | 2028-05-09 |  |  |  |  |  |  |  |  |  |  |  |  |  |  |  |  |
| HMK-T2010 |  | Operator and maintenance training - Makkah |  | 10d | 2028-04-19 | 2028-05-09 | HMK-T1020 | 349d | 20d | Contract cost (BOQ x payment milestones) [145651 SAR]; Progress weight (fair EPC distribution, SAR value) [186620 SAR] | 186,620 | HHR | HMK | HHR | Priority 1 | COM | TC | ETECHS | - | - | MS7 | COM |
|  | TOA | **Trial operation and acceptance** |  |  | 2028-04-19 | 2028-06-27 |  |  |  |  |  |  |  |  |  |  |  |  |  |  |  |  |
| HMK-T2020 |  | Trial operation (maximum 45 days) - Makkah |  | 30d | 2028-04-19 | 2028-06-06 | HMK-T1020 | 329d | 0d | Contract cost (BOQ x payment milestones) [339853 SAR]; Progress weight (fair EPC distribution, SAR value) [279620 SAR] | 279,620 | HHR | HMK | HHR | Priority 1 | COM | TC | SAR | - | - | MS7 | COM |
| HMK-T3010 |  | Taking-over application, SAR review and handover - Makkah |  | 15d | 2028-06-07 | 2028-06-27 | HMK-T1100, HMK-T2010, HMK-T2020, HMK-E1140 | 329d | 0d | Contract cost (BOQ x payment milestones) [291303 SAR]; Progress weight (fair EPC distribution, SAR value) [279620 SAR] | 279,620 | HHR | HMK | HHR | Priority 1 | COM | TC | SAR | - | - | MS7 | COM |

| ID | WBS | Activity | Type | Duration | Start | Finish | Predecessors | Total float | Free float | Resources | Cost | Area | Station | Railway | Priority | EPC phase | Discipline | Responsibility | Design stage | Submittal or approval | Payment milestone | Programme phase |
| --- | --- | --- | --- | --- | --- | --- | --- | --- | --- | --- | --- | --- | --- | --- | --- | --- | --- | --- | --- | --- | --- | --- |
|  | ERY | **Riyadh (Malaz) (EWR)** |  |  | 2027-10-19 | 2028-01-05 |  |  |  |  |  |  |  |  |  |  |  |  |  |  |  |  |
| ERY-T1100 |  | MS6 SAT complete (10%) - Riyadh (Malaz) | milestone | 0d | 2027-11-03 | 2027-11-03 | ERY-T1020 | 473d | 30d |  |  | EWR | ERY | EWR | Priority 2 | MS | TC | SAR | - | - | MS6 | MS |
| ERY-T3100 |  | MS7 Station accepted - final acceptance and handover (10%) - Riyadh (Malaz) | milestone | 0d | 2028-01-05 | 2028-01-05 | ERY-T3010 | 443d | 422d |  |  | EWR | ERY | EWR | Priority 2 | MS | TC | SAR | - | - | MS7 | MS |
|  | TST | **Testing and commissioning** |  |  | 2027-10-19 | 2027-11-03 |  |  |  |  |  |  |  |  |  |  |  |  |  |  |  |  |
| ERY-T1010 |  | Pre-commissioning and loop checks - Riyadh (Malaz) |  | 5d | 2027-10-19 | 2027-10-25 | ERY-C2100 | 443d | 0d | Contract cost (BOQ x payment milestones) [123661 SAR]; Progress weight (fair EPC distribution, SAR value) [89280 SAR] | 89,280 | EWR | ERY | EWR | Priority 2 | COM | TC | ETECHS | - | - | MS6 | COM |
| ERY-T1020 |  | Site acceptance test (SAT) and commissioning - Riyadh (Malaz) |  | 7d | 2027-10-26 | 2027-11-03 | ERY-T1010 | 443d | 0d | Contract cost (BOQ x payment milestones) [185491 SAR]; Progress weight (fair EPC distribution, SAR value) [118420 SAR] | 118,420 | EWR | ERY | EWR | Priority 2 | COM | TC | ETECHS | - | - | MS6 | COM |
|  | TRN | **Training** |  |  | 2027-11-04 | 2027-11-17 |  |  |  |  |  |  |  |  |  |  |  |  |  |  |  |  |
| ERY-T2010 |  | Operator and maintenance training - Riyadh (Malaz) |  | 10d | 2027-11-04 | 2027-11-17 | ERY-T1020 | 463d | 20d | Contract cost (BOQ x payment milestones) [46373 SAR]; Progress weight (fair EPC distribution, SAR value) [59520 SAR] | 59,520 | EWR | ERY | EWR | Priority 2 | COM | TC | ETECHS | - | - | MS7 | COM |
|  | TOA | **Trial operation and acceptance** |  |  | 2027-11-04 | 2028-01-05 |  |  |  |  |  |  |  |  |  |  |  |  |  |  |  |  |
| ERY-T2020 |  | Trial operation (maximum 45 days) - Riyadh (Malaz) |  | 30d | 2027-11-04 | 2027-12-15 | ERY-T1020 | 443d | 0d | Contract cost (BOQ x payment milestones) [108203 SAR]; Progress weight (fair EPC distribution, SAR value) [89280 SAR] | 89,280 | EWR | ERY | EWR | Priority 2 | COM | TC | SAR | - | - | MS7 | COM |
| ERY-T3010 |  | Taking-over application, SAR review and handover - Riyadh (Malaz) |  | 15d | 2027-12-16 | 2028-01-05 | ERY-T1100, ERY-T2010, ERY-T2020, ERY-E1140 | 443d | 0d | Contract cost (BOQ x payment milestones) [92746 SAR]; Progress weight (fair EPC distribution, SAR value) [89280 SAR] | 89,280 | EWR | ERY | EWR | Priority 2 | COM | TC | SAR | - | - | MS7 | COM |
|  | HJD | **Jeddah (HHR)** |  |  | 2028-05-17 | 2028-08-23 |  |  |  |  |  |  |  |  |  |  |  |  |  |  |  |  |
| HJD-T1100 |  | MS6 SAT complete (10%) - Jeddah | milestone | 0d | 2028-06-21 | 2028-06-21 | HJD-T1020 | 318d | 30d |  |  | HHR | HJD | HHR | Standard | MS | TC | SAR | - | - | MS6 | MS |
| HJD-T3100 |  | MS7 Station accepted - final acceptance and handover (10%) - Jeddah | milestone | 0d | 2028-08-23 | 2028-08-23 | HJD-T3010 | 288d | 267d |  |  | HHR | HJD | HHR | Standard | MS | TC | SAR | - | - | MS7 | MS |
|  | TST | **Testing and commissioning** |  |  | 2028-05-17 | 2028-06-21 |  |  |  |  |  |  |  |  |  |  |  |  |  |  |  |  |
| HJD-T1010 |  | Pre-commissioning and loop checks - Jeddah |  | 10d | 2028-05-17 | 2028-05-30 | HJD-C2100 | 288d | 0d | Contract cost (BOQ x payment milestones) [382035 SAR]; Progress weight (fair EPC distribution, SAR value) [275280 SAR] | 275,280 | HHR | HJD | HHR | Standard | COM | TC | ETECHS | - | - | MS6 | COM |
| HJD-T1020 |  | Site acceptance test (SAT) and commissioning - Jeddah |  | 16d | 2028-05-31 | 2028-06-21 | HJD-T1010 | 288d | 0d | Contract cost (BOQ x payment milestones) [573052 SAR]; Progress weight (fair EPC distribution, SAR value) [367040 SAR] | 367,040 | HHR | HJD | HHR | Standard | COM | TC | ETECHS | - | - | MS6 | COM |
|  | TRN | **Training** |  |  | 2028-06-22 | 2028-07-05 |  |  |  |  |  |  |  |  |  |  |  |  |  |  |  |  |
| HJD-T2010 |  | Operator and maintenance training - Jeddah |  | 10d | 2028-06-22 | 2028-07-05 | HJD-T1020 | 308d | 20d | Contract cost (BOQ x payment milestones) [143263 SAR]; Progress weight (fair EPC distribution, SAR value) [183520 SAR] | 183,520 | HHR | HJD | HHR | Standard | COM | TC | ETECHS | - | - | MS7 | COM |
|  | TOA | **Trial operation and acceptance** |  |  | 2028-06-22 | 2028-08-23 |  |  |  |  |  |  |  |  |  |  |  |  |  |  |  |  |
| HJD-T2020 |  | Trial operation (maximum 45 days) - Jeddah |  | 30d | 2028-06-22 | 2028-08-02 | HJD-T1020 | 288d | 0d | Contract cost (BOQ x payment milestones) [334281 SAR]; Progress weight (fair EPC distribution, SAR value) [275280 SAR] | 275,280 | HHR | HJD | HHR | Standard | COM | TC | SAR | - | - | MS7 | COM |
| HJD-T3010 |  | Taking-over application, SAR review and handover - Jeddah |  | 15d | 2028-08-03 | 2028-08-23 | HJD-T1100, HJD-T2010, HJD-T2020, HJD-E1140 | 288d | 0d | Contract cost (BOQ x payment milestones) [286526 SAR]; Progress weight (fair EPC distribution, SAR value) [275280 SAR] | 275,280 | HHR | HJD | HHR | Standard | COM | TC | SAR | - | - | MS7 | COM |
|  | EDM | **Dammam (EWR)** |  |  | 2028-04-03 | 2028-06-27 |  |  |  |  |  |  |  |  |  |  |  |  |  |  |  |  |
| EDM-T1100 |  | MS6 SAT complete (10%) - Dammam | milestone | 0d | 2028-04-18 | 2028-04-18 | EDM-T1020 | 359d | 30d |  |  | EWR | EDM | EWR | Standard | MS | TC | SAR | - | - | MS6 | MS |
| EDM-T3100 |  | MS7 Station accepted - final acceptance and handover (10%) - Dammam | milestone | 0d | 2028-06-27 | 2028-06-27 | EDM-T3010 | 329d | 308d |  |  | EWR | EDM | EWR | Standard | MS | TC | SAR | - | - | MS7 | MS |

| ID | WBS | Activity | Type | Duration | Start | Finish | Predecessors | Total float | Free float | Resources | Cost | Area | Station | Railway | Priority | Discipline | Responsibility | EPC phase | Design stage | Submittal or approval | Programme phase | Payment milestone |
| --- | --- | --- | --- | --- | --- | --- | --- | --- | --- | --- | --- | --- | --- | --- | --- | --- | --- | --- | --- | --- | --- | --- |
|  | TST | **Testing and commissioning** |  |  | 2028-04-03 | 2028-04-18 |  |  |  |  |  |  |  |  |  |  |  |  |  |  |  |  |
| EDM-T1010 |  | Pre-commissioning and loop checks - Dammam |  | 5d | 2028-04-03 | 2028-04-09 | EDM-C2100 | 329d | 0d | Contract cost (BOQ x payment milestones) [127500 SAR]; Progress weight (fair EPC distribution, SAR value) [91760 SAR] | 91,760 | EWR | EDM | EWR | Standard | TC | ETECHS | COM | - | - | COM | MS6 |
| EDM-T1020 |  | Site acceptance test (SAT) and commissioning - Dammam |  | 7d | 2028-04-10 | 2028-04-18 | EDM-T1010 | 329d | 0d | Contract cost (BOQ x payment milestones) [191251 SAR]; Progress weight (fair EPC distribution, SAR value) [122140 SAR] | 122,140 | EWR | EDM | EWR | Standard | TC | ETECHS | COM | - | - | COM | MS6 |
|  | TRN | **Training** |  |  | 2028-04-19 | 2028-05-09 |  |  |  |  |  |  |  |  |  |  |  |  |  |  |  |  |
| EDM-T2010 |  | Operator and maintenance training - Dammam |  | 10d | 2028-04-19 | 2028-05-09 | EDM-T1020 | 349d | 20d | Contract cost (BOQ x payment milestones) [47813 SAR]; Progress weight (fair EPC distribution, SAR value) [61380 SAR] | 61,380 | EWR | EDM | EWR | Standard | TC | ETECHS | COM | - | - | COM | MS7 |
|  | TOA | **Trial operation and acceptance** |  |  | 2028-04-19 | 2028-06-27 |  |  |  |  |  |  |  |  |  |  |  |  |  |  |  |  |
| EDM-T2020 |  | Trial operation (maximum 45 days) - Dammam |  | 30d | 2028-04-19 | 2028-06-06 | EDM-T1020 | 329d | 0d | Contract cost (BOQ x payment milestones) [111563 SAR]; Progress weight (fair EPC distribution, SAR value) [91760 SAR] | 91,760 | EWR | EDM | EWR | Standard | TC | SAR | COM | - | - | COM | MS7 |
| EDM-T3010 |  | Taking-over application, SAR review and handover - Dammam |  | 15d | 2028-06-07 | 2028-06-27 | EDM-T1100, EDM-T2010, EDM-T2020, EDM-E1140 | 329d | 0d | Contract cost (BOQ x payment milestones) [95625 SAR]; Progress weight (fair EPC distribution, SAR value) [91760 SAR] | 91,760 | EWR | EDM | EWR | Standard | TC | SAR | COM | - | - | COM | MS7 |
|  | NQS | **Al Qassim (NSR)** |  |  | 2028-06-21 | 2028-09-10 |  |  |  |  |  |  |  |  |  |  |  |  |  |  |  |  |
| NQS-T1100 |  | MS6 SAT complete (10%) - Al Qassim | milestone | 0d | 2028-07-09 | 2028-07-09 | NQS-T1020 | 306d | 30d |  |  | NSR | NQS | NSR | Standard | TC | SAR | MS | - | - | MS | MS6 |
| NQS-T3100 |  | MS7 Station accepted - final acceptance and handover (10%) - Al Qassim | milestone | 0d | 2028-09-10 | 2028-09-10 | NQS-T3010 | 276d | 255d |  |  | NSR | NQS | NSR | Standard | TC | SAR | MS | - | - | MS | MS7 |
|  | TST | **Testing and commissioning** |  |  | 2028-06-21 | 2028-07-09 |  |  |  |  |  |  |  |  |  |  |  |  |  |  |  |  |
| NQS-T1010 |  | Pre-commissioning and loop checks - Al Qassim |  | 5d | 2028-06-21 | 2028-06-27 | NQS-C2100 | 276d | 0d | Contract cost (BOQ x payment milestones) [135957 SAR]; Progress weight (fair EPC distribution, SAR value) [97960 SAR] | 97,960 | NSR | NQS | NSR | Standard | TC | ETECHS | COM | - | - | COM | MS6 |
| NQS-T1020 |  | Site acceptance test (SAT) and commissioning - Al Qassim |  | 8d | 2028-06-28 | 2028-07-09 | NQS-T1010 | 276d | 0d | Contract cost (BOQ x payment milestones) [203935 SAR]; Progress weight (fair EPC distribution, SAR value) [130820 SAR] | 130,820 | NSR | NQS | NSR | Standard | TC | ETECHS | COM | - | - | COM | MS6 |
|  | TRN | **Training** |  |  | 2028-07-10 | 2028-07-23 |  |  |  |  |  |  |  |  |  |  |  |  |  |  |  |  |
| NQS-T2010 |  | Operator and maintenance training - Al Qassim |  | 10d | 2028-07-10 | 2028-07-23 | NQS-T1020 | 296d | 20d | Contract cost (BOQ x payment milestones) [50984 SAR]; Progress weight (fair EPC distribution, SAR value) [65100 SAR] | 65,100 | NSR | NQS | NSR | Standard | TC | ETECHS | COM | - | - | COM | MS7 |
|  | TOA | **Trial operation and acceptance** |  |  | 2028-07-10 | 2028-09-10 |  |  |  |  |  |  |  |  |  |  |  |  |  |  |  |  |
| NQS-T2020 |  | Trial operation (maximum 45 days) - Al Qassim |  | 30d | 2028-07-10 | 2028-08-20 | NQS-T1020 | 276d | 0d | Contract cost (BOQ x payment milestones) [118962 SAR]; Progress weight (fair EPC distribution, SAR value) [97960 SAR] | 97,960 | NSR | NQS | NSR | Standard | TC | SAR | COM | - | - | COM | MS7 |
| NQS-T3010 |  | Taking-over application, SAR review and handover - Al Qassim |  | 15d | 2028-08-21 | 2028-09-10 | NQS-T1100, NQS-T2010, NQS-T2020, NQS-E1140 | 276d | 0d | Contract cost (BOQ x payment milestones) [101967 SAR]; Progress weight (fair EPC distribution, SAR value) [97960 SAR] | 97,960 | NSR | NQS | NSR | Standard | TC | SAR | COM | - | - | COM | MS7 |
|  | EHF | **Hufuf (EWR)** |  |  | 2028-05-30 | 2028-08-16 |  |  |  |  |  |  |  |  |  |  |  |  |  |  |  |  |
| EHF-T1100 |  | MS6 SAT complete (10%) - Hufuf | milestone | 0d | 2028-06-14 | 2028-06-14 | EHF-T1020 | 323d | 30d |  |  | EWR | EHF | EWR | Standard | TC | SAR | MS | - | - | MS | MS6 |
| EHF-T3100 |  | MS7 Station accepted - final acceptance and handover (10%) - Hufuf | milestone | 0d | 2028-08-16 | 2028-08-16 | EHF-T3010 | 293d | 272d |  |  | EWR | EHF | EWR | Standard | TC | SAR | MS | - | - | MS | MS7 |
|  | TST | **Testing and commissioning** |  |  | 2028-05-30 | 2028-06-14 |  |  |  |  |  |  |  |  |  |  |  |  |  |  |  |  |
| EHF-T1010 |  | Pre-commissioning and loop checks - Hufuf |  | 5d | 2028-05-30 | 2028-06-05 | EHF-C2100 | 293d | 0d | Contract cost (BOQ x payment milestones) [113140 SAR]; Progress weight (fair EPC distribution, SAR value) [81220 SAR] | 81,220 | EWR | EHF | EWR | Standard | TC | ETECHS | COM | - | - | COM | MS6 |
| EHF-T1020 |  | Site acceptance test (SAT) and commissioning - Hufuf |  | 7d | 2028-06-06 | 2028-06-14 | EHF-T1010 | 293d | 0d | Contract cost (BOQ x payment milestones) [169710 SAR]; Progress weight (fair EPC distribution, SAR value) [108500 SAR] | 108,500 | EWR | EHF | EWR | Standard | TC | ETECHS | COM | - | - | COM | MS6 |

| ID | WBS | Activity | Type | Duration | Start | Finish | Predecessors | Total float | Free float | Resources | Cost | Area | Station | Railway | Priority | Discipline | Responsibility | EPC phase | Design stage | Submittal or approval | Programme phase | Payment milestone |
| --- | --- | --- | --- | --- | --- | --- | --- | --- | --- | --- | --- | --- | --- | --- | --- | --- | --- | --- | --- | --- | --- | --- |
|  | TRN | **Training** |  |  | 2028-06-15 | 2028-06-28 |  |  |  |  |  |  |  |  |  |  |  |  |  |  |  |  |
| EHF-T2010 |  | Operator and maintenance training - Hufuf |  | 10d | 2028-06-15 | 2028-06-28 | EHF-T1020 | 313d | 20d | Contract cost (BOQ x payment milestones) [42428 SAR]; Progress weight (fair EPC distribution, SAR value) [54560 SAR] | 54,560 | EWR | EHF | EWR | Standard | TC | ETECHS | COM | - | - | COM | MS7 |
|  | TOA | **Trial operation and acceptance** |  |  | 2028-06-15 | 2028-08-16 |  |  |  |  |  |  |  |  |  |  |  |  |  |  |  |  |
| EHF-T2020 |  | Trial operation (maximum 45 days) - Hufuf |  | 30d | 2028-06-15 | 2028-07-26 | EHF-T1020 | 293d | 0d | Contract cost (BOQ x payment milestones) [98998 SAR]; Progress weight (fair EPC distribution, SAR value) [81220 SAR] | 81,220 | EWR | EHF | EWR | Standard | TC | SAR | COM | - | - | COM | MS7 |
| EHF-T3010 |  | Taking-over application, SAR review and handover - Hufuf |  | 15d | 2028-07-27 | 2028-08-16 | EHF-T1100, EHF-T2010, EHF-T2020, EHF-E1140 | 293d | 0d | Contract cost (BOQ x payment milestones) [84855 SAR]; Progress weight (fair EPC distribution, SAR value) [81220 SAR] | 81,220 | EWR | EHF | EWR | Standard | TC | SAR | COM | - | - | COM | MS7 |
|  | NMJ | **Al Majma'ah (NSR)** |  |  | 2028-08-09 | 2028-10-29 |  |  |  |  |  |  |  |  |  |  |  |  |  |  |  |  |
| NMJ-T1100 |  | MS6 SAT complete (10%) - Al Majma'ah | milestone | 0d | 2028-08-27 | 2028-08-27 | NMJ-T1020 | 271d | 30d |  |  | NSR | NMJ | NSR | Standard | TC | SAR | MS | - | - | MS | MS6 |
| NMJ-T3100 |  | MS7 Station accepted - final acceptance and handover (10%) - Al Majma'ah | milestone | 0d | 2028-10-29 | 2028-10-29 | NMJ-T3010 | 241d | 220d |  |  | NSR | NMJ | NSR | Standard | TC | SAR | MS | - | - | MS | MS7 |
|  | TST | **Testing and commissioning** |  |  | 2028-08-09 | 2028-08-27 |  |  |  |  |  |  |  |  |  |  |  |  |  |  |  |  |
| NMJ-T1010 |  | Pre-commissioning and loop checks - Al Majma'ah |  | 5d | 2028-08-09 | 2028-08-15 | NMJ-C2100 | 241d | 0d | Contract cost (BOQ x payment milestones) [135957 SAR]; Progress weight (fair EPC distribution, SAR value) [97960 SAR] | 97,960 | NSR | NMJ | NSR | Standard | TC | ETECHS | COM | - | - | COM | MS6 |
| NMJ-T1020 |  | Site acceptance test (SAT) and commissioning - Al Majma'ah |  | 8d | 2028-08-16 | 2028-08-27 | NMJ-T1010 | 241d | 0d | Contract cost (BOQ x payment milestones) [203935 SAR]; Progress weight (fair EPC distribution, SAR value) [130820 SAR] | 130,820 | NSR | NMJ | NSR | Standard | TC | ETECHS | COM | - | - | COM | MS6 |
|  | TRN | **Training** |  |  | 2028-08-28 | 2028-09-10 |  |  |  |  |  |  |  |  |  |  |  |  |  |  |  |  |
| NMJ-T2010 |  | Operator and maintenance training - Al Majma'ah |  | 10d | 2028-08-28 | 2028-09-10 | NMJ-T1020 | 261d | 20d | Contract cost (BOQ x payment milestones) [50984 SAR]; Progress weight (fair EPC distribution, SAR value) [65100 SAR] | 65,100 | NSR | NMJ | NSR | Standard | TC | ETECHS | COM | - | - | COM | MS7 |
|  | TOA | **Trial operation and acceptance** |  |  | 2028-08-28 | 2028-10-29 |  |  |  |  |  |  |  |  |  |  |  |  |  |  |  |  |
| NMJ-T2020 |  | Trial operation (maximum 45 days) - Al Majma'ah |  | 30d | 2028-08-28 | 2028-10-08 | NMJ-T1020 | 241d | 0d | Contract cost (BOQ x payment milestones) [118962 SAR]; Progress weight (fair EPC distribution, SAR value) [97960 SAR] | 97,960 | NSR | NMJ | NSR | Standard | TC | SAR | COM | - | - | COM | MS7 |
| NMJ-T3010 |  | Taking-over application, SAR review and handover - Al Majma'ah |  | 15d | 2028-10-09 | 2028-10-29 | NMJ-T1100, NMJ-T2010, NMJ-T2020, NMJ-E1140 | 241d | 0d | Contract cost (BOQ x payment milestones) [101967 SAR]; Progress weight (fair EPC distribution, SAR value) [97960 SAR] | 97,960 | NSR | NMJ | NSR | Standard | TC | SAR | COM | - | - | COM | MS7 |
|  | HKA | **KAEC (HHR)** |  |  | 2029-01-18 | 2029-05-03 |  |  |  |  |  |  |  |  |  |  |  |  |  |  |  |  |
| HKA-T1100 |  | MS6 SAT complete (10%) - KAEC | milestone | 0d | 2029-02-21 | 2029-02-21 | HKA-T1020 | 148d | 30d |  |  | HHR | HKA | HHR | Standard | TC | SAR | MS | - | - | MS | MS6 |
| HKA-T3100 |  | MS7 Station accepted - final acceptance and handover (10%) - KAEC | milestone | 0d | 2029-05-03 | 2029-05-03 | HKA-T3010 | 118d | 97d |  |  | HHR | HKA | HHR | Standard | TC | SAR | MS | - | - | MS | MS7 |
|  | TST | **Testing and commissioning** |  |  | 2029-01-18 | 2029-02-21 |  |  |  |  |  |  |  |  |  |  |  |  |  |  |  |  |
| HKA-T1010 |  | Pre-commissioning and loop checks - KAEC |  | 8d | 2029-01-18 | 2029-01-29 | HKA-C2100 | 118d | 0d | Contract cost (BOQ x payment milestones) [222575 SAR]; Progress weight (fair EPC distribution, SAR value) [159960 SAR] | 159,960 | HHR | HKA | HHR | Standard | TC | ETECHS | COM | - | - | COM | MS6 |
| HKA-T1020 |  | Site acceptance test (SAT) and commissioning - KAEC |  | 12d | 2029-01-30 | 2029-02-21 | HKA-T1010 | 118d | 0d | Contract cost (BOQ x payment milestones) [333863 SAR]; Progress weight (fair EPC distribution, SAR value) [213900 SAR] | 213,900 | HHR | HKA | HHR | Standard | TC | ETECHS | COM | - | - | COM | MS6 |
|  | TRN | **Training** |  |  | 2029-02-25 | 2029-03-08 |  |  |  |  |  |  |  |  |  |  |  |  |  |  |  |  |
| HKA-T2010 |  | Operator and maintenance training - KAEC |  | 10d | 2029-02-25 | 2029-03-08 | HKA-T1020 | 138d | 20d | Contract cost (BOQ x payment milestones) [83466 SAR]; Progress weight (fair EPC distribution, SAR value) [106640 SAR] | 106,640 | HHR | HKA | HHR | Standard | TC | ETECHS | COM | - | - | COM | MS7 |

| ID | WBS | Activity | Type | Duration | Start | Finish | Predecessors | Total float | Free float | Resources | Cost | Area | Station | Railway | Priority | Discipline | Responsibility | EPC phase | Design stage | Submittal or approval | Programme phase | Payment milestone |
| --- | --- | --- | --- | --- | --- | --- | --- | --- | --- | --- | --- | --- | --- | --- | --- | --- | --- | --- | --- | --- | --- | --- |
|  | TOA | **Trial operation and acceptance** |  |  | 2029-02-25 | 2029-05-03 |  |  |  |  |  |  |  |  |  |  |  |  |  |  |  |  |
| HKA-T2020 |  | Trial operation (maximum 45 days) - KAEC |  | 30d | 2029-02-25 | 2029-04-05 | HKA-T1020 | 118d | 0d | Contract cost (BOQ x payment milestones) [194753 SAR]; Progress weight (fair EPC distribution, SAR value) [159960 SAR] | 159,960 | HHR | HKA | HHR | Standard | TC | SAR | COM | - | - | COM | MS7 |
| HKA-T3010 |  | Taking-over application, SAR review and handover - KAEC |  | 15d | 2029-04-08 | 2029-05-03 | HKA-T1100, HKA-T2010, HKA-T2020, HKA-E1140 | 118d | 0d | Contract cost (BOQ x payment milestones) [166931 SAR]; Progress weight (fair EPC distribution, SAR value) [159960 SAR] | 159,960 | HHR | HKA | HHR | Standard | TC | SAR | COM | - | - | COM | MS7 |
|  | HMD | **Madinah (HHR)** |  |  | 2029-01-23 | 2029-05-09 |  |  |  |  |  |  |  |  |  |  |  |  |  |  |  |  |
| HMD-T1100 |  | MS6 SAT complete (10%) - Madinah | milestone | 0d | 2029-02-28 | 2029-02-28 | HMD-T1020 | 144d | 30d |  |  | HHR | HMD | HHR | Standard | TC | SAR | MS | - | - | MS | MS6 |
| HMD-T3100 |  | MS7 Station accepted - final acceptance and handover (10%) - Madinah | milestone | 0d | 2029-05-09 | 2029-05-09 | HMD-T3010 | 114d | 93d |  |  | HHR | HMD | HHR | Standard | TC | SAR | MS | - | - | MS | MS7 |
|  | TST | **Testing and commissioning** |  |  | 2029-01-23 | 2029-02-28 |  |  |  |  |  |  |  |  |  |  |  |  |  |  |  |  |
| HMD-T1010 |  | Pre-commissioning and loop checks - Madinah |  | 8d | 2029-01-23 | 2029-02-01 | HMD-C2100 | 114d | 0d | Contract cost (BOQ x payment milestones) [222485 SAR]; Progress weight (fair EPC distribution, SAR value) [159960 SAR] | 159,960 | HHR | HMD | HHR | Standard | TC | ETECHS | COM | - | - | COM | MS6 |
| HMD-T1020 |  | Site acceptance test (SAT) and commissioning - Madinah |  | 13d | 2029-02-04 | 2029-02-28 | HMD-T1010 | 114d | 0d | Contract cost (BOQ x payment milestones) [333728 SAR]; Progress weight (fair EPC distribution, SAR value) [213280 SAR] | 213,280 | HHR | HMD | HHR | Standard | TC | ETECHS | COM | - | - | COM | MS6 |
|  | TRN | **Training** |  |  | 2029-03-01 | 2029-03-14 |  |  |  |  |  |  |  |  |  |  |  |  |  |  |  |  |
| HMD-T2010 |  | Operator and maintenance training - Madinah |  | 10d | 2029-03-01 | 2029-03-14 | HMD-T1020 | 134d | 20d | Contract cost (BOQ x payment milestones) [83432 SAR]; Progress weight (fair EPC distribution, SAR value) [106640 SAR] | 106,640 | HHR | HMD | HHR | Standard | TC | ETECHS | COM | - | - | COM | MS7 |
|  | TOA | **Trial operation and acceptance** |  |  | 2029-03-01 | 2029-05-09 |  |  |  |  |  |  |  |  |  |  |  |  |  |  |  |  |
| HMD-T2020 |  | Trial operation (maximum 45 days) - Madinah |  | 30d | 2029-03-01 | 2029-04-11 | HMD-T1020 | 114d | 0d | Contract cost (BOQ x payment milestones) [194675 SAR]; Progress weight (fair EPC distribution, SAR value) [159960 SAR] | 159,960 | HHR | HMD | HHR | Standard | TC | SAR | COM | - | - | COM | MS7 |
| HMD-T3010 |  | Taking-over application, SAR review and handover - Madinah |  | 15d | 2029-04-12 | 2029-05-09 | HMD-T1100, HMD-T2010, HMD-T2020, HMD-E1140 | 114d | 0d | Contract cost (BOQ x payment milestones) [166864 SAR]; Progress weight (fair EPC distribution, SAR value) [159960 SAR] | 159,960 | HHR | HMD | HHR | Standard | TC | SAR | COM | - | - | COM | MS7 |
|  | EAB | **Abqaiq (EWR)** |  |  | 2028-12-06 | 2029-03-01 |  |  |  |  |  |  |  |  |  |  |  |  |  |  |  |  |
| EAB-T1100 |  | MS6 SAT complete (10%) - Abqaiq | milestone | 0d | 2028-12-20 | 2028-12-20 | EAB-T1020 | 188d | 30d |  |  | EWR | EAB | EWR | Standard | TC | SAR | MS | - | - | MS | MS6 |
| EAB-T3100 |  | MS7 Station accepted - final acceptance and handover (10%) - Abqaiq | milestone | 0d | 2029-03-01 | 2029-03-01 | EAB-T3010 | 158d | 137d |  |  | EWR | EAB | EWR | Standard | TC | SAR | MS | - | - | MS | MS7 |
|  | TST | **Testing and commissioning** |  |  | 2028-12-06 | 2028-12-20 |  |  |  |  |  |  |  |  |  |  |  |  |  |  |  |  |
| EAB-T1010 |  | Pre-commissioning and loop checks - Abqaiq |  | 4d | 2028-12-06 | 2028-12-11 | EAB-C2100 | 158d | 0d | Contract cost (BOQ x payment milestones) [80227 SAR]; Progress weight (fair EPC distribution, SAR value) [57660 SAR] | 57,660 | EWR | EAB | EWR | Standard | TC | ETECHS | COM | - | - | COM | MS6 |
| EAB-T1020 |  | Site acceptance test (SAT) and commissioning - Abqaiq |  | 7d | 2028-12-12 | 2028-12-20 | EAB-T1010 | 158d | 0d | Contract cost (BOQ x payment milestones) [120341 SAR]; Progress weight (fair EPC distribution, SAR value) [76880 SAR] | 76,880 | EWR | EAB | EWR | Standard | TC | ETECHS | COM | - | - | COM | MS6 |
|  | TRN | **Training** |  |  | 2028-12-21 | 2029-01-03 |  |  |  |  |  |  |  |  |  |  |  |  |  |  |  |  |
| EAB-T2010 |  | Operator and maintenance training - Abqaiq |  | 10d | 2028-12-21 | 2029-01-03 | EAB-T1020 | 178d | 20d | Contract cost (BOQ x payment milestones) [30085 SAR]; Progress weight (fair EPC distribution, SAR value) [38440 SAR] | 38,440 | EWR | EAB | EWR | Standard | TC | ETECHS | COM | - | - | COM | MS7 |
|  | TOA | **Trial operation and acceptance** |  |  | 2028-12-21 | 2029-03-01 |  |  |  |  |  |  |  |  |  |  |  |  |  |  |  |  |
| EAB-T2020 |  | Trial operation (maximum 45 days) - Abqaiq |  | 30d | 2028-12-21 | 2029-01-31 | EAB-T1020 | 158d | 0d | Contract cost (BOQ x payment milestones) [70199 SAR]; Progress weight (fair EPC distribution, SAR value) [57660 SAR] | 57,660 | EWR | EAB | EWR | Standard | TC | SAR | COM | - | - | COM | MS7 |
| EAB-T3010 |  | Taking-over application, SAR review and handover - Abqaiq |  | 15d | 2029-02-01 | 2029-03-01 | EAB-T1100, EAB-T2010, EAB-T2020, EAB-E1140 | 158d | 0d | Contract cost (BOQ x payment milestones) [60170 SAR]; Progress weight (fair EPC distribution, SAR value) [57660 SAR] | 57,660 | EWR | EAB | EWR | Standard | TC | SAR | COM | - | - | COM | MS7 |

| ID | WBS | Activity | Type | Duration | Start | Finish | Predecessors | Total float | Free float | Resources | Cost | Area | Station | Railway | Priority | EPC phase | Discipline | Responsibility | Design stage | Submittal or approval | Payment milestone | Programme phase |
| --- | --- | --- | --- | --- | --- | --- | --- | --- | --- | --- | --- | --- | --- | --- | --- | --- | --- | --- | --- | --- | --- | --- |
|  | NHL | **Hail (NSR)** |  |  | 2029-02-07 | 2029-05-14 |  |  |  |  |  |  |  |  |  |  |  |  |  |  |  |  |
| NHL-T1100 |  | MS6 SAT complete (10%) - Hail | milestone | 0d | 2029-03-05 | 2029-03-05 | NHL-T1020 | 141d | 30d |  |  | NSR | NHL | NSR | Standard | MS | TC | SAR | - | - | MS6 | MS |
| NHL-T3100 |  | MS7 Station accepted - final acceptance and handover (10%) - Hail | milestone | 0d | 2029-05-14 | 2029-05-14 | NHL-T3010 | 111d | 90d |  |  | NSR | NHL | NSR | Standard | MS | TC | SAR | - | - | MS7 | MS |
|  | TST | **Testing and commissioning** |  |  | 2029-02-07 | 2029-03-05 |  |  |  |  |  |  |  |  |  |  |  |  |  |  |  |  |
| NHL-T1010 |  | Pre-commissioning and loop checks - Hail |  | 5d | 2029-02-07 | 2029-02-20 | NHL-C2100 | 111d | 0d | Contract cost (BOQ x payment milestones) [135957 SAR]; Progress weight (fair EPC distribution, SAR value) [97960 SAR] | 97,960 | NSR | NHL | NSR | Standard | COM | TC | ETECHS | - | - | MS6 | COM |
| NHL-T1020 |  | Site acceptance test (SAT) and commissioning - Hail |  | 8d | 2029-02-21 | 2029-03-05 | NHL-T1010 | 111d | 0d | Contract cost (BOQ x payment milestones) [203935 SAR]; Progress weight (fair EPC distribution, SAR value) [130820 SAR] | 130,820 | NSR | NHL | NSR | Standard | COM | TC | ETECHS | - | - | MS6 | COM |
|  | TRN | **Training** |  |  | 2029-03-06 | 2029-03-19 |  |  |  |  |  |  |  |  |  |  |  |  |  |  |  |  |
| NHL-T2010 |  | Operator and maintenance training - Hail |  | 10d | 2029-03-06 | 2029-03-19 | NHL-T1020 | 131d | 20d | Contract cost (BOQ x payment milestones) [50984 SAR]; Progress weight (fair EPC distribution, SAR value) [65100 SAR] | 65,100 | NSR | NHL | NSR | Standard | COM | TC | ETECHS | - | - | MS7 | COM |
|  | TOA | **Trial operation and acceptance** |  |  | 2029-03-06 | 2029-05-14 |  |  |  |  |  |  |  |  |  |  |  |  |  |  |  |  |
| NHL-T2020 |  | Trial operation (maximum 45 days) - Hail |  | 30d | 2029-03-06 | 2029-04-16 | NHL-T1020 | 111d | 0d | Contract cost (BOQ x payment milestones) [118962 SAR]; Progress weight (fair EPC distribution, SAR value) [97960 SAR] | 97,960 | NSR | NHL | NSR | Standard | COM | TC | SAR | - | - | MS7 | COM |
| NHL-T3010 |  | Taking-over application, SAR review and handover - Hail |  | 15d | 2029-04-17 | 2029-05-14 | NHL-T1100, NHL-T2010, NHL-T2020, NHL-E1140 | 111d | 0d | Contract cost (BOQ x payment milestones) [101967 SAR]; Progress weight (fair EPC distribution, SAR value) [97960 SAR] | 97,960 | NSR | NHL | NSR | Standard | COM | TC | SAR | - | - | MS7 | COM |
|  | NJF | **Al Jouf (NSR)** |  |  | 2029-05-10 | 2029-07-30 |  |  |  |  |  |  |  |  |  |  |  |  |  |  |  |  |
| NJF-T1100 |  | MS6 SAT complete (10%) - Al Jouf | milestone | 0d | 2029-05-28 | 2029-05-28 | NJF-T1020 | 86d | 30d |  |  | NSR | NJF | NSR | Standard | MS | TC | SAR | - | - | MS6 | MS |
| NJF-T3100 |  | MS7 Station accepted - final acceptance and handover (10%) - Al Jouf | milestone | 0d | 2029-07-30 | 2029-07-30 | NJF-T3010 | 56d | 35d |  |  | NSR | NJF | NSR | Standard | MS | TC | SAR | - | - | MS7 | MS |
|  | TST | **Testing and commissioning** |  |  | 2029-05-10 | 2029-05-28 |  |  |  |  |  |  |  |  |  |  |  |  |  |  |  |  |
| NJF-T1010 |  | Pre-commissioning and loop checks - Al Jouf |  | 5d | 2029-05-10 | 2029-05-16 | NJF-C2100 | 56d | 0d | Contract cost (BOQ x payment milestones) [136914 SAR]; Progress weight (fair EPC distribution, SAR value) [98580 SAR] | 98,580 | NSR | NJF | NSR | Standard | COM | TC | ETECHS | - | - | MS6 | COM |
| NJF-T1020 |  | Site acceptance test (SAT) and commissioning - Al Jouf |  | 8d | 2029-05-17 | 2029-05-28 | NJF-T1010 | 56d | 0d | Contract cost (BOQ x payment milestones) [205371 SAR]; Progress weight (fair EPC distribution, SAR value) [131440 SAR] | 131,440 | NSR | NJF | NSR | Standard | COM | TC | ETECHS | - | - | MS6 | COM |
|  | TRN | **Training** |  |  | 2029-05-29 | 2029-06-11 |  |  |  |  |  |  |  |  |  |  |  |  |  |  |  |  |
| NJF-T2010 |  | Operator and maintenance training - Al Jouf |  | 10d | 2029-05-29 | 2029-06-11 | NJF-T1020 | 76d | 20d | Contract cost (BOQ x payment milestones) [51343 SAR]; Progress weight (fair EPC distribution, SAR value) [65720 SAR] | 65,720 | NSR | NJF | NSR | Standard | COM | TC | ETECHS | - | - | MS7 | COM |
|  | TOA | **Trial operation and acceptance** |  |  | 2029-05-29 | 2029-07-30 |  |  |  |  |  |  |  |  |  |  |  |  |  |  |  |  |
| NJF-T2020 |  | Trial operation (maximum 45 days) - Al Jouf |  | 30d | 2029-05-29 | 2029-07-09 | NJF-T1020 | 56d | 0d | Contract cost (BOQ x payment milestones) [119800 SAR]; Progress weight (fair EPC distribution, SAR value) [98580 SAR] | 98,580 | NSR | NJF | NSR | Standard | COM | TC | SAR | - | - | MS7 | COM |
| NJF-T3010 |  | Taking-over application, SAR review and handover - Al Jouf |  | 15d | 2029-07-10 | 2029-07-30 | NJF-T1100, NJF-T2010, NJF-T2020, NJF-E1140 | 56d | 0d | Contract cost (BOQ x payment milestones) [102685 SAR]; Progress weight (fair EPC distribution, SAR value) [98580 SAR] | 98,580 | NSR | NJF | NSR | Standard | COM | TC | SAR | - | - | MS7 | COM |
|  | NQR | **Al Qurayyat (NSR)** |  |  | 2029-06-28 | 2029-09-17 |  |  |  |  |  |  |  |  |  |  |  |  |  |  |  |  |
| NQR-T1100 |  | MS6 SAT complete (10%) - Al Qurayyat | milestone | 0d | 2029-07-16 | 2029-07-16 | NQR-T1020 | 51d | 30d |  |  | NSR | NQR | NSR | Standard | MS | TC | SAR | - | - | MS6 | MS |
| NQR-T3100 |  | MS7 Station accepted - final acceptance and handover (10%) - Al Qurayyat | milestone | 0d | 2029-09-17 | 2029-09-17 | NQR-T3010 | 21d | 0d |  |  | NSR | NQR | NSR | Standard | MS | TC | SAR | - | - | MS7 | MS |

| ID | WBS | Activity | Duration | Start | Finish | Predecessors | Total float | Free float | Resources | Cost | Area | Station | Railway | Priority | Discipline | Responsibility | EPC phase | Design stage | Submittal or approval | Programme phase | Payment milestone |
| --- | --- | --- | --- | --- | --- | --- | --- | --- | --- | --- | --- | --- | --- | --- | --- | --- | --- | --- | --- | --- | --- |
|  | TST | **Testing and commissioning** |  | 2029-06-28 | 2029-07-16 |  |  |  |  |  |  |  |  |  |  |  |  |  |  |  |  |
| NQR-T1010 |  | Pre-commissioning and loop checks - Al Qurayyat | 5d | 2029-06-28 | 2029-07-04 | NQR-C2100 | 21d | 0d | Contract cost (BOQ x payment milestones) [135957 SAR]; Progress weight (fair EPC distribution, SAR value) [97960 SAR] | 97,960 | NSR | NQR | NSR | Standard | TC | ETECHS | COM | - | - | COM | MS6 |
| NQR-T1020 |  | Site acceptance test (SAT) and commissioning - Al Qurayyat | 8d | 2029-07-05 | 2029-07-16 | NQR-T1010 | 21d | 0d | Contract cost (BOQ x payment milestones) [203935 SAR]; Progress weight (fair EPC distribution, SAR value) [130820 SAR] | 130,820 | NSR | NQR | NSR | Standard | TC | ETECHS | COM | - | - | COM | MS6 |
|  | TRN | **Training** |  | 2029-07-17 | 2029-07-30 |  |  |  |  |  |  |  |  |  |  |  |  |  |  |  |  |
| NQR-T2010 |  | Operator and maintenance training - Al Qurayyat | 10d | 2029-07-17 | 2029-07-30 | NQR-T1020 | 41d | 20d | Contract cost (BOQ x payment milestones) [50984 SAR]; Progress weight (fair EPC distribution, SAR value) [65100 SAR] | 65,100 | NSR | NQR | NSR | Standard | TC | ETECHS | COM | - | - | COM | MS7 |
|  | TOA | **Trial operation and acceptance** |  | 2029-07-17 | 2029-09-17 |  |  |  |  |  |  |  |  |  |  |  |  |  |  |  |  |
| NQR-T2020 |  | Trial operation (maximum 45 days) - Al Qurayyat | 30d | 2029-07-17 | 2029-08-27 | NQR-T1020 | 21d | 0d | Contract cost (BOQ x payment milestones) [118962 SAR]; Progress weight (fair EPC distribution, SAR value) [97960 SAR] | 97,960 | NSR | NQR | NSR | Standard | TC | SAR | COM | - | - | COM | MS7 |
| NQR-T3010 |  | Taking-over application, SAR review and handover - Al Qurayyat | 15d | 2029-08-28 | 2029-09-17 | NQR-T1100, NQR-T2010, NQR-T2020, NQR-E1140 | 21d | 0d | Contract cost (BOQ x payment milestones) [101967 SAR]; Progress weight (fair EPC distribution, SAR value) [97960 SAR] | 97,960 | NSR | NQR | NSR | Standard | TC | SAR | COM | - | - | COM | MS7 |

## Activity codes

| Code | Value | Meaning |
| --- | --- | --- |
| Area | PRJ | Project level |
| Design stage | - | Not a design stage |
| Design stage | As-built | As-built and O&M |
| Design stage | Concept | Concept design |
| Design stage | Detailed | Detailed design |
| Design stage | HCIS | HCIS documentation |
| Design stage | IFC | IFC and shop drawings |
| Design stage | Preliminary | Preliminary design |
| Design stage | Survey | Site survey |
| Discipline | ACC | Access control and intercom |
| Discipline | CCTV | CCTV system |
| Discipline | CIVIL | Civil works |
| Discipline | DOCS | Design documentation |
| Discipline | PM | Project management and logistics |
| Discipline | TC | Testing, commissioning and handover |
| Discipline | UPSNET | UPS, network and cabinets |
| Discipline | VMS | Video management and wall |
| EPC phase | COM | Commissioning and handover |
| EPC phase | CON | Construction |
| EPC phase | ENG | Engineering |
| EPC phase | MOB | Mobilization |
| EPC phase | MS | Milestone |
| EPC phase | PMG | Project management |
| EPC phase | PRO | Procurement |
| Payment milestone | - | Not a payment milestone |
| Payment milestone | MS1 | MS1 Mobilization |
| Payment milestone | MS2 | MS2 Engineering submittal |
| Payment milestone | MS3 | MS3 SAR approval of engineering |
| Payment milestone | MS4 | MS4 Material delivery |
| Payment milestone | MS5 | MS5 Installation |
| Payment milestone | MS6 | MS6 Testing and commissioning (SAT) |
| Payment milestone | MS7 | MS7 Final acceptance and handover |
| Priority | Priority 1 | Priority 1 - Makkah and Riyadh (Thumamah) |
| Priority | Priority 2 | Priority 2 - Riyadh (Malaz) |
| Programme phase | COM | Testing, commissioning and handover |
| Programme phase | CON | Construction and installation |
| Programme phase | DES | Design including survey (months 3-6) |
| Programme phase | ENA | Enabling works |
| Programme phase | MOB | Mobilization and survey permit (months 1-2) |
| Programme phase | MS | Milestones |
| Programme phase | PMG | Project management and closeout |
| Programme phase | PRO | Procurement and supply |
| Railway | ALL | All railways |
| Responsibility | SAR/HCIS | SAR and HCIS |
| Station | EAB | Abqaiq (EWR) |
| Station | EDM | Dammam (EWR) |
| Station | EHF | Hufuf (EWR) |
| Station | ERY | Riyadh (Malaz) (EWR) |
| Station | HJD | Jeddah (HHR) |
| Station | HKA | KAEC (HHR) |
| Station | HMD | Madinah (HHR) |
| Station | HMK | Makkah (HHR) |
| Station | NHL | Hail (NSR) |
| Station | NJF | Al Jouf (NSR) |
| Station | NMJ | Al Majma'ah (NSR) |
| Station | NQR | Al Qurayyat (NSR) |
| Station | NQS | Al Qassim (NSR) |
| Station | NRY | Riyadh (Thumamah) (NSR) |
| Station | PRJ | Project level |
| Submittal or approval | - | Not applicable |
